# OS XXX - Anteprojeto

How a schedule from MS Project changed from version to version. A marks actual dates.

## Version 1 (data date 2026-06-08, saved 2026-07-02, file Arquivo Modelo_XX_CENTRAL PARK.mpp)

| ID | WBS | Task | Duration | Start | Finish | Predecessors | Total float |
| --- | --- | --- | --- | --- | --- | --- | --- |
| 1 | 1 | **P0 - Estudos Iniciais/Plano de Trabalho** | 37d | 2026-05-07 | 2026-06-29 |  | 24d |
| 2 |  | Marco de Abertura de OS | 1d | 2026-05-07 | 2026-05-07 |  | 24d |
| 3 |  | Recebimento de dados da contratante | 1d | 2026-05-07 | 2026-05-07 |  | 60d |
| 4 |  | Recebimento de dados do projeto | 1d | 2026-05-07 | 2026-05-07 |  | 60d |
| 5 | 1.4 | **Definições do projeto** | 0d | 2026-05-07 | 2026-05-07 |  | 61d |
| 6 |  | Definição de escopo | 0d | 2026-05-07 | 2026-05-07 |  | 61d |
| 7 |  | Aprovação do escopo (contrato) | 0d | 2026-05-07 | 2026-05-07 |  | 61d |
| 8 |  | Definição de responsabilidades | 0d | 2026-05-07 | 2026-05-07 |  | 61d |
| 9 |  | Definição de comunicação | 0d | 2026-05-07 | 2026-05-07 |  | 61d |
| 10 |  | Forma de gerenciamento do escopo | 0d | 2026-05-07 | 2026-05-07 |  | 61d |
| 11 |  | Requisitos de qualidade | 0d | 2026-05-07 | 2026-05-07 |  | 61d |
| 12 |  | Forma de gerenciamento da qualidade | 0d | 2026-05-07 | 2026-05-07 |  | 61d |
| 13 | 1.5 | **Definição de Subcontratadas necessárias** | 8d | 2026-05-07 | 2026-05-18 |  | 53d |
| 14 |  | Definir quais diciplinas e edificações devem ser cotadas externamente | 2d | 2026-05-07 | 2026-05-08 |  | 53d |
| 15 |  | Envio e Resposta dos fornecedores | 2d | 2026-05-11 | 2026-05-12 | 14 | 53d |
| 16 |  | Seleção das subcontratações | 2d | 2026-05-13 | 2026-05-14 | 15 | 53d |
| 17 |  | Reunião Kickoff - Subcontratadas | 2d | 2026-05-15 | 2026-05-18 | 16 | 53d |
| 18 | 1.6 | **Elaborar/Ajustar Cronograma - compatível com o escopo do projeto** | 14d | 2026-06-10 | 2026-06-29 |  | 24d |
| 19 |  | Estruturação da EAP | 4d | 2026-06-10 | 2026-06-15 | 2SS+23d | 24d |
| 20 |  | Ajuste de prazos | 5d | 2026-06-16 | 2026-06-22 | 19 | 24d |
| 21 |  | Inclusão de recursos | 5d | 2026-06-23 | 2026-06-29 | 20 | 24d |
| 22 | 2 | **P0 - Serviços de campo** | 20d | 2026-05-07 | 2026-06-03 |  | 41d |
| 23 |  | Sondagem | 20d | 2026-05-07 | 2026-06-03 |  | 41d |
| 24 | 2.2 | **Topografia** | 17d | 2026-05-07 | 2026-05-29 |  | 44d |
| 25 |  | Levantamento topográfico | 2d | 2026-05-07 | 2026-05-08 |  | 44d |
| 26 |  | Processamento | 5d | 2026-05-11 | 2026-05-15 | 25 | 44d |
| 27 |  | Finalização do projeto topográfico | 5d | 2026-05-18 | 2026-05-22 | 26 | 44d |
| 28 |  | Levantamento de Dados e Visita de Campo (arquitetônico, scanner, legislação, entrevistas...) | 5d | 2026-05-25 | 2026-05-29 | 27 | 44d |
| 29 |  | Estudos/Laudo Ambiental | 0d | 2026-05-07 | 2026-05-07 |  | 61d |
| 30 | 3 | **P1 - Anteprojeto** | 41d? | 2026-05-07 | 2026-07-03 |  | 0d |
| 31 | 3.1 | **Implantação** | 40d | 2026-05-07 | 2026-07-02 |  | 1d |
| 32 | 3.1.1 | **LOD 300 - ANTEPROJETO** | 20d | 2026-05-07 | 2026-06-03 |  | 21d |
| 33 |  | Indicar simbologias de representação gráfica, conforme NBR 6492:2021; | 20d | 2026-05-07 | 2026-06-03 |  | 21d |
| 34 |  | Compatibilização (verificar se está tudo conforme as normas e alinhar com o restante das disciplinas de engenharia) | 20d | 2026-05-07 | 2026-06-03 |  | 21d |
| 35 |  | Compatibilização (deixar tudo conforme padrão Quanta) | 20d | 2026-05-07 | 2026-06-03 |  | 21d |
| 36 |  | Indicação de Norte; | 20d | 2026-05-07 | 2026-06-03 |  | 21d |
| 37 |  | Indicação de Escala; | 20d | 2026-05-07 | 2026-06-03 |  | 21d |
| 38 |  | Vias de acesso e calçadas; | 20d | 2026-05-07 | 2026-06-03 |  | 21d |
| 39 |  | Definição dos Percursos e caminhos | 20d | 2026-05-07 | 2026-06-03 |  | 21d |
| 40 |  | Definição de desenhos de canteiros | 20d | 2026-05-07 | 2026-06-03 |  | 21d |
| 41 |  | Localização de Mobiliário | 20d | 2026-05-07 | 2026-06-03 |  | 21d |
| 42 |  | Acesso principal do objeto arquitetônico; | 20d | 2026-05-07 | 2026-06-03 |  | 21d |
| 43 |  | Definição de localização de rampas e escadarias | 20d | 2026-05-07 | 2026-06-03 |  | 21d |
| 44 |  | Platôs e taludes; | 20d | 2026-05-07 | 2026-06-03 |  | 21d |
| 45 |  | Perímetro do terreno, recuos e afastamentos; | 20d | 2026-05-07 | 2026-06-03 |  | 21d |
| 46 |  | Eixos do projeto com respectivo ponto de referência; | 20d | 2026-05-07 | 2026-06-03 |  | 21d |
| 47 |  | Denominação das edificações, blocos ou espaços; | 20d | 2026-05-07 | 2026-06-03 |  | 21d |
| 48 |  | Indicação de áreas cobertas e estacionamentos; | 20d | 2026-05-07 | 2026-06-03 |  | 21d |
| 49 |  | Cotas gerais | 20d | 2026-05-07 | 2026-06-03 |  | 21d |
| 50 |  | Cotas de nível principais | 20d | 2026-05-07 | 2026-06-03 |  | 21d |
| 51 |  | Quadro de áreas | 20d | 2026-05-07 | 2026-06-03 |  | 21d |
| 52 |  | Relatório | 5d | 2026-05-28 | 2026-06-03 | 51FF | 21d |
| 53 |  | Aprovação de Conformidade | 3d | 2026-06-01 | 2026-06-03 | 52FF | 21d |
| 54 |  | Material para entrega ao contrato | 3d | 2026-06-01 | 2026-06-03 | 52FF | 21d |
| 55 | 3.1.2 | **Terraplanagem / Pavimentação** | 40d | 2026-05-07 | 2026-07-02 |  | 1d |
| 56 | 3.1.2.1 | **LOD 100 — Premissas, diretrizes e interfaces** | 10d | 2026-05-07 | 2026-05-20 |  | 1d |
| 57 |  | Avaliação geral de interferências e topografia local. | 5d | 2026-05-07 | 2026-05-13 |  | 1d |
| 58 |  | Curvas de nível preliminares (quando disponíveis). | 5d | 2026-05-07 | 2026-05-13 | 57SS | 31d |
| 59 |  | Levantamento topográfico inicial com representação genérica da área. | 5d | 2026-05-07 | 2026-05-13 | 57SS | 1d |
| 60 |  | Análise estimativa de movimentação de terra. | 5d | 2026-05-14 | 2026-05-20 | 58 | 31d |
| 61 |  | Estudos de viabilidade | 5d | 2026-05-14 | 2026-05-20 | 58 | 31d |
| 62 |  | Elementos representados de forma simbólica sem georreferenciamento preciso. | 5d | 2026-05-14 | 2026-05-20 | 59 | 31d |
| 63 |  | Superfície genérica do terreno. | 5d | 2026-05-14 | 2026-05-20 | 59 | 1d |
| 64 | 3.1.2.2 | **LOD 200 — Validação interdisciplinar e solução preliminar** | 20d | 2026-05-21 | 2026-06-18 |  | 1d |
| 65 |  | Avaliação técnica detalhada. | 20d | 2026-05-21 | 2026-06-18 | 63 | 11d |
| 66 |  | Compatibilização inicial com drenagem, fundações e geometria. | 20d | 2026-05-21 | 2026-06-18 | 63 | 11d |
| 67 |  | Indicação dos pontos de sondagem em planta georreferenciada. | 20d | 2026-05-21 | 2026-06-18 | 63 | 11d |
| 68 |  | Sondagens geotécnicas: Cronograma de execução com áreas e quantidade de perfurações; Boletins informativos com planta de localização dos furos, profundidades e descrição estratigráfica (solo). | 20d | 2026-05-21 | 2026-06-18 | 63 | 11d |
| 69 |  | Levantamento topográfico: Arquivo em formato.dwg, com coordenadas georreferenciadas (latitude/longitude), curvas de nível, ortofoto e base planimétrica. | 20d | 2026-05-21 | 2026-06-18 | 63 | 11d |
| 70 |  | Planta topográfica com triangulação real (MDT). | 20d | 2026-05-21 | 2026-06-18 | 63 | 1d |

| ID | WBS | Task | Duration | Start | Finish | Predecessors | Total float |
| --- | --- | --- | --- | --- | --- | --- | --- |
| 71 | 3.1.2.3 | **LOD 300 - Consolidação e documentação de entrega** | 10d | 2026-06-19 | 2026-07-02 |  | 1d |
| 72 |  | Alinhamentos de estaqueamento longitudinal e transversal. | 5d | 2026-06-19 | 2026-06-25 | 70 | 6d |
| 73 |  | Análise integrada dos dados topográficos e de sondagem. | 5d | 2026-06-19 | 2026-06-25 | 70 | 6d |
| 74 |  | Planta baixa georreferenciada com projeção de cortes e aterros. | 10d | 2026-06-19 | 2026-07-02 | 70 | 1d |
| 75 |  | Perfis longitudinais e transversais do terreno na situação atual e projetada. | 5d | 2026-06-19 | 2026-06-25 | 70 | 6d |
| 76 |  | Tabelas com variações altimétricas de corte e aterro. | 5d | 2026-06-26 | 2026-07-02 | 74FF | 1d |
| 77 |  | Aprovação de Conformidade | 3d | 2026-06-30 | 2026-07-02 | 74FF | 1d |
| 78 |  | Material para entrega ao contrato | 3d | 2026-06-30 | 2026-07-02 | 74FF | 1d |
| 79 | 3.1.3 | **Drenagem** | 30d | 2026-05-21 | 2026-07-02 |  | 1d |
| 80 | 3.1.3.1 | **LOD 100 — Premissas, diretrizes e interfaces** | 5d | 2026-05-21 | 2026-05-27 |  | 1d |
| 81 |  | Diretrizes de espaço | 5d | 2026-05-21 | 2026-05-27 | 63 | 26d |
| 82 |  | Memorial preliminar | 5d | 2026-05-21 | 2026-05-27 | 63 | 26d |
| 83 |  | Análise climatológica | 5d | 2026-05-21 | 2026-05-27 | 63 | 26d |
| 84 |  | Delimitação de área de contribuição | 5d | 2026-05-21 | 2026-05-27 | 63 | 26d |
| 85 |  | Levantamento de elementos especiais dentre outras disciplinas de Engenharia e Arquitetura | 5d | 2026-05-21 | 2026-05-27 | 63 | 26d |
| 86 |  | Indicação de áreas técnicas | 5d | 2026-05-21 | 2026-05-27 | 63 | 26d |
| 87 |  | Planta baixa com traçado conceitual | 5d | 2026-05-21 | 2026-05-27 | 63 | 26d |
| 88 |  | Traçado geral de descidas pluviais | 5d | 2026-05-21 | 2026-05-27 | 63 | 1d |
| 89 | 3.1.3.2 | **LOD 200 — Validação interdisciplinar e solução preliminar** | 12d | 2026-05-28 | 2026-06-15 |  | 1d |
| 90 |  | Critérios normativos adotados (ABNT, concessionárias, etc.) | 6d | 2026-05-28 | 2026-06-05 | 88 | 1d |
| 91 |  | Lista preliminar de sistemas e interfaces envolvidos | 6d | 2026-05-28 | 2026-06-05 | 88 | 1d |
| 92 |  | Planta baixa e cortes estimada contendo: - Traçado preliminar de condutores verticais e horizontais - Dimensionamento inicial de calhas e condutores - Localização de elementos ou redes de drenagem existente - Indicação de áreas técnicas | 6d | 2026-05-28 | 2026-06-05 | 88 | 20d |
| 93 |  | Estudo de viabilidade técnica, econômica e ambiental | 6d | 2026-06-08 | 2026-06-15 | 90, 91 | 1d |
| 94 |  | Levantamento topográfico da área de contribuição e elementos existentes | 6d | 2026-06-08 | 2026-06-15 | 90, 91 | 1d |
| 95 |  | Sondagem (permeabilidade ou percolação) | 6d | 2026-06-08 | 2026-06-15 | 90, 91 | 14d |
| 96 | 3.1.3.3 | **LOD 300 - Consolidação e documentação de entrega** | 13d | 2026-06-16 | 2026-07-02 |  | 1d |
| 97 |  | Memorial descritivo | 3d | 2026-06-16 | 2026-06-18 | 94 | 3d |
| 98 |  | Memória de cálculo | 5d | 2026-06-16 | 2026-06-22 | 94, 93 | 1d |
| 99 |  | Planta, corte e detalhe isométrico contendo: - Detalhamento dos condutores com diâmetros, cotas e inclinações definitivas (condutores pluviais) - Calhas, bocas de lobo, dissipadores de energia e demais elementos/equipamentos definitivos | 5d | 2026-06-23 | 2026-06-29 | 97, 98 | 1d |
| 100 |  | Quantitativos e especificação técnica dos materiais | 3d | 2026-06-30 | 2026-07-02 | 99 | 1d |
| 101 |  | Aprovação de Conformidade | 3d | 2026-06-30 | 2026-07-02 | 100FF | 1d |
| 102 |  | Material para entrega ao contrato | 3d | 2026-06-30 | 2026-07-02 | 100FF | 1d |
| 103 | 3.2 | **001 - Edificação principal** | 41d? | 2026-05-07 | 2026-07-03 |  | 0d |
| 104 | 3.2.1 | **Arquitetura** | 22d? | 2026-05-07 | 2026-06-08 |  | 19d |
| 105 | 3.2.1.1 | **Fase de Preparação** | 1d? | 2026-05-07 | 2026-05-07 |  | 40d |
| 106 | 3.2.1.1.1 | **Serviços de Campo** | 1d? | 2026-05-07 | 2026-05-07 |  | 40d |
| 107 |  | Recebimento da Topografia | 1d? | 2026-05-07 | 2026-05-07 |  | 40d |
| 108 |  | Recebimento da Sondagem | 1d? | 2026-05-07 | 2026-05-07 |  | 40d |
| 109 |  | Levantamento de Dados (ambientais locais, urbanísticos, legislativos, plantas cadastrais da vizinhança etc.) | 1d? | 2026-05-07 | 2026-05-07 |  | 40d |
| 110 | 3.2.1.1.2 | **Análise, Verificação e Revisão (adequação do projeto recebido)** | 1d? | 2026-05-07 | 2026-05-07 |  | 40d |
| 111 |  | Analisar topografia | 1d? | 2026-05-07 | 2026-05-07 |  | 40d |
| 112 |  | Criação e georreferenciamento e ajuste de norte nos arquivos federado, arquitetura, implantação, layout | 1d? | 2026-05-07 | 2026-05-07 |  | 40d |
| 113 |  | Analise geral do projeto | 1d? | 2026-05-07 | 2026-05-07 |  | 40d |
| 114 |  | Verificar acessibilidade dos espaços de acordo com a norma e sistematizar ajustes | 1d? | 2026-05-07 | 2026-05-07 |  | 40d |
| 115 |  | Conferir paredes | 1d? | 2026-05-07 | 2026-05-07 |  | 40d |
| 116 |  | Conferir Pisos | 1d? | 2026-05-07 | 2026-05-07 |  | 40d |
| 117 |  | Conferir Esquadrias | 1d? | 2026-05-07 | 2026-05-07 |  | 40d |
| 118 |  | Conferir Mobiliário | 1d? | 2026-05-07 | 2026-05-07 |  | 40d |
| 119 |  | Compatibilização disciplinas engenharia e sistematização incrementos e ajustes | 1d? | 2026-05-07 | 2026-05-07 |  | 40d |
| 120 |  | Compatibilização com normas técnicas | 1d? | 2026-05-07 | 2026-05-07 |  | 40d |
| 121 |  | Compatibilização padrão Quanta | 1d? | 2026-05-07 | 2026-05-07 |  | 40d |
| 122 |  | Verficar se elementos estão associados aos níveis corretos e sistematizar ajustes | 1d? | 2026-05-07 | 2026-05-07 |  | 40d |
| 123 |  | Revisão de perímetro do terreno, recuos, taxa de ocupação e afastamentos | 1d? | 2026-05-07 | 2026-05-07 |  | 40d |
| 124 |  | Relatório/Memorial de Compatibilização | 1d? | 2026-05-07 | 2026-05-07 |  | 40d |
| 125 | 3.2.1.2 | **Fase de Preparação** | 1d? | 2026-05-07 | 2026-05-07 |  | 40d |
| 126 | 3.2.1.2.1 | **Serviços de Campo** | 1d? | 2026-05-07 | 2026-05-07 |  | 40d |
| 127 |  | Recebimento da Topografia | 1d? | 2026-05-07 | 2026-05-07 |  | 40d |
| 128 |  | Recebimento da Sondagem | 1d? | 2026-05-07 | 2026-05-07 |  | 40d |
| 129 |  | Levantamento de Dados (ambientais locais, urbanísticos, legislativos, plantas cadastrais da vizinhança etc.) | 1d? | 2026-05-07 | 2026-05-07 |  | 40d |
| 130 |  | Visita de Campo | 1d? | 2026-05-07 | 2026-05-07 |  | 40d |
| 131 |  | Entrevistas | 1d? | 2026-05-07 | 2026-05-07 |  | 40d |
| 132 |  | Levantamento Arquitetônico | 1d? | 2026-05-07 | 2026-05-07 |  | 40d |
| 133 |  | Relatório de Visita de Campo | 1d? | 2026-05-07 | 2026-05-07 |  | 40d |
| 134 |  | Relatório de Entrevistas | 1d? | 2026-05-07 | 2026-05-07 |  | 40d |
| 135 | 3.2.1.2.2 | **Produção de Subsídios ao Projeto** | 1d? | 2026-05-07 | 2026-05-07 |  | 40d |
| 136 |  | Elaboração do Programa de Necessidades (relação dos ambientes, áreas, mobiliários, fluxos pretendidos, organograma funcional, descrição dos usuários e atividades etc.) | 1d? | 2026-05-07 | 2026-05-07 |  | 40d |
| 137 |  | Estudo de Viabilidade (metodologia empregada, soluções alternativas - físicas e jurídico-legais -, conclusões e recomendações) | 1d? | 2026-05-07 | 2026-05-07 |  | 40d |
| 138 | 3.2.1.3 | **LOD 100 - PROJETO CONCEITUAL** | 1d? | 2026-05-07 | 2026-05-07 |  | 40d |
| 139 |  | Benchmarking (pesquisa e relatório de referências de tipologias semelhantes para entendimento de fluxos, implantação etc. e de outras tipologias para buscar referências estéticas e de materialidade) | 1d? | 2026-05-07 | 2026-05-07 |  | 40d |
| 140 |  | Processo de Criação e início modelagem (atelier, discussão, início de plantas, ideias de fachada) | 1d? | 2026-05-07 | 2026-05-07 |  | 40d |

| ID | WBS | Task | Duration | Start | Finish | Predecessors | Total float |
| --- | --- | --- | --- | --- | --- | --- | --- |
| 141 |  | Plano de Massas (situação/implantação/zoneamento) | 1d? | 2026-05-07 | 2026-05-07 |  | 40d |
| 142 |  | Setorização e Fluxogramas | 1d? | 2026-05-07 | 2026-05-07 |  | 40d |
| 143 |  | Estudo da Forma | 1d? | 2026-05-07 | 2026-05-07 |  | 40d |
| 144 |  | Perspectivas | 1d? | 2026-05-07 | 2026-05-07 |  | 40d |
| 145 |  | Compatibilização (verificar se está tudo conforme as normas urbanísticas e com as disciplinas de engenharia) | 1d? | 2026-05-07 | 2026-05-07 |  | 40d |
| 146 |  | Relatório/Memorial Justificativo de Projeto Conceitual | 1d? | 2026-05-07 | 2026-05-07 |  | 40d |
| 147 | 3.2.1.4 | **LOD 200 - ESTUDO PRELIMINAR** | 2d? | 2026-05-07 | 2026-05-08 |  | 19d |
| 148 | 3.2.1.4.1 | **Modelagem** | 1d? | 2026-05-07 | 2026-05-07 |  | 19d |
| 149 |  | Criação e georreferenciamento e ajuste de norte nos arquivos federado, arquitetura, implantação, layout | 1d? | 2026-05-07 | 2026-05-07 |  | 19d |
| 150 |  | Definição e setagem níveis da edificação | 1d? | 2026-05-07 | 2026-05-07 |  | 19d |
| 151 |  | Modelagem pisos - duplicar linha por ambiente ou pavimento | 1d? | 2026-05-07 | 2026-05-07 |  | 19d |
| 152 |  | Modelagem paredes - duplicar linha por ambiente ou pavimento | 1d? | 2026-05-07 | 2026-05-07 |  | 19d |
| 153 |  | Modelagem simples cobertura | 1d? | 2026-05-07 | 2026-05-07 |  | 19d |
| 154 |  | Compabilização com disciplina de engenharia sobre terraplanagem | 1d? | 2026-05-07 | 2026-05-07 |  | 19d |
| 155 |  | Ajuste topografia (platos e taludes principais) | 1d? | 2026-05-07 | 2026-05-07 |  | 19d |
| 156 |  | Ajuste e setagem materiais pisos e paredes a partir do padrão Quanta | 1d? | 2026-05-07 | 2026-05-07 |  | 19d |
| 157 |  | Inserir Esquadrias | 1d? | 2026-05-07 | 2026-05-07 |  | 19d |
| 158 |  | Modelagem circulação vertical (escadas, rampas, elevadores) | 1d? | 2026-05-07 | 2026-05-07 |  | 19d |
| 159 |  | Modelagem acessos, estacionamentos e canteiros | 1d? | 2026-05-07 | 2026-05-07 |  | 19d |
| 160 |  | Inserir ambientes | 1d? | 2026-05-07 | 2026-05-07 |  | 19d |
| 161 | 3.2.1.4.2 | **Implantação** | 1d? | 2026-05-08 | 2026-05-08 | 148 | 19d |
| 162 |  | Indicação de Norte | 1d? | 2026-05-08 | 2026-05-08 |  | 19d |
| 163 |  | Indicação de escala | 1d? | 2026-05-08 | 2026-05-08 |  | 19d |
| 164 |  | Vias de acesso | 1d? | 2026-05-08 | 2026-05-08 |  | 19d |
| 165 |  | Acesso principal ao objeto arquitetônico | 1d? | 2026-05-08 | 2026-05-08 |  | 19d |
| 166 |  | Platôs e taludes principais | 1d? | 2026-05-08 | 2026-05-08 |  | 19d |
| 167 |  | Perímetro do terreno | 1d? | 2026-05-08 | 2026-05-08 |  | 19d |
| 168 |  | Recuos e afastamentos | 1d? | 2026-05-08 | 2026-05-08 |  | 19d |
| 169 |  | Denominação das edificações | 1d? | 2026-05-08 | 2026-05-08 |  | 19d |
| 170 |  | Indicação de áreas cobertas e estacionamentos | 1d? | 2026-05-08 | 2026-05-08 |  | 19d |
| 171 |  | Cotas gerais | 1d? | 2026-05-08 | 2026-05-08 |  | 19d |
| 172 |  | Cotas de nível principais | 1d? | 2026-05-08 | 2026-05-08 |  | 19d |
| 173 |  | Projeção das coberturas | 1d? | 2026-05-08 | 2026-05-08 |  | 19d |
| 174 |  | Áreas permeáveis e impermeáveis | 1d? | 2026-05-08 | 2026-05-08 |  | 19d |
| 175 |  | Relatório/Memorial Justificativo de Projeto Preliminar | 1d? | 2026-05-08 | 2026-05-08 |  | 19d |
| 176 | 3.2.1.4.3 | **Plantas baixas (igual ou superior a 1:100)** | 1d? | 2026-05-08 | 2026-05-08 | 148 | 39d |
| 177 |  | Indicação de Norte | 1d? | 2026-05-08 | 2026-05-08 |  | 39d |
| 178 |  | Indicação de escala | 1d? | 2026-05-08 | 2026-05-08 |  | 39d |
| 179 |  | Indicação dos acessos | 1d? | 2026-05-08 | 2026-05-08 |  | 39d |
| 180 |  | Vedações internas e externas | 1d? | 2026-05-08 | 2026-05-08 |  | 39d |
| 181 |  | Esquadrias (portas e janelas) | 1d? | 2026-05-08 | 2026-05-08 |  | 39d |
| 182 |  | Elementos estruturais principais | 1d? | 2026-05-08 | 2026-05-08 |  | 39d |
| 183 |  | Identificação dos ambientes | 1d? | 2026-05-08 | 2026-05-08 |  | 39d |
| 184 |  | Espaços de circulação | 1d? | 2026-05-08 | 2026-05-08 |  | 39d |
| 185 |  | Áreas de serviços, funcionais e técnicas | 1d? | 2026-05-08 | 2026-05-08 |  | 39d |
| 186 |  | Projeção de níveis superiores e da cobertura | 1d? | 2026-05-08 | 2026-05-08 |  | 39d |
| 187 |  | Cotas gerais | 1d? | 2026-05-08 | 2026-05-08 |  | 39d |
| 188 |  | Cotas de nível principais | 1d? | 2026-05-08 | 2026-05-08 |  | 39d |
| 189 |  | Relatório/Memorial de Projeto Preliminar | 1d? | 2026-05-08 | 2026-05-08 |  | 39d |
| 190 | 3.2.1.4.4 | **Cortes gerais (longitudinais e transversais)** | 1d? | 2026-05-08 | 2026-05-08 | 148 | 39d |
| 191 |  | Indicação de escala | 1d? | 2026-05-08 | 2026-05-08 |  | 39d |
| 192 |  | Elementos estruturais principais | 1d? | 2026-05-08 | 2026-05-08 |  | 39d |
| 193 |  | Vedações internas e externas | 1d? | 2026-05-08 | 2026-05-08 |  | 39d |
| 194 |  | Esquadrias (portas e janelas) | 1d? | 2026-05-08 | 2026-05-08 |  | 39d |
| 195 |  | Identificação dos ambientes | 1d? | 2026-05-08 | 2026-05-08 |  | 39d |
| 196 |  | Cobertura(s) com indicação da(s) respectiva(s) inclinação(ões) | 1d? | 2026-05-08 | 2026-05-08 |  | 39d |
| 197 |  | Cotas gerais | 1d? | 2026-05-08 | 2026-05-08 |  | 39d |
| 198 |  | Cotas de nível principais | 1d? | 2026-05-08 | 2026-05-08 |  | 39d |
| 199 |  | Eixos do projeto | 1d? | 2026-05-08 | 2026-05-08 |  | 39d |
| 200 |  | Relevo construído | 1d? | 2026-05-08 | 2026-05-08 |  | 39d |
| 201 |  | Projeção da topografia natural | 1d? | 2026-05-08 | 2026-05-08 |  | 39d |
| 202 |  | Relatório/Memorial de Projeto Preliminar | 1d? | 2026-05-08 | 2026-05-08 |  | 39d |
| 203 | 3.2.1.4.5 | **Elevações** | 1d? | 2026-05-07 | 2026-05-07 |  | 40d |
| 204 |  | Indicação de escala | 1d? | 2026-05-07 | 2026-05-07 |  | 40d |
| 205 |  | Elementos estruturais principais (quando aparentes) | 1d? | 2026-05-07 | 2026-05-07 |  | 40d |
| 206 |  | Vedações internas e externas | 1d? | 2026-05-07 | 2026-05-07 |  | 40d |
| 207 |  | Esquadrias (portas e janelas) | 1d? | 2026-05-07 | 2026-05-07 |  | 40d |
| 208 |  | Relevo | 1d? | 2026-05-07 | 2026-05-07 |  | 40d |
| 209 |  | Cotas de nível principais | 1d? | 2026-05-07 | 2026-05-07 |  | 40d |
| 210 |  | Cobertura (quando aparente) | 1d? | 2026-05-07 | 2026-05-07 |  | 40d |

| ID | WBS | Task | Duration | Start | Finish | Predecessors | Total float |
| --- | --- | --- | --- | --- | --- | --- | --- |
| 211 |  | Relatório/Memorial de Projeto Preliminar | 1d? | 2026-05-07 | 2026-05-07 |  | 40d |
| 212 | 3.2.1.4.6 | **Memorial Justificativo (opcional - pactuar com o gestor)** | 1d? | 2026-05-08 | 2026-05-08 | 148 | 39d |
| 213 |  | Partido Arquitetônico para o projeto | 1d? | 2026-05-08 | 2026-05-08 |  | 39d |
| 214 |  | Elaboração/Geração de imagens para relatório (se necessário) | 1d? | 2026-05-08 | 2026-05-08 |  | 39d |
| 215 |  | Decisões de projeto tomadas e suas respectivas justificativas | 1d? | 2026-05-08 | 2026-05-08 |  | 39d |
| 216 | 3.2.1.5 | **LOD 300 - ANTEPROJETO** | 20d | 2026-05-11 | 2026-06-08 |  | 19d |
| 217 | 3.2.1.5.1 | **Modelagem e compatibilização** | 10d | 2026-05-11 | 2026-05-22 |  | 19d |
| 218 |  | Ajustar o navegador de projeto conforme o padrão da Quanta - verificar se todas as vistas estão dentro da disciplina correta - alinahr com o líder da OS | 10d | 2026-05-11 | 2026-05-22 | 161 | 29d |
| 219 |  | Limpar o arquivo e transferir os padões de projeto da Quanta | 10d | 2026-05-11 | 2026-05-22 | 161 | 29d |
| 220 |  | Criar Worksets (em caso de arquivos colaborados) | 10d | 2026-05-11 | 2026-05-22 | 161 | 29d |
| 221 |  | Colocar todas as elementos em seus devidos Worksets | 10d | 2026-05-11 | 2026-05-22 | 161 | 29d |
| 222 |  | Fazer ajustes dos modelos para Colaboração | 10d | 2026-05-11 | 2026-05-22 | 161 | 29d |
| 223 |  | Mudar os pisos para o padrão da quanta (1º pavimento) | 10d | 2026-05-11 | 2026-05-22 | 161 | 29d |
| 224 |  | Mudar as parades para o padão da quanta (1º pavimento) | 10d | 2026-05-11 | 2026-05-22 | 161 | 29d |
| 225 |  | Mudar as portas para o padão da quanta (1º pavimento) | 10d | 2026-05-11 | 2026-05-22 | 161 | 29d |
| 226 |  | Mudar as soleiras para o padão da quanta | 10d | 2026-05-11 | 2026-05-22 | 161 | 29d |
| 227 |  | Mudar as bancadas para o padão da Quanta (1º pavimento) | 10d | 2026-05-11 | 2026-05-22 | 161 | 29d |
| 228 |  | Mudar metais para padrão da Quanta (1º pavimento) | 10d | 2026-05-11 | 2026-05-22 | 161 | 29d |
| 229 |  | Mudar demais acabamentos para padrão o padrão da Quanta | 10d | 2026-05-11 | 2026-05-22 | 161 | 29d |
| 230 |  | Ajustar ralos das áreas molhadas (1º pavimento) | 10d | 2026-05-11 | 2026-05-22 | 161 | 29d |
| 231 |  | Se vier as tomadas - excluir (1º Pavimento) | 10d | 2026-05-11 | 2026-05-22 | 161 | 29d |
| 232 |  | Se vier as luminárias - excluir (1° pavimento) | 10d | 2026-05-11 | 2026-05-22 | 161 | 29d |
| 233 |  | Inserir caixa d'água - Conferir pré dimensionamento com a engenharia | 10d | 2026-05-11 | 2026-05-22 | 161 | 29d |
| 234 |  | Separar camadas dos pisos - leje 10cm (1° camada), contrapiso 3cm+argamassa 2cm+rev 1cm, (2°camada) | 10d | 2026-05-11 | 2026-05-22 | 161 | 29d |
| 235 |  | Descrição dos elementos da edificação | 10d | 2026-05-11 | 2026-05-22 | 161 | 29d |
| 236 |  | Descrição dos componentes construtivos e materiais de construção | 10d | 2026-05-11 | 2026-05-22 | 161 | 29d |
| 237 |  | Lista de pranchas anexas e documentos | 10d | 2026-05-11 | 2026-05-22 | 161 | 29d |
| 238 |  | Vias de acesso ao conjunto, arruamento, logradouros adjacentes e calçadas com os respectivos equipamentos urbanos; | 10d | 2026-05-11 | 2026-05-22 | 161 | 29d |
| 239 |  | Platôs e taludes principais; | 10d | 2026-05-11 | 2026-05-22 | 161 | 29d |
| 240 |  | Perímetro do terreno, recuos e afastamentos; | 10d | 2026-05-11 | 2026-05-22 | 161 | 29d |
| 241 |  | Indicação das áreas a serem edificadas com o contorno da cobertura das edificações, estacionamentos e áreas permeáveis/impermeáveis; | 10d | 2026-05-11 | 2026-05-22 | 161 | 29d |
| 242 |  | Denominação das edificações, blocos ou espaços; | 10d | 2026-05-11 | 2026-05-22 | 161 | 29d |
| 243 |  | Cotas gerais | 10d | 2026-05-11 | 2026-05-22 | 161 | 29d |
| 244 |  | Cotas de nível principal. | 10d | 2026-05-11 | 2026-05-22 | 161 | 29d |
| 245 |  | Quadros de áreas | 10d | 2026-05-11 | 2026-05-22 | 161 | 19d |
| 246 |  | Planta com as cotas de nível projetadas e existentes | 1d | 2026-05-25 | 2026-05-25 | 245 | 19d |
| 247 | 3.2.1.5.3 | **Plantas baixas (se tiver mais de um pavimento, duplicar bloco)** | 1d | 2026-05-26 | 2026-05-26 |  | 19d |
| 248 |  | Indicar simbologias de representação gráfica, conforme NBR 6492:2021; | 1d | 2026-05-26 | 2026-05-26 | 246 | 27d |
| 249 |  | Compatibilização (verificar se está tudo conforme as normas e alinhar com o restante das disciplinas de engenharia) | 1d | 2026-05-26 | 2026-05-26 | 246 | 27d |
| 250 |  | Compatibilização (deixar tudo conforme padrão Quanta) | 1d | 2026-05-26 | 2026-05-26 | 246 | 27d |
| 251 |  | Indicação de Norte; | 1d | 2026-05-26 | 2026-05-26 | 246 | 27d |
| 252 |  | Indicação de Escala; | 1d | 2026-05-26 | 2026-05-26 | 246 | 27d |
| 253 |  | Indicação de Acessos; | 1d | 2026-05-26 | 2026-05-26 | 246 | 27d |
| 254 |  | Elementos de vedação internos e externos; | 1d | 2026-05-26 | 2026-05-26 | 246 | 27d |
| 255 |  | Esquadrias (sem código e sem quadro); | 1d | 2026-05-26 | 2026-05-26 | 246 | 27d |
| 256 |  | Elementos estruturais principais; | 1d | 2026-05-26 | 2026-05-26 | 246 | 27d |
| 257 |  | Identificação dos ambientes e espaços (internos e externos); | 1d | 2026-05-26 | 2026-05-26 | 246 | 27d |
| 258 |  | Espaços de circulação internos e externos; | 1d | 2026-05-26 | 2026-05-26 | 246 | 27d |
| 259 |  | Áreas de serviço, funcionais e técnicas (internos e externos); | 1d | 2026-05-26 | 2026-05-26 | 246 | 27d |
| 260 |  | Projeções de níveis superiores; | 1d | 2026-05-26 | 2026-05-26 | 246 | 27d |
| 261 |  | Cotas gerais | 1d | 2026-05-26 | 2026-05-26 | 246 | 27d |
| 262 |  | Cotas de nível principal. | 1d | 2026-05-26 | 2026-05-26 | 246 | 27d |
| 263 |  | Quadro de áreas | 1d | 2026-05-26 | 2026-05-26 | 246 | 19d |
| 264 | 3.2.1.5.4 | **Planta das coberturas** | 1d | 2026-05-27 | 2026-05-27 |  | 19d |
| 265 |  | Indicação do Norte | 1d | 2026-05-27 | 2026-05-27 | 263 | 26d |
| 266 |  | Indicação de escala | 1d | 2026-05-27 | 2026-05-27 | 263 | 26d |
| 267 |  | Curvas de nível | 1d | 2026-05-27 | 2026-05-27 | 263 | 26d |
| 268 |  | Indicação de Acessos; | 1d | 2026-05-27 | 2026-05-27 | 263 | 26d |
| 269 |  | Estacionamento e áreas cobertas | 1d | 2026-05-27 | 2026-05-27 | 263 | 26d |
| 270 |  | Cobertura das edificações | 1d | 2026-05-27 | 2026-05-27 | 263 | 26d |
| 271 |  | Sentido de escoamento das águas pluviais e inclinação | 1d | 2026-05-27 | 2026-05-27 | 263 | 26d |
| 272 |  | Cotas gerais | 1d | 2026-05-27 | 2026-05-27 | 263 | 26d |
| 273 |  | Cotas de nível principal | 1d | 2026-05-27 | 2026-05-27 | 263 | 19d |
| 274 | 3.2.1.5.5 | **Cortes longitudinais** | 1d | 2026-05-28 | 2026-05-28 |  | 19d |
| 275 |  | Indicar simbologias de representação gráfica, conforme NBR 6492:2021; | 1d | 2026-05-28 | 2026-05-28 | 273 | 25d |
| 276 |  | Indicação de Escala; | 1d | 2026-05-28 | 2026-05-28 | 273 | 25d |
| 277 |  | Elementos estruturais principais; | 1d | 2026-05-28 | 2026-05-28 | 273 | 25d |
| 278 |  | Elementos de vedação internos e externos; | 1d | 2026-05-28 | 2026-05-28 | 273 | 25d |
| 279 |  | Esquadrias; | 1d | 2026-05-28 | 2026-05-28 | 273 | 25d |
| 280 |  | Identificação dos ambientes; | 1d | 2026-05-28 | 2026-05-28 | 273 | 25d |

| ID | WBS | Task | Duration | Start | Finish | Predecessors | Total float |
| --- | --- | --- | --- | --- | --- | --- | --- |
| 281 |  | Cobertura com indicação da respectiva inclinação; | 1d | 2026-05-28 | 2026-05-28 | 273 | 25d |
| 282 |  | Cotas gerais; | 1d | 2026-05-28 | 2026-05-28 | 273 | 25d |
| 283 |  | Cotas de nível principal; | 1d | 2026-05-28 | 2026-05-28 | 273 | 25d |
| 284 |  | Eixos do projeto; | 1d | 2026-05-28 | 2026-05-28 | 273 | 25d |
| 285 |  | Relevo construído; | 1d | 2026-05-28 | 2026-05-28 | 273 | 25d |
| 286 |  | Projeção da topografia natural. | 1d | 2026-05-28 | 2026-05-28 | 273 | 19d |
| 287 | 3.2.1.5.6 | **Cortes transversais** | 1d | 2026-05-29 | 2026-05-29 |  | 19d |
| 288 |  | Indicar simbologias de representação gráfica, conforme NBR 6492:2021; | 1d | 2026-05-29 | 2026-05-29 | 286 | 24d |
| 289 |  | Indicação de Escala; | 1d | 2026-05-29 | 2026-05-29 | 286 | 24d |
| 290 |  | Elementos estruturais principais; | 1d | 2026-05-29 | 2026-05-29 | 286 | 24d |
| 291 |  | Elementos de vedação internos e externos; | 1d | 2026-05-29 | 2026-05-29 | 286 | 24d |
| 292 |  | Esquadrias; | 1d | 2026-05-29 | 2026-05-29 | 286 | 24d |
| 293 |  | Identificação dos ambientes; | 1d | 2026-05-29 | 2026-05-29 | 286 | 24d |
| 294 |  | Cobertura com indicação da respectiva inclinação; | 1d | 2026-05-29 | 2026-05-29 | 286 | 24d |
| 295 |  | Cotas gerais; | 1d | 2026-05-29 | 2026-05-29 | 286 | 24d |
| 296 |  | Cotas de nível principal; | 1d | 2026-05-29 | 2026-05-29 | 286 | 24d |
| 297 |  | Eixos do projeto; | 1d | 2026-05-29 | 2026-05-29 | 286 | 24d |
| 298 |  | Relevo construído; | 1d | 2026-05-29 | 2026-05-29 | 286 | 24d |
| 299 |  | Projeção da topografia natural | 1d | 2026-05-29 | 2026-05-29 | 286 | 19d |
| 300 | 3.2.1.5.7 | **Elevações** | 1d | 2026-06-01 | 2026-06-01 |  | 19d |
| 301 |  | Indicar simbologias de representação gráfica, conforme NBR 6492:2021; | 1d | 2026-06-01 | 2026-06-01 | 299 | 19d |
| 302 |  | Indicação de Escala; | 1d | 2026-06-01 | 2026-06-01 | 299 | 19d |
| 303 |  | Elementos estruturais principais; | 1d | 2026-06-01 | 2026-06-01 | 299 | 19d |
| 304 |  | Elementos de vedação internos e externos; | 1d | 2026-06-01 | 2026-06-01 | 299 | 19d |
| 305 |  | Esquadrias (sem código e sem quadro); | 1d | 2026-06-01 | 2026-06-01 | 299 | 19d |
| 306 |  | Relevo construído; | 1d | 2026-06-01 | 2026-06-01 | 299 | 19d |
| 307 |  | Cotas gerais; | 1d | 2026-06-01 | 2026-06-01 | 299 | 19d |
| 308 |  | Cotas de nível principais; | 1d | 2026-06-01 | 2026-06-01 | 299 | 19d |
| 309 |  | Cobertura (quando aparente). | 1d | 2026-06-01 | 2026-06-01 | 299 | 19d |
| 310 |  | Memorial Descritivo | 4d | 2026-06-02 | 2026-06-08 | 300 | 19d |
| 311 |  | Aprovação de Conformidade | 3d | 2026-06-03 | 2026-06-08 | 310FF | 19d |
| 312 |  | Material para entrega ao contrato | 3d | 2026-06-03 | 2026-06-08 | 310FF | 19d |
| 313 | 3.2.4 | **Engenharia** | 41d? | 2026-05-07 | 2026-07-03 |  | 0d |
| 314 | 3.2.4.1 | **Estrutura** | 34d | 2026-05-08 | 2026-06-25 |  | 6d |
| 315 | 3.2.4.1.1 | **LOD 100 — Premissas, diretrizes e interfaces** | 7d | 2026-05-08 | 2026-05-18 |  | 6d |
| 316 |  | Levantamento de tipos de cargas globais estimadas (permanentes, acidentais, vento e especiais). | 2d | 2026-05-08 | 2026-05-11 | 161SS | 38d |
| 317 |  | Estudo volumétrico com modulação inicial de pilares, vigas e lajes. Entendendo vãos e desafios | 5d | 2026-05-08 | 2026-05-14 | 161SS | 35d |
| 318 |  | Localização aproximada de elementos estruturais principais. Avaliando vãos e estudando posições | 2d | 2026-05-08 | 2026-05-11 | 161SS | 6d |
| 319 |  | Estudo de viabilidade técnica e construtiva. | 3d | 2026-05-12 | 2026-05-14 | 318 | 6d |
| 320 |  | Definição preliminar do sistema estrutural (concreto armado, metálica ou mista). | 3d | 2026-05-12 | 2026-05-14 | 318 | 35d |
| 321 |  | Estimativa preliminar de tipologias de fundações (sapatas, blocos, estacas). | 2d | 2026-05-15 | 2026-05-18 | 319 | 33d |
| 322 |  | Previsão de áreas técnicas, casas de máquinas, reservatórios elevados e estrutura de cobertura. | 2d | 2026-05-15 | 2026-05-18 | 319 | 6d |
| 323 | 3.2.4.1.2 | **LOD 200 — Validação interdisciplinar e solução preliminar** | 20d | 2026-05-19 | 2026-06-16 |  | 6d |
| 324 |  | Lista preliminar de cargas e ações para dimensionamento. | 5d | 2026-05-19 | 2026-05-25 | 322 | 6d |
| 325 |  | Definição preliminar de alturas de pavimentos e níveis de fundação. | 5d | 2026-05-19 | 2026-05-25 | 322 | 28d |
| 326 |  | Indicação aproximada do sistema de cobertura (tesouras, treliças, vigamento metálico ou concreto). | 5d | 2026-05-19 | 2026-05-25 | 322 | 28d |
| 327 |  | Modelagem genérica de pilares, vigas, lajes e fundações. | 5d | 2026-05-26 | 2026-06-01 | 324 | 23d |
| 328 |  | Traçado preliminar de elementos especiais (escadas, rampas estruturais, reservatórios). | 5d | 2026-05-26 | 2026-06-01 | 324 | 18d |
| 329 |  | Arquivo IFC, plantas de forma e planta de locação | 5d | 2026-05-26 | 2026-06-01 | 324 | 6d |
| 330 |  | Inserção de fundações com tipologia e dimensões preliminares. | 5d | 2026-06-02 | 2026-06-09 | 328 | 18d |
| 331 |  | Compatibilização inicial com arquitetura e demais disciplinas. | 5d | 2026-06-02 | 2026-06-09 | 329 | 18d |
| 332 |  | Indicação de passagens de infraestrutura (shafts, aberturas em lajes e vigas). | 5d | 2026-06-02 | 2026-06-09 | 329 | 18d |
| 333 |  | Modelagem assertiva de elementos principais com dimensões aproximadas (largura, altura, espessura). | 10d | 2026-06-02 | 2026-06-16 | 329 | 6d |
| 334 |  | Modelagem estimada de armaduras principais (em nível de concepção). | 5d | 2026-06-10 | 2026-06-16 | 333FF | 6d |
| 335 | 3.2.4.1.3 | **LOD 300 - Consolidação e documentação de entrega** | 7d | 2026-06-17 | 2026-06-25 |  | 6d |
| 336 |  | Indicação de níveis e cotas exatas. | 7d | 2026-06-17 | 2026-06-25 | 333, 334 | 6d |
| 337 |  | Quadro de cargas atualizado. | 7d | 2026-06-17 | 2026-06-25 | 333, 334 | 6d |
| 338 |  | Dimensionamento final de fundações conforme sondagem e cálculo estrutural. | 7d | 2026-06-17 | 2026-06-25 | 333, 334 | 6d |
| 339 |  | Definição final dos elementos da cobertura (treliças, vigas, chapas, purlins). | 7d | 2026-06-17 | 2026-06-25 | 333, 334 | 6d |
| 340 |  | Compatibilização final com arquitetura e instalações (aberturas, embutidos e passagens). | 7d | 2026-06-17 | 2026-06-25 | 333, 334 | 6d |
| 341 |  | Modelagem definitiva de pilares, vigas, lajes, blocos, sapatas e estacas. | 7d | 2026-06-17 | 2026-06-25 | 333, 334 | 6d |
| 342 |  | Planta estrutural com todos os elementos identificados. | 7d | 2026-06-17 | 2026-06-25 | 333, 334 | 6d |
| 343 |  | Memorial descritivo contendo: objetivos, justificativa, descrição do sistema, concepção de fundações/cobertura, especificações e quadro de cargas. | 7d | 2026-06-17 | 2026-06-25 | 333, 334 | 6d |
| 344 |  | Normas técnicas utilizadas (NBR 6118, 6120, 6122, 8800, etc.). | 7d | 2026-06-17 | 2026-06-25 | 333, 334 | 6d |
| 345 |  | Consolidar documentação de entrega e emissão formal da disciplina | 7d | 2026-06-17 | 2026-06-25 | 333, 334 | 6d |
| 346 |  | Aprovação de Conformidade | 3d | 2026-06-23 | 2026-06-25 | 335FF | 6d |
| 347 |  | Material para entrega ao contrato | 3d | 2026-06-23 | 2026-06-25 | 335FF | 6d |
| 348 | 3.2.4.2 | **Hidrossanitário** | 38d | 2026-05-07 | 2026-06-30 |  | 3d |
| 349 | 3.2.4.2.1 | **LOD 100 — Premissas, diretrizes e interfaces** | 11d | 2026-05-07 | 2026-05-21 |  | 3d |
| 350 |  | Memorial preliminar | 10d | 2026-05-08 | 2026-05-21 | 161SS | 30d |

| ID | WBS | Task | Duration | Start | Finish | Predecessors | Total float |
| --- | --- | --- | --- | --- | --- | --- | --- |
| 351 |  | Indicação de áreas técnicas | 6d | 2026-05-08 | 2026-05-15 | 161SS | 34d |
| 352 |  | Planta baixa com traçado conceitual | 6d | 2026-05-08 | 2026-05-15 | 161SS | 34d |
| 353 |  | Pontos de consumo principais e coletas sanitárias | 6d | 2026-05-08 | 2026-05-15 | 161SS | 6d |
| 354 |  | Classificação de uso | 10d | 2026-05-07 | 2026-05-20 | 353FF | 31d |
| 355 |  | Diretrizes de espaço | 10d | 2026-05-07 | 2026-05-20 | 353FF | 31d |
| 356 |  | Estimativa de demanda ou população de uso | 10d | 2026-05-07 | 2026-05-20 | 353FF | 31d |
| 357 |  | Levantamento de elementos especiais dentre outras disciplinas de Engenharia e Arquitetura | 10d | 2026-05-07 | 2026-05-20 | 353FF | 3d |
| 358 | 3.2.4.2.2 | **LOD 200 — Validação interdisciplinar e solução preliminar** | 20d | 2026-05-21 | 2026-06-18 |  | 3d |
| 359 |  | Critérios normativos adotados (ABNT, concessionárias, etc.) | 20d | 2026-05-21 | 2026-06-18 | 357 | 11d |
| 360 |  | Informações de demanda na concessionária (DPE ou AVT Aviso de Viabilidade Técnica) | 20d | 2026-05-21 | 2026-06-18 | 359SS | 11d |
| 361 |  | Recebimento e Análise de Sondagem (permeabilidade ou percolação) | 20d | 2026-05-21 | 2026-06-18 | 359SS | 11d |
| 362 |  | Recebimento e Análise de Topografia | 20d | 2026-05-21 | 2026-06-18 | 359SS | 11d |
| 363 |  | Estudo de viabilidade técnica, econômica e ambiental | 20d | 2026-05-21 | 2026-06-18 | 359SS | 11d |
| 364 |  | Lista preliminar de sistemas envolvidos. | 20d | 2026-05-21 | 2026-06-18 | 357 | 11d |
| 365 |  | Planta baixa e cortes estimada contendo: - Traçado preliminar de barrilete, ramais, colunas - Diâmetros estimados - Localização aproximada das bombas e unidades de tratamento e reúso - Localização do ramal predial de água e esgoto - Localização aproximada | 20d | 2026-05-21 | 2026-06-18 | 357 | 3d |
| 366 | 3.2.4.2.3 | **LOD 300 - Consolidação e documentação de entrega** | 8d | 2026-06-19 | 2026-06-30 |  | 3d |
| 367 |  | Planta, corte e detalhe isométrico contendo: - Modelagem detalhada com diâmetros, cotas e inclinações definitivas (barriletes, colunas, ramais) - Quantitativos e especificação técnica dos materiais (tubos, conexões, reservatórios, registros e válvulas com | 8d | 2026-06-19 | 2026-06-30 | 365 | 3d |
| 368 |  | Memorial descritivo | 3d | 2026-06-26 | 2026-06-30 | 367FF | 3d |
| 369 |  | Memória de cálculo (pressão, vazão, diâmetros, perda de carga). | 3d | 2026-06-26 | 2026-06-30 | 365, 367FF | 3d |
| 370 |  | Aprovação de Conformidade | 3d | 2026-06-26 | 2026-06-30 | 366FF | 3d |
| 371 |  | Material para entrega ao contrato | 3d | 2026-06-26 | 2026-06-30 | 366FF | 3d |
| 372 | 3.2.4.3 | **AVAC** | 34d | 2026-05-08 | 2026-06-25 |  | 0d |
| 373 | 3.2.4.3.1 | **LOD 100 — Premissas, diretrizes e interfaces** | 20d | 2026-05-08 | 2026-06-05 |  | 0d |
| 374 |  | Estimativa de carga térmica por ambiente. | 10d | 2026-05-08 | 2026-05-21 | 161SS | 30d |
| 375 |  | Localização preliminar de unidades de tratamento de ar, condensadoras e exaustores. | 10d | 2026-05-08 | 2026-05-21 | 161SS | 30d |
| 376 |  | Pontos locação para seus elementos no projeto arquitetônico. | 10d | 2026-05-08 | 2026-05-21 | 161SS | 0d |
| 377 |  | Estudo de viabilidade e rotas principais de distribuição de ar. | 10d | 2026-05-08 | 2026-05-21 | 161SS | 30d |
| 378 |  | Reserva de espaços técnicos e shafts. | 10d | 2026-05-08 | 2026-05-21 | 161SS | 6d |
| 379 |  | Levantamento de cargas especiais provenientes de outras disciplinas. | 10d | 2026-05-22 | 2026-06-05 | 410, 422 | 20d |
| 380 | 3.2.4.3.2 | **LOD 200 — Validação interdisciplinar e solução preliminar** | 24d | 2026-05-22 | 2026-06-25 |  | 6d |
| 381 |  | Lista preliminar de sistemas HVAC envolvidos (expansão direta, VRF, chillers, ventilação, exaustão). | 24d | 2026-05-22 | 2026-06-25 | 378 | 6d |
| 382 |  | Planta baixa estimada contendo: pontos de insuflamento e retorno. | 24d | 2026-05-22 | 2026-06-25 | 378 | 6d |
| 383 |  | Rotas iniciais de dutos, tubulações e drenos. | 24d | 2026-05-22 | 2026-06-25 | 378 | 6d |
| 384 |  | Planta baixa estimada contendo: unidades internas e externas com posição preliminar. | 24d | 2026-05-22 | 2026-06-25 | 378 | 6d |
| 385 |  | Aprovação de Conformidade | 3d | 2026-06-23 | 2026-06-25 | 380FF | 6d |
| 386 |  | Material para entrega ao contrato | 3d | 2026-06-23 | 2026-06-25 | 380FF | 6d |
| 387 | 3.2.4.4 | **PCI (Incêndio)** | 34d | 2026-05-08 | 2026-06-25 |  | 0d |
| 388 | 3.2.4.4.1 | **LOD 100 — Premissas, diretrizes e interfaces** | 10d | 2026-05-08 | 2026-05-21 |  | 0d |
| 389 |  | Estudo e avaliação da arquitetura atendendo as normas competentes de PCI | 10d | 2026-05-08 | 2026-05-21 | 161SS | 30d |
| 390 |  | Avaliação do espaço para CMI e Central de Gás. | 10d | 2026-05-08 | 2026-05-21 | 161SS | 30d |
| 391 |  | Pontos locação para seus elementos no projeto arquitetônico | 10d | 2026-05-08 | 2026-05-21 | 161SS | 0d |
| 392 | 3.2.4.4.2 | **LOD 200 — Validação interdisciplinar e solução preliminar** | 24d | 2026-05-22 | 2026-06-25 |  | 6d |
| 393 |  | Definição da classificação da edificação e o risco de incêndio | 24d | 2026-05-22 | 2026-06-25 | 391 | 6d |
| 394 |  | Cálculos pré-dimensionados dos extintores, hidrantes e bomba. | 24d | 2026-05-22 | 2026-06-25 | 391 | 6d |
| 395 |  | Avaliação das rotas de fuga, ventilação de CMI e outros elementos de importância para as normas de PCI | 24d | 2026-05-22 | 2026-06-25 | 391 | 6d |
| 396 | 3.2.4.5 | **Gás** | 35d? | 2026-05-07 | 2026-06-25 |  | 6d |
| 397 | 3.2.4.5.1 | **LOD 100 — Premissas, diretrizes e interfaces** | 1d? | 2026-05-07 | 2026-05-07 |  | 40d |
| 398 |  | Estudo e avaliação da arquitetura atendendo as normas competentes de PCI | 1d? | 2026-05-07 | 2026-05-07 |  | 40d |
| 399 |  | Avaliação do espaço para CMI e Central de Gás. | 1d? | 2026-05-07 | 2026-05-07 |  | 40d |
| 400 |  | Pontos locação para seus elementos no projeto arquitetônico | 1d? | 2026-05-07 | 2026-05-07 |  | 40d |
| 401 | 3.2.4.5.2 | **LOD 200 — Validação interdisciplinar e solução preliminar** | 35d? | 2026-05-07 | 2026-06-25 |  | 6d |
| 402 |  | Definição da classificação da edificação e o risco de incêndio | 1d? | 2026-05-07 | 2026-05-07 |  | 40d |
| 403 |  | Cálculos pré-dimensionados dos extintores, hidrantes e bomba. | 1d? | 2026-05-07 | 2026-05-07 |  | 40d |
| 404 |  | Avaliação das rotas de fuga, ventilação de CMI e outros elementos de importância para as normas de PCI | 1d? | 2026-05-07 | 2026-05-07 |  | 40d |
| 405 |  | Aprovação de Conformidade | 3d | 2026-06-23 | 2026-06-25 | 392FF | 6d |
| 406 |  | Material para entrega ao contrato | 3d | 2026-06-23 | 2026-06-25 | 392FF | 6d |
| 407 | 3.2.4.6 | **Elétrica Baixa Tensão** | 40d | 2026-05-08 | 2026-07-03 |  | 0d |
| 408 | 3.2.4.6.1 | **LOD 100 — Concepção** | 16d | 2026-05-08 | 2026-05-29 |  | 6d |
| 409 |  | Avaliação e Diretrizes Técnicas para Arquitetura | 6d | 2026-05-08 | 2026-05-15 | 161SS | 34d |
| 410 |  | Estimativa de Cargas e Demanda | 10d | 2026-05-08 | 2026-05-21 | 161SS | 6d |
| 411 |  | Levantamento de Equipamentos de Outras Disciplinas | 6d | 2026-05-22 | 2026-05-29 | 376, 391 | 0d |
| 412 | 3.2.4.6.2 | **LOD 200 — Anteprojeto** | 19d | 2026-06-01 | 2026-06-26 |  | 0d |
| 413 |  | TUGs Estimados | 19d | 2026-06-01 | 2026-06-26 | 410, 411 | 0d |
| 414 |  | Pontos de Luz Estimados | 19d | 2026-06-01 | 2026-06-26 | 410, 411 | 0d |
| 415 |  | TUEs e Quadros Estimados | 19d | 2026-06-01 | 2026-06-26 | 410, 411 | 0d |
| 416 |  | LOD 300 - Consolidação e documentação de entrega | 5d | 2026-06-29 | 2026-07-03 | 412 | 0d |
| 417 |  | Aprovação de Conformidade | 3d | 2026-07-01 | 2026-07-03 | 416FF | 0d |
| 418 |  | Material para entrega ao contrato | 3d | 2026-07-01 | 2026-07-03 | 416FF | 0d |
| 419 | 3.2.4.7 | **Telecom** | 34d | 2026-05-08 | 2026-06-25 |  | 6d |
| 420 | 3.2.4.7.1 | **LOD 100 — Concepção** | 10d | 2026-05-08 | 2026-05-21 |  | 6d |

| ID | WBS | Task | Duration | Start | Finish | Predecessors | Total float |
| --- | --- | --- | --- | --- | --- | --- | --- |
| 421 |  | Avaliação e Diretrizes Técnicas para Arquitetura | 10d | 2026-05-08 | 2026-05-21 | 161SS | 30d |
| 422 |  | Estimativa de Demanda de Telecomunicações | 10d | 2026-05-08 | 2026-05-21 | 161SS | 20d |
| 423 |  | Levantamento de Equipamentos e Interfaces com Outras Disciplinas | 10d | 2026-05-08 | 2026-05-21 | 161SS | 6d |
| 424 | 3.2.4.7.2 | **LOD 200 — Anteprojeto** | 20d | 2026-05-22 | 2026-06-19 |  | 6d |
| 425 |  | Pontos de Telecomunicações Estimados (Rede, Voz, CFTV e Demais Sistemas) | 10d | 2026-05-22 | 2026-06-05 | 423 | 6d |
| 426 |  | Racks Estimados | 10d | 2026-05-22 | 2026-06-05 | 423 | 6d |
| 427 |  | Infraestrutura de Telecomunicações Preliminar | 10d | 2026-06-08 | 2026-06-19 | 425, 426 | 6d |
| 428 |  | LOD 300 - Consolidação e documentação de entrega | 4d | 2026-06-22 | 2026-06-25 | 424 | 6d |
| 429 |  | Aprovação de Conformidade | 3d | 2026-06-23 | 2026-06-25 | 428FF | 6d |
| 430 |  | Material para entrega ao contrato | 3d | 2026-06-23 | 2026-06-25 | 428FF | 6d |
| 431 | 3.2.4.8 | **Subestação** | 34d | 2026-05-08 | 2026-06-25 |  | 6d |
| 432 | 3.2.4.8.1 | **LOD 100 — Concepção** | 10d | 2026-05-08 | 2026-05-21 |  | 6d |
| 433 |  | Avaliação e Diretrizes Técnicas para Arquitetura | 10d | 2026-05-08 | 2026-05-21 | 161SS | 30d |
| 434 |  | Levantamento de Demanda, Perfil de Consumo e Ponto de Entrega | 10d | 2026-05-08 | 2026-05-21 | 161SS | 30d |
| 435 |  | Estudo de Viabilidade Técnica e Atendimento ao Padrão da Concessionária | 10d | 2026-05-08 | 2026-05-21 | 161SS | 6d |
| 436 | 3.2.4.8.2 | **LOD 200 — Anteprojeto** | 20d | 2026-05-22 | 2026-06-19 |  | 6d |
| 437 |  | Definição do Tipo de Subestação e Arranjo Físico Preliminar | 10d | 2026-05-22 | 2026-06-05 | 435 | 6d |
| 438 |  | Dimensionamento Preliminar do Transformador e Equipamentos Principais | 10d | 2026-06-08 | 2026-06-19 | 437 | 6d |
| 439 |  | Diretrizes Preliminares de Aterramento | 10d | 2026-06-08 | 2026-06-19 | 437 | 6d |
| 440 |  | LOD 300 - Consolidação e documentação de entrega | 4d | 2026-06-22 | 2026-06-25 | 436 | 6d |
| 441 |  | Aprovação de Conformidade | 3d | 2026-06-23 | 2026-06-25 | 440FF | 6d |
| 442 |  | Material para entrega ao contrato | 3d | 2026-06-23 | 2026-06-25 | 440FF | 6d |
| 443 | 3.2.4.9 | **SPDA** | 34d | 2026-05-08 | 2026-06-25 |  | 6d |
| 444 | 3.2.4.9.1 | **LOD 100 — Concepção** | 10d | 2026-05-08 | 2026-05-21 |  | 6d |
| 445 |  | Avaliação e Diretrizes Técnicas para Arquitetura | 10d | 2026-05-08 | 2026-05-21 | 161SS | 30d |
| 446 |  | Coleta de Informações da Edificação e Análise de Risco (ABNT NBR 5419-2) | 10d | 2026-05-08 | 2026-05-21 | 161SS | 30d |
| 447 |  | Estudo Preliminar de Necessidade e Nível de Proteção do SPDA | 10d | 2026-05-08 | 2026-05-21 | 161SS | 6d |
| 448 | 3.2.4.9.2 | **LOD 200 — Anteprojeto** | 20d | 2026-05-22 | 2026-06-19 |  | 6d |
| 449 |  | Definição da Estratégia de Proteção e Soluções Técnicas | 10d | 2026-05-22 | 2026-06-05 | 447 | 6d |
| 450 |  | Zoneamento de Captação, Descida e Traçados Preliminares | 10d | 2026-06-08 | 2026-06-19 | 449 | 10d |
| 451 |  | Estudo de Interferências, Compatibilização e Métodos Construtivos | 10d | 2026-06-08 | 2026-06-19 | 449 | 6d |
| 452 |  | LOD 300 - Consolidação e documentação de entrega | 4d | 2026-06-22 | 2026-06-25 | 451 | 6d |
| 453 |  | Aprovação de Conformidade | 3d | 2026-06-23 | 2026-06-25 | 452FF | 6d |
| 454 |  | Material para entrega ao contrato | 3d | 2026-06-23 | 2026-06-25 | 452FF | 6d |
| 455 | 3.2.4.10 | **Energia Renovável** | 34d | 2026-05-08 | 2026-06-25 |  | 6d |
| 456 | 3.2.4.10.1 | **LOD 100 — Concepção** | 10d | 2026-05-08 | 2026-05-21 |  | 6d |
| 457 |  | Viabilidade e Premissas de Geração | 10d | 2026-05-08 | 2026-05-21 | 161SS | 30d |
| 458 |  | Levantamento Preliminar de Áreas e Sombreamento | 10d | 2026-05-08 | 2026-05-21 | 161SS | 6d |
| 459 |  | Avaliação e Diretrizes Técnicas para Arquitetônico | 10d | 2026-05-08 | 2026-05-21 | 161SS | 30d |
| 460 | 3.2.4.10.2 | **LOD 200 — Anteprojeto** | 20d | 2026-05-22 | 2026-06-19 |  | 6d |
| 461 |  | Layout Preliminar de Módulos, Inversores e String Boxes | 20d | 2026-05-22 | 2026-06-19 | 458 | 6d |
| 462 |  | Infraestrutura e Rotas Técnicas Preliminares (DC/AC e Aterramento) | 20d | 2026-05-22 | 2026-06-19 | 458 | 6d |
| 463 |  | Critérios Preliminares de Proteção e Estimativa de Quantitativos | 20d | 2026-05-22 | 2026-06-19 | 458 | 6d |
| 464 |  | LOD 300 - Consolidação e documentação de entrega | 4d | 2026-06-22 | 2026-06-25 | 460 | 6d |
| 465 |  | Aprovação de Conformidade | 3d | 2026-06-23 | 2026-06-25 | 464FF | 6d |
| 466 |  | Material para entrega ao contrato | 3d | 2026-06-23 | 2026-06-25 | 464FF | 6d |
| 467 |  | P2 - Orçamento/Cronograma | 20d | 2026-07-06 | 2026-07-31 | 30 | 0d |
| 468 |  | P3 - Modelagem Econômico Financeira | 10d | 2026-07-20 | 2026-07-31 | 467FF | 0d |
| 469 |  | P4 - Modelagem Jurídica | 10d | 2026-07-20 | 2026-07-31 | 467FF | 0d |
| 471 |  | Periodo de revisão se necessário | 0d | 2026-05-07 | 2026-05-07 |  | 61d |

## Version 2 (data date 2026-08-11, saved 2026-08-11, file Arquivo Modelo_28_CINEMA.mpp)

Last finish 2026-07-31 → 2026-09-25 (+56d). Complete tasks 0 → 131.

Added:

| ID | Task | Duration | Start | Finish | Predecessors | Constraint |
| --- | --- | --- | --- | --- | --- | --- |
| 29 | Estudo de inundação | 2d | 2026-07-31 | 2026-08-03 |  | start no earlier than 2026-07-31 |
| 102 | **Hidráulica** | 29d | 2026-08-03 A | 2026-09-11 |  |  |
| 104 | Memorial preliminar | 6d | 2026-08-03 A | 2026-08-10 | 78SS |  |
| 105 | Indicação de áreas técnicas | 6d | 2026-08-03 A | 2026-08-10 | 78SS |  |
| 106 | Planta baixa com traçado conceitual | 6d | 2026-08-03 A | 2026-08-10 | 78SS |  |
| 107 | Pontos de consumo principais e coletas sanitárias | 6d | 2026-08-03 A | 2026-08-10 | 78SS |  |
| 108 | Classificação de uso | 6d | 2026-08-03 A | 2026-08-10 | 78SS |  |
| 109 | Diretrizes de espaço | 6d | 2026-08-03 A | 2026-08-10 | 78SS |  |
| 110 | Estimativa de demanda ou população de uso | 6d | 2026-08-03 A | 2026-08-10 | 78SS |  |
| 111 | Levantamento de elementos especiais dentre outras disciplinas de Engenharia e Arquitetura | 6d | 2026-08-03 A | 2026-08-10 | 78SS |  |
| 113 | Critérios normativos adotados (ABNT, concessionárias, etc.) | 17d | 2026-08-11 | 2026-09-02 | 111 |  |
| 114 | Informações de demanda na concessionária (DPE ou AVT Aviso de Viabilidade Técnica) | 17d | 2026-08-11 | 2026-09-02 | 113SS |  |
| 115 | Recebimento e Análise de Sondagem (permeabilidade ou percolação) | 17d | 2026-08-11 | 2026-09-02 | 113SS |  |
| 116 | Recebimento e Análise de Topografia | 17d | 2026-08-11 | 2026-09-02 | 113SS |  |
| 117 | Estudo de viabilidade técnica, econômica e ambiental | 17d | 2026-08-11 | 2026-09-02 | 113SS |  |
| 118 | Lista preliminar de sistemas envolvidos. | 17d | 2026-08-11 | 2026-09-02 | 111 |  |
| 119 | Planta baixa e cortes estimada contendo: - Traçado preliminar de barrilete, ramais, colunas - Diâmetros estimados - Localização aproximada das bombas e unidades de tratamento e reúso - Localização do ramal predial de água e esgoto - Localização aproximada | 17d | 2026-08-11 | 2026-09-02 | 111 |  |
| 120 | **LOD 300 - Consolidação e documentação de entrega** | 6d | 2026-09-03 | 2026-09-11 |  |  |
| 121 | Planta, corte e detalhe isométrico contendo: - Modelagem detalhada com diâmetros, cotas e inclinações definitivas (barriletes, colunas, ramais) - Quantitativos e especificação técnica dos materiais (tubos, conexões, reservatórios, registros e válvulas com | 6d | 2026-09-03 | 2026-09-11 | 119 |  |
| 122 | Memorial descritivo | 3d | 2026-09-09 | 2026-09-11 | 121FF |  |
| 123 | Memória de cálculo (pressão, vazão, diâmetros, perda de carga). | 3d | 2026-09-09 | 2026-09-11 | 119, 121FF |  |
| 126 | **Esgoto** | 29d | 2026-08-03 A | 2026-09-11 |  |  |
| 127 | **LOD 100 — Premissas, diretrizes e interfaces** | 6d | 2026-08-03 A | 2026-08-10 |  |  |
| 128 | Memorial preliminar | 6d | 2026-08-03 A | 2026-08-10 | 78SS |  |
| 129 | Indicação de áreas técnicas | 6d | 2026-08-03 A | 2026-08-10 | 78SS |  |
| 130 | Planta baixa com traçado conceitual | 6d | 2026-08-03 A | 2026-08-10 | 78SS |  |
| 131 | Pontos de consumo principais e coletas sanitárias | 6d | 2026-08-03 A | 2026-08-10 | 78SS |  |
| 132 | Classificação de uso | 6d | 2026-08-03 A | 2026-08-10 | 78SS |  |
| 133 | Diretrizes de espaço | 6d | 2026-08-03 A | 2026-08-10 | 78SS |  |
| 134 | Estimativa de demanda ou população de uso | 6d | 2026-08-03 A | 2026-08-10 | 78SS |  |
| 135 | Levantamento de elementos especiais dentre outras disciplinas de Engenharia e Arquitetura | 6d | 2026-08-03 A | 2026-08-10 | 78SS |  |
| 136 | **LOD 200 — Validação interdisciplinar e solução preliminar** | 17d | 2026-08-11 | 2026-09-02 |  |  |
| 137 | Critérios normativos adotados (ABNT, concessionárias, etc.) | 17d | 2026-08-11 | 2026-09-02 | 135 |  |
| 138 | Informações de demanda na concessionária (DPE ou AVT Aviso de Viabilidade Técnica) | 17d | 2026-08-11 | 2026-09-02 | 137SS |  |
| 139 | Recebimento e Análise de Sondagem (permeabilidade ou percolação) | 17d | 2026-08-11 | 2026-09-02 | 137SS |  |
| 140 | Recebimento e Análise de Topografia | 17d | 2026-08-11 | 2026-09-02 | 137SS |  |
| 141 | Estudo de viabilidade técnica, econômica e ambiental | 17d | 2026-08-11 | 2026-09-02 | 137SS |  |
| 142 | Lista preliminar de sistemas envolvidos. | 17d | 2026-08-11 | 2026-09-02 | 135 |  |
| 143 | Planta baixa e cortes estimada contendo: - Traçado preliminar de barrilete, ramais, colunas - Diâmetros estimados - Localização aproximada das bombas e unidades de tratamento e reúso - Localização do ramal predial de água e esgoto - Localização aproximada | 17d | 2026-08-11 | 2026-09-02 | 135 |  |
| 144 | **LOD 300 - Consolidação e documentação de entrega** | 6d | 2026-09-03 | 2026-09-11 |  |  |
| 145 | Planta, corte e detalhe isométrico contendo: - Modelagem detalhada com diâmetros, cotas e inclinações definitivas (barriletes, colunas, ramais) - Quantitativos e especificação técnica dos materiais (tubos, conexões, reservatórios, registros e válvulas com | 6d | 2026-09-03 | 2026-09-11 | 143 |  |
| 146 | Memorial descritivo | 3d | 2026-09-09 | 2026-09-11 | 145FF |  |
| 147 | Memória de cálculo (pressão, vazão, diâmetros, perda de carga). | 3d | 2026-09-09 | 2026-09-11 | 143, 145FF |  |
| 148 | Aprovação de Conformidade | 3d | 2026-09-09 | 2026-09-11 | 144FF |  |
| 149 | Material para entrega ao contrato | 3d | 2026-09-09 | 2026-09-11 | 144FF |  |
| 160 | Aprovação de Conformidade | 3d | 2026-09-09 | 2026-09-11 | 159FF |  |
| 161 | Material para entrega ao contrato | 3d | 2026-09-09 | 2026-09-11 | 159FF |  |
| 162 | **Elétrica Baixa Tensão** | 29d | 2026-08-03 A | 2026-09-11 |  |  |
| 163 | **LOD 100 — Concepção** | 6d | 2026-08-03 A | 2026-08-10 |  |  |
| 164 | Avaliação e Diretrizes Técnicas para Arquitetura | 6d | 2026-08-03 A | 2026-08-10 | 78SS |  |
| 165 | Estimativa de Cargas e Demanda | 6d | 2026-08-03 A | 2026-08-10 | 78SS |  |
| 166 | Levantamento de Equipamentos de Outras Disciplinas | 6d | 2026-08-03 A | 2026-08-10 | 78SS |  |
| 167 | **LOD 200 — Anteprojeto** | 17d | 2026-08-11 | 2026-09-02 |  |  |
| 168 | TUGs Estimados | 17d | 2026-08-11 | 2026-09-02 | 165, 166 |  |
| 169 | Pontos de Luz Estimados | 17d | 2026-08-11 | 2026-09-02 | 165, 166 |  |
| 170 | TUEs e Quadros Estimados | 17d | 2026-08-11 | 2026-09-02 | 165, 166 |  |
| 171 | LOD 300 - Consolidação e documentação de entrega | 6d | 2026-09-03 | 2026-09-11 | 167 |  |
| 172 | Aprovação de Conformidade | 3d | 2026-09-09 | 2026-09-11 | 171FF |  |
| 173 | Material para entrega ao contrato | 3d | 2026-09-09 | 2026-09-11 | 171FF |  |
| 174 | **Telecom** | 29d | 2026-08-03 A | 2026-09-11 |  |  |
| 175 | **LOD 100 — Concepção** | 6d | 2026-08-03 A | 2026-08-10 |  |  |
| 176 | Avaliação e Diretrizes Técnicas para Arquitetura | 6d | 2026-08-03 A | 2026-08-10 | 78SS |  |
| 177 | Estimativa de Demanda de Telecomunicações | 6d | 2026-08-03 A | 2026-08-10 | 78SS |  |
| 178 | Levantamento de Equipamentos e Interfaces com Outras Disciplinas | 6d | 2026-08-03 A | 2026-08-10 | 78SS |  |
| 179 | **LOD 200 — Anteprojeto** | 17d | 2026-08-11 | 2026-09-02 |  |  |
| 180 | Pontos de Telecomunicações Estimados (Rede, Voz, CFTV e Demais Sistemas) | 8d | 2026-08-11 | 2026-08-20 | 178 |  |
| 181 | Racks Estimados | 8d | 2026-08-11 | 2026-08-20 | 178 |  |
| 182 | Infraestrutura de Telecomunicações Preliminar | 9d | 2026-08-21 | 2026-09-02 | 180, 181 |  |
| 183 | LOD 300 - Consolidação e documentação de entrega | 6d | 2026-09-03 | 2026-09-11 | 179 |  |
| 184 | Aprovação de Conformidade | 3d | 2026-09-09 | 2026-09-11 | 183FF |  |
| 185 | Material para entrega ao contrato | 3d | 2026-09-09 | 2026-09-11 | 183FF |  |
| 189 | Conferir layout (Térreo) | 20d | 2026-07-10 A | 2026-08-06 A | 24FS+5d | start no earlier than 2026-06-16 |
| 190 | Propor layout nos ambientes que não tem e verificar se estão funcionais e dentro das normas | 20d | 2026-07-10 A | 2026-08-06 A | 24FS+5d | start no earlier than 2026-06-16 |
| 191 | Conferir layout (1° pavimento) | 20d | 2026-07-10 A | 2026-08-06 A | 24FS+5d | start no earlier than 2026-06-16 |
| 192 | Propor layout nos ambientes que não tem e verificar se estão funcionais e dentro das normas (1º pavimento) | 20d | 2026-07-10 A | 2026-08-06 A | 24FS+5d | start no earlier than 2026-06-16 |
| 193 | Conferir layout (2° Pavimento) | 20d | 2026-07-10 A | 2026-08-06 A | 24FS+5d | start no earlier than 2026-06-16 |
| 194 | Propor layout nos ambientes que não tem e verificar se estão funcionais e dentro das normas" (2º pavimento) | 20d | 2026-07-10 A | 2026-08-06 A | 24FS+5d | start no earlier than 2026-06-16 |
| 195 | Conferir e fechar alinhamento das paredes | 20d | 2026-07-10 A | 2026-08-06 A | 24FS+5d | start no earlier than 2026-06-16 |
| 196 | Conferir quantidade de sanitários e cubas de acordo com os setores | 20d | 2026-07-10 A | 2026-08-06 A | 24FS+5d | start no earlier than 2026-06-16 |
| 197 | Conferir e fechar Pisos | 20d | 2026-07-10 | 2026-08-06 | 24FS+5d | start no earlier than 2026-06-16 |
| 198 | Conferir e fechar Esquadrias | 20d | 2026-07-10 | 2026-08-06 | 24FS+5d | start no earlier than 2026-06-16 |
| 199 | Conferir acessibilidade em rampas e sanitários | 20d | 2026-07-10 A | 2026-08-06 A | 24FS+5d | start no earlier than 2026-06-16 |
| 200 | Conferir nomas técnicas para o dimensionamento dos ambientes - principalmente banheiros e circulações | 20d | 2026-07-10 | 2026-08-06 | 24FS+5d | start no earlier than 2026-06-16 |
| 203 | Compatibilizar as rotas de fulga de acordo com as solicitações de PCI | 11d | 2026-08-07 A | 2026-08-21 A | 201 |  |
| 204 | Compatibilizar as prumadas com as equipes de engenharia | 11d | 2026-08-07 A | 2026-08-21 A | 201 |  |
| 205 | Ajustar área dos ambientes conforme solicitado pela equipe de elétrica | 11d | 2026-08-07 | 2026-08-21 | 201 |  |
| 437 | **Arquitetura** | 45d | 2026-07-10 A | 2026-09-11 |  |  |
| 438 | **Análise e Compatibilização (caso a gente receba o projeto e precise adequar)** | 31d | 2026-07-10 A | 2026-08-21 A |  |  |
| 439 | Analisar topografia (entender se precisar refazer) | 20d | 2026-07-10 A | 2026-08-06 A | 24FS+5d | start no earlier than 2026-06-01 |
| 440 | Verificar, georreferenciar e indicar Norte; | 20d | 2026-07-10 A | 2026-08-06 A | 24FS+5d | start no earlier than 2026-06-01 |
| 442 | Conferir e fechar alinhamento das paredes | 20d | 2026-07-10 A | 2026-08-06 A | 24FS+5d | start no earlier than 2026-06-01 |
| 443 | Conferir quantidade de sanitários e cubas de acordo com os setores | 20d | 2026-07-10 A | 2026-08-06 A | 24FS+5d | start no earlier than 2026-06-01 |
| 444 | Conferir e fechar Pisos | 20d | 2026-07-10 A | 2026-08-06 A | 24FS+5d | start no earlier than 2026-06-01 |
| 445 | Conferir e fechar Esquadrias | 20d | 2026-07-10 A | 2026-08-06 A | 24FS+5d | start no earlier than 2026-06-01 |
| 446 | Conferir acessibilidade em rampas e sanitários | 20d | 2026-07-10 A | 2026-08-06 A | 24FS+5d | start no earlier than 2026-06-01 |
| 447 | Conferir nomas técnicas para o dimensionamento dos ambientes - principalmente banheiros e circulações | 20d | 2026-07-10 A | 2026-08-06 A | 24FS+5d | start no earlier than 2026-06-01 |
| 448 | Conferir normas técnicas para auditórios (se tiver) | 20d | 2026-07-10 A | 2026-08-06 A | 24FS+5d | start no earlier than 2026-06-01 |
| 452 | Ajustar área dos ambientes conforme solicitado pela equipe de elétrica | 11d | 2026-08-07 A | 2026-08-21 A | 448 |  |
| 453 | **LOD 300 - ANTEPROJETO** | 20d | 2026-08-14 A | 2026-09-11 |  |  |
| 464 | Mudar as bancadas para o padão da Quanta (1º pavimento) | 10d | 2026-08-14 A | 2026-08-27 A | 449 |  |
| 466 | Mudar demais acabamentos para padrão o padrão da Quanta | 10d | 2026-08-14 A | 2026-08-27 A | 449 |  |
| 470 | Inserir caixa d'água - Conferir pré dimensionamento com a engenharia | 10d | 2026-08-14 | 2026-08-27 | 449 |  |
| 476 | Platôs e taludes principais; | 10d | 2026-08-14 | 2026-08-27 | 449 |  |
| 479 | Denominação das edificações, blocos ou espaços; | 10d | 2026-08-14 | 2026-08-27 | 449 |  |
| 488 | Indicação de Norte; | 1d | 2026-08-31 | 2026-08-31 | 483 |  |
| 494 | Identificação dos ambientes e espaços (internos e externos); | 1d | 2026-08-31 | 2026-08-31 | 483 |  |
| 502 | Indicação do Norte | 1d | 2026-09-01 | 2026-09-01 | 500 |  |
| 528 | Elementos de vedação internos e externos; | 1d | 2026-09-03 | 2026-09-03 | 523 |  |
| 540 | Elementos estruturais principais; | 1d | 2026-09-04 | 2026-09-04 | 536 |  |
| 550 | **Engenharia** | 34d | 2026-07-27 A | 2026-09-11 |  |  |
| 551 | **Estrutura** | 34d | 2026-07-27 A | 2026-09-11 |  |  |
| 552 | **LOD 100 — Premissas, diretrizes e interfaces** | 7d | 2026-07-27 A | 2026-08-04 |  |  |
| 553 | Levantamento de tipos de cargas globais estimadas (permanentes, acidentais, vento e especiais). | 2d | 2026-07-27 A | 2026-07-28 | 449SS-9d |  |
| 554 | Estudo volumétrico com modulação inicial de pilares, vigas e lajes. Entendendo vãos e desafios | 5d | 2026-07-27 A | 2026-07-31 | 449SS-9d |  |
| 555 | Localização aproximada de elementos estruturais principais. Avaliando vãos e estudando posições | 2d | 2026-07-27 A | 2026-07-28 | 449SS-9d |  |
| 556 | Estudo de viabilidade técnica e construtiva. | 3d | 2026-07-29 | 2026-07-31 | 555 |  |
| 557 | Definição preliminar do sistema estrutural (concreto armado, metálica ou mista). | 3d | 2026-07-29 | 2026-07-31 | 555 |  |
| 558 | Estimativa preliminar de tipologias de fundações (sapatas, blocos, estacas). | 2d | 2026-08-03 | 2026-08-04 | 556 |  |
| 559 | Previsão de áreas técnicas, casas de máquinas, reservatórios elevados e estrutura de cobertura. | 2d | 2026-08-03 | 2026-08-04 | 556 |  |
| 560 | **LOD 200 — Validação interdisciplinar e solução preliminar** | 20d | 2026-08-05 | 2026-09-01 |  |  |
| 561 | Lista preliminar de cargas e ações para dimensionamento. | 5d | 2026-08-05 | 2026-08-11 | 559 |  |
| 562 | Definição preliminar de alturas de pavimentos e níveis de fundação. | 5d | 2026-08-05 | 2026-08-11 | 559 |  |
| 563 | Indicação aproximada do sistema de cobertura (tesouras, treliças, vigamento metálico ou concreto). | 5d | 2026-08-05 | 2026-08-11 | 559 |  |
| 564 | Modelagem genérica de pilares, vigas, lajes e fundações. | 5d | 2026-08-12 | 2026-08-18 | 561 |  |
| 565 | Traçado preliminar de elementos especiais (escadas, rampas estruturais, reservatórios). | 5d | 2026-08-12 | 2026-08-18 | 561 |  |
| 566 | Arquivo IFC, plantas de forma e planta de locação | 5d | 2026-08-12 | 2026-08-18 | 561 |  |
| 567 | Inserção de fundações com tipologia e dimensões preliminares. | 5d | 2026-08-19 | 2026-08-25 | 565 |  |
| 568 | Compatibilização inicial com arquitetura e demais disciplinas. | 5d | 2026-08-19 | 2026-08-25 | 566 |  |
| 569 | Indicação de passagens de infraestrutura (shafts, aberturas em lajes e vigas). | 5d | 2026-08-19 | 2026-08-25 | 566 |  |
| 570 | Modelagem assertiva de elementos principais com dimensões aproximadas (largura, altura, espessura). | 10d | 2026-08-19 | 2026-09-01 | 566 |  |
| 571 | Modelagem estimada de armaduras principais (em nível de concepção). | 5d | 2026-08-26 | 2026-09-01 | 570FF |  |
| 572 | **LOD 300 - Consolidação e documentação de entrega** | 7d | 2026-09-02 | 2026-09-11 |  |  |
| 573 | Indicação de níveis e cotas exatas. | 7d | 2026-09-02 | 2026-09-11 | 570, 571 |  |
| 574 | Quadro de cargas atualizado. | 7d | 2026-09-02 | 2026-09-11 | 570, 571 |  |
| 575 | Dimensionamento final de fundações conforme sondagem e cálculo estrutural. | 7d | 2026-09-02 | 2026-09-11 | 570, 571 |  |
| 576 | Definição final dos elementos da cobertura (treliças, vigas, chapas, purlins). | 7d | 2026-09-02 | 2026-09-11 | 570, 571 |  |
| 577 | Compatibilização final com arquitetura e instalações (aberturas, embutidos e passagens). | 7d | 2026-09-02 | 2026-09-11 | 570, 571 |  |
| 578 | Modelagem definitiva de pilares, vigas, lajes, blocos, sapatas e estacas. | 7d | 2026-09-02 | 2026-09-11 | 570, 571 |  |
| 579 | Planta estrutural com todos os elementos identificados. | 7d | 2026-09-02 | 2026-09-11 | 570, 571 |  |
| 580 | Memorial descritivo contendo: objetivos, justificativa, descrição do sistema, concepção de fundações/cobertura, especificações e quadro de cargas. | 7d | 2026-09-02 | 2026-09-11 | 570, 571 |  |
| 581 | Normas técnicas utilizadas (NBR 6118, 6120, 6122, 8800, etc.). | 7d | 2026-09-02 | 2026-09-11 | 570, 571 |  |
| 582 | Consolidar documentação de entrega e emissão formal da disciplina | 7d | 2026-09-02 | 2026-09-11 | 570, 571 |  |
| 583 | Aprovação de Conformidade | 3d | 2026-09-09 | 2026-09-11 | 572FF |  |
| 584 | Material para entrega ao contrato | 3d | 2026-09-09 | 2026-09-11 | 572FF |  |
| 585 | **Hidrossanitário** | 34d | 2026-07-27 A | 2026-09-11 |  |  |
| 586 | **LOD 100 — Premissas, diretrizes e interfaces** | 8d | 2026-07-27 A | 2026-08-05 |  |  |
| 587 | Memorial preliminar | 8d | 2026-07-27 A | 2026-08-05 | 449SS-9d |  |
| 588 | Indicação de áreas técnicas | 6d | 2026-07-27 A | 2026-08-03 | 449SS-9d |  |
| 589 | Planta baixa com traçado conceitual | 6d | 2026-07-27 A | 2026-08-03 | 449SS-9d |  |
| 590 | Pontos de consumo principais e coletas sanitárias | 6d | 2026-07-27 A | 2026-08-03 | 449SS-9d |  |
| 591 | Classificação de uso | 8d | 2026-07-27 A | 2026-08-05 | 449SS-9d |  |
| 592 | Diretrizes de espaço | 8d | 2026-07-27 A | 2026-08-05 | 449SS-9d |  |
| 593 | Estimativa de demanda ou população de uso | 8d | 2026-07-27 A | 2026-08-05 | 449SS-9d |  |
| 594 | Levantamento de elementos especiais dentre outras disciplinas de Engenharia e Arquitetura | 8d | 2026-07-27 A | 2026-08-05 | 449SS-9d |  |
| 595 | **LOD 200 — Validação interdisciplinar e solução preliminar** | 20d | 2026-08-06 | 2026-09-02 |  |  |
| 596 | Critérios normativos adotados (ABNT, concessionárias, etc.) | 20d | 2026-08-06 | 2026-09-02 | 594 |  |
| 597 | Informações de demanda na concessionária (DPE ou AVT Aviso de Viabilidade Técnica) | 20d | 2026-08-06 | 2026-09-02 | 596SS |  |
| 598 | Recebimento e Análise de Sondagem (permeabilidade ou percolação) | 20d | 2026-08-06 | 2026-09-02 | 596SS |  |
| 599 | Recebimento e Análise de Topografia | 20d | 2026-08-06 | 2026-09-02 | 596SS |  |
| 600 | Estudo de viabilidade técnica, econômica e ambiental | 20d | 2026-08-06 | 2026-09-02 | 596SS |  |
| 601 | Lista preliminar de sistemas envolvidos. | 20d | 2026-08-06 | 2026-09-02 | 594 |  |
| 602 | Planta baixa e cortes estimada contendo: - Traçado preliminar de barrilete, ramais, colunas - Diâmetros estimados - Localização aproximada das bombas e unidades de tratamento e reúso - Localização do ramal predial de água e esgoto - Localização aproximada | 20d | 2026-08-06 | 2026-09-02 | 594 |  |
| 603 | **LOD 300 - Consolidação e documentação de entrega** | 6d | 2026-09-03 | 2026-09-11 |  |  |
| 604 | Planta, corte e detalhe isométrico contendo: - Modelagem detalhada com diâmetros, cotas e inclinações definitivas (barriletes, colunas, ramais) - Quantitativos e especificação técnica dos materiais (tubos, conexões, reservatórios, registros e válvulas com | 6d | 2026-09-03 | 2026-09-11 | 602 |  |
| 605 | Memorial descritivo | 3d | 2026-09-09 | 2026-09-11 | 604FF |  |
| 606 | Memória de cálculo (pressão, vazão, diâmetros, perda de carga). | 3d | 2026-09-09 | 2026-09-11 | 602, 604FF |  |
| 607 | Aprovação de Conformidade | 3d | 2026-09-09 | 2026-09-11 | 603FF |  |
| 608 | Material para entrega ao contrato | 3d | 2026-09-09 | 2026-09-11 | 603FF |  |
| 609 | **AVAC** | 34d | 2026-07-27 A | 2026-09-11 |  |  |
| 610 | **LOD 100 — Premissas, diretrizes e interfaces** | 20d | 2026-07-27 A | 2026-08-21 |  |  |
| 611 | Estimativa de carga térmica por ambiente. | 10d | 2026-07-27 A | 2026-08-07 | 449SS-9d |  |
| 612 | Localização preliminar de unidades de tratamento de ar, condensadoras e exaustores. | 10d | 2026-07-27 A | 2026-08-07 | 449SS-9d |  |
| 613 | Pontos locação para seus elementos no projeto arquitetônico. | 10d | 2026-07-27 A | 2026-08-07 | 449SS-9d |  |
| 614 | Estudo de viabilidade e rotas principais de distribuição de ar. | 10d | 2026-07-27 A | 2026-08-07 | 449SS-9d |  |
| 615 | Reserva de espaços técnicos e shafts. | 10d | 2026-07-27 A | 2026-08-07 | 449SS-9d |  |
| 616 | Levantamento de cargas especiais provenientes de outras disciplinas. | 10d | 2026-08-10 | 2026-08-21 | 638, 650 |  |
| 617 | **LOD 200 — Validação interdisciplinar e solução preliminar** | 24d | 2026-08-10 | 2026-09-11 |  |  |
| 618 | Lista preliminar de sistemas HVAC envolvidos (expansão direta, VRF, chillers, ventilação, exaustão). | 24d | 2026-08-10 | 2026-09-11 | 615 |  |
| 619 | Planta baixa estimada contendo: pontos de insuflamento e retorno. | 24d | 2026-08-10 | 2026-09-11 | 615 |  |
| 620 | Rotas iniciais de dutos, tubulações e drenos. | 24d | 2026-08-10 | 2026-09-11 | 615 |  |
| 621 | Planta baixa estimada contendo: unidades internas e externas com posição preliminar. | 24d | 2026-08-10 | 2026-09-11 | 615 |  |
| 622 | Aprovação de Conformidade | 3d | 2026-09-09 | 2026-09-11 | 617FF |  |
| 623 | Material para entrega ao contrato | 3d | 2026-09-09 | 2026-09-11 | 617FF |  |
| 624 | **PCI (Incêndio)** | 34d | 2026-07-27 A | 2026-09-11 |  |  |
| 625 | **LOD 100 — Premissas, diretrizes e interfaces** | 10d | 2026-07-27 A | 2026-08-07 |  |  |
| 629 | **LOD 200 — Validação interdisciplinar e solução preliminar** | 24d | 2026-08-10 | 2026-09-11 |  |  |
| 633 | Aprovação de Conformidade | 3d | 2026-09-09 | 2026-09-11 | 629FF |  |
| 634 | Material para entrega ao contrato | 3d | 2026-09-09 | 2026-09-11 | 629FF |  |
| 635 | **Elétrica Baixa Tensão** | 34d | 2026-07-27 A | 2026-09-11 |  |  |
| 636 | **LOD 100 — Concepção** | 14d | 2026-07-27 A | 2026-08-13 |  |  |
| 637 | Avaliação e Diretrizes Técnicas para Arquitetura | 4d | 2026-07-27 A | 2026-07-30 | 449SS-9d |  |
| 638 | Estimativa de Cargas e Demanda | 7d | 2026-07-27 A | 2026-08-04 | 449SS-9d |  |
| 639 | Levantamento de Equipamentos de Outras Disciplinas | 4d | 2026-08-10 | 2026-08-13 | 613, 628 |  |
| 640 | **LOD 200 — Anteprojeto** | 16d | 2026-08-14 | 2026-09-04 |  |  |
| 641 | TUGs Estimados | 16d | 2026-08-14 | 2026-09-04 | 638, 639 |  |
| 642 | Pontos de Luz Estimados | 16d | 2026-08-14 | 2026-09-04 | 638, 639 |  |
| 643 | TUEs e Quadros Estimados | 16d | 2026-08-14 | 2026-09-04 | 638, 639 |  |
| 644 | LOD 300 - Consolidação e documentação de entrega | 4d | 2026-09-08 | 2026-09-11 | 640 |  |
| 645 | Aprovação de Conformidade | 3d | 2026-09-09 | 2026-09-11 | 644FF |  |
| 646 | Material para entrega ao contrato | 3d | 2026-09-09 | 2026-09-11 | 644FF |  |
| 647 | **Telecom** | 34d | 2026-07-27 A | 2026-09-11 |  |  |
| 648 | **LOD 100 — Concepção** | 10d | 2026-07-27 A | 2026-08-07 |  |  |
| 649 | Avaliação e Diretrizes Técnicas para Arquitetura | 10d | 2026-07-27 A | 2026-08-07 | 449SS-9d |  |
| 650 | Estimativa de Demanda de Telecomunicações | 10d | 2026-07-27 A | 2026-08-07 | 449SS-9d |  |
| 651 | Levantamento de Equipamentos e Interfaces com Outras Disciplinas | 10d | 2026-07-27 A | 2026-08-07 | 449SS-9d |  |
| 652 | **LOD 200 — Anteprojeto** | 20d | 2026-08-10 | 2026-09-04 |  |  |
| 653 | Pontos de Telecomunicações Estimados (Rede, Voz, CFTV e Demais Sistemas) | 10d | 2026-08-10 | 2026-08-21 | 651 |  |
| 654 | Racks Estimados | 10d | 2026-08-10 | 2026-08-21 | 651 |  |
| 655 | Infraestrutura de Telecomunicações Preliminar | 10d | 2026-08-24 | 2026-09-04 | 653, 654 |  |
| 656 | LOD 300 - Consolidação e documentação de entrega | 4d | 2026-09-08 | 2026-09-11 | 652 |  |
| 657 | Aprovação de Conformidade | 3d | 2026-09-09 | 2026-09-11 | 656FF |  |
| 658 | Material para entrega ao contrato | 3d | 2026-09-09 | 2026-09-11 | 656FF |  |
| 659 | **SPDA** | 34d | 2026-07-27 A | 2026-09-11 |  |  |
| 660 | **LOD 100 — Concepção** | 10d | 2026-07-27 A | 2026-08-07 |  |  |
| 661 | Avaliação e Diretrizes Técnicas para Arquitetura | 10d | 2026-07-27 A | 2026-08-07 | 449SS-9d |  |
| 662 | Coleta de Informações da Edificação e Análise de Risco (ABNT NBR 5419-2) | 10d | 2026-07-27 A | 2026-08-07 | 449SS-9d |  |
| 663 | Estudo Preliminar de Necessidade e Nível de Proteção do SPDA | 10d | 2026-07-27 A | 2026-08-07 | 449SS-9d |  |
| 664 | **LOD 200 — Anteprojeto** | 20d | 2026-08-10 | 2026-09-04 |  |  |
| 665 | Definição da Estratégia de Proteção e Soluções Técnicas | 10d | 2026-08-10 | 2026-08-21 | 663 |  |
| 666 | Zoneamento de Captação, Descida e Traçados Preliminares | 10d | 2026-08-24 | 2026-09-04 | 665 |  |
| 667 | Estudo de Interferências, Compatibilização e Métodos Construtivos | 10d | 2026-08-24 | 2026-09-04 | 665 |  |
| 668 | LOD 300 - Consolidação e documentação de entrega | 4d | 2026-09-08 | 2026-09-11 | 667 |  |
| 669 | Aprovação de Conformidade | 3d | 2026-09-09 | 2026-09-11 | 668FF |  |
| 670 | Material para entrega ao contrato | 3d | 2026-09-09 | 2026-09-11 | 668FF |  |
| 671 | **Energia Renovável** | 34d | 2026-07-27 A | 2026-09-11 |  |  |
| 672 | **LOD 100 — Concepção** | 10d | 2026-07-27 A | 2026-08-07 |  |  |
| 673 | Viabilidade e Premissas de Geração | 10d | 2026-07-27 A | 2026-08-07 | 449SS-9d |  |
| 674 | Levantamento Preliminar de Áreas e Sombreamento | 10d | 2026-07-27 A | 2026-08-07 | 449SS-9d |  |
| 675 | Avaliação e Diretrizes Técnicas para Arquitetônico | 10d | 2026-07-27 A | 2026-08-07 | 449SS-9d |  |
| 676 | **LOD 200 — Anteprojeto** | 20d | 2026-08-10 | 2026-09-04 |  |  |
| 677 | Layout Preliminar de Módulos, Inversores e String Boxes | 20d | 2026-08-10 | 2026-09-04 | 674 |  |
| 678 | Infraestrutura e Rotas Técnicas Preliminares (DC/AC e Aterramento) | 20d | 2026-08-10 | 2026-09-04 | 674 |  |
| 679 | Critérios Preliminares de Proteção e Estimativa de Quantitativos | 20d | 2026-08-10 | 2026-09-04 | 674 |  |
| 680 | LOD 300 - Consolidação e documentação de entrega | 4d | 2026-09-08 | 2026-09-11 | 676 |  |
| 681 | Aprovação de Conformidade | 3d | 2026-09-09 | 2026-09-11 | 680FF |  |
| 682 | Material para entrega ao contrato | 3d | 2026-09-09 | 2026-09-11 | 680FF |  |
| 683 | **004 - Hospedagem** | 45d | 2026-07-10 A | 2026-09-11 |  |  |
| 684 | **Arquitetura** | 45d | 2026-07-10 A | 2026-09-11 |  |  |
| 685 | **Análise e Compatibilização (caso a gente receba o projeto e precise adequar)** | 31d | 2026-07-10 A | 2026-08-21 |  |  |
| 686 | Analisar topografia (entender se precisar refazer) | 20d | 2026-07-10 | 2026-08-06 | 24FS+5d | start no earlier than 2026-06-01 |
| 687 | Verificar, georreferenciar e indicar Norte; | 20d | 2026-07-10 | 2026-08-06 | 24FS+5d | start no earlier than 2026-06-01 |
| 688 | Revisão de perímetro do terreno, recuos, taxa de ocupação e afastamentos | 20d | 2026-07-10 | 2026-08-06 | 24FS+5d | start no earlier than 2026-06-01 |
| 689 | Conferir normas dos órgão de trânsito vigentes e com a equipe de mobilidade da Quanta | 20d | 2026-07-10 | 2026-08-06 | 24FS+5d | start no earlier than 2026-06-01 |
| 690 | Conferir e fechar alinhamento das paredes | 20d | 2026-07-10 A | 2026-08-06 A | 24FS+5d | start no earlier than 2026-06-01 |
| 691 | Conferir quantidade de sanitários e cubas de acordo com os setores | 20d | 2026-07-10 A | 2026-08-06 A | 24FS+5d | start no earlier than 2026-06-01 |
| 692 | Conferir e fechar Pisos | 20d | 2026-07-10 A | 2026-08-06 A | 24FS+5d | start no earlier than 2026-06-01 |
| 693 | Conferir e fechar Esquadrias | 20d | 2026-07-10 | 2026-08-06 | 24FS+5d | start no earlier than 2026-06-01 |
| 694 | Conferir acessibilidade em rampas e sanitários | 20d | 2026-07-10 A | 2026-08-06 A | 24FS+5d | start no earlier than 2026-06-01 |
| 695 | Conferir nomas técnicas para o dimensionamento dos ambientes - principalmente banheiros e circulações | 20d | 2026-07-10 A | 2026-08-06 A | 24FS+5d | start no earlier than 2026-06-01 |
| 696 | Conferir normas técnicas para auditórios (se tiver) | 20d | 2026-07-10 | 2026-08-06 | 24FS+5d | start no earlier than 2026-06-01 |
| 697 | Verificar layout (se tiver) | 20d | 2026-07-10 A | 2026-08-06 A | 24FS+5d | start no earlier than 2026-06-01 |
| 698 | Propor layout nos ambientes que não tem e verificar se estão funcionais e dentro das normas | 20d | 2026-07-10 A | 2026-08-06 A | 24FS+5d | start no earlier than 2026-06-01 |
| 699 | Compatibilização (pedir relatório de análise de projeto para disciplinas de engenharia) | 5d | 2026-08-07 | 2026-08-13 | 696, 698 |  |
| 700 | Compatibilizar as rotas de fulga de acordo com as solicitações de PCI | 11d | 2026-08-07 A | 2026-08-21 A | 696, 698 |  |
| 701 | Comatibilizar as prumadas com as equipes de engenharia | 11d | 2026-08-07 | 2026-08-21 | 696, 698 |  |
| 702 | Ajustar área dos ambientes conforme solicitado pela equipe de elétrica | 11d | 2026-08-07 | 2026-08-21 | 696, 698 |  |
| 703 | **LOD 300 - ANTEPROJETO** | 20d | 2026-08-14 A | 2026-09-11 |  |  |
| 704 | **Modelagem e compatibilização** | 10d | 2026-08-14 A | 2026-08-27 |  |  |
| 705 | Ajustar o navegador de projeto conforme o padrão da Quanta - verificar se todas as vistas estão dentro da disciplina correta - alinahr com o líder da OS | 10d | 2026-08-14 A | 2026-08-27 A | 699 |  |
| 706 | Limpar o arquivo e transferir os padões de projeto da Quanta | 10d | 2026-08-14 | 2026-08-27 | 699 |  |
| 707 | Criar Worksets (em caso de arquivos colaborados) | 10d | 2026-08-14 | 2026-08-27 | 699 |  |
| 708 | Colocar todas as elementos em seus devidos Worksets | 10d | 2026-08-14 | 2026-08-27 | 699 |  |
| 709 | Fazer ajustes dos modelos para Colaboração | 10d | 2026-08-14 | 2026-08-27 | 699 |  |
| 710 | Mudar os pisos para o padrão da quanta (1º pavimento) | 10d | 2026-08-14 A | 2026-08-27 A | 699 |  |
| 711 | Mudar as parades para o padão da quanta (1º pavimento) | 10d | 2026-08-14 | 2026-08-27 | 699 |  |
| 712 | Mudar as portas para o padão da quanta (1º pavimento) | 10d | 2026-08-14 | 2026-08-27 | 699 |  |
| 713 | Mudar as soleiras para o padão da quanta | 10d | 2026-08-14 | 2026-08-27 | 699 |  |
| 714 | Mudar as bancadas para o padão da Quanta (1º pavimento) | 10d | 2026-08-14 A | 2026-08-27 A | 699 |  |
| 715 | Mudar metais para padrão da Quanta (1º pavimento) | 10d | 2026-08-14 | 2026-08-27 | 699 |  |
| 716 | Mudar demais acabamentos para padrão o padrão da Quanta | 10d | 2026-08-14 | 2026-08-27 | 699 |  |
| 717 | Ajustar ralos das áreas molhadas (1º pavimento) | 10d | 2026-08-14 A | 2026-08-27 A | 699 |  |
| 718 | Se vier as tomadas - excluir (1º Pavimento) | 10d | 2026-08-14 | 2026-08-27 | 699 |  |
| 719 | Se vier as luminárias - excluir (1° pavimento) | 10d | 2026-08-14 | 2026-08-27 | 699 |  |
| 720 | Inserir caixa d'água - Conferir pré dimensionamento com a engenharia | 10d | 2026-08-14 | 2026-08-27 | 699 |  |
| 721 | Separar camadas dos pisos - leje 10cm (1° camada), contrapiso 3cm+argamassa 2cm+rev 1cm, (2°camada) | 10d | 2026-08-14 | 2026-08-27 | 699 |  |
| 722 | Descrição dos elementos da edificação | 10d | 2026-08-14 | 2026-08-27 | 699 |  |
| 723 | Descrição dos componentes construtivos e materiais de construção | 10d | 2026-08-14 | 2026-08-27 | 699 |  |
| 724 | Lista de pranchas anexas e documentos | 10d | 2026-08-14 | 2026-08-27 | 699 |  |
| 725 | Vias de acesso ao conjunto, arruamento, logradouros adjacentes e calçadas com os respectivos equipamentos urbanos; | 10d | 2026-08-14 | 2026-08-27 | 699 |  |
| 726 | Platôs e taludes principais; | 10d | 2026-08-14 | 2026-08-27 | 699 |  |
| 727 | Perímetro do terreno, recuos e afastamentos; | 10d | 2026-08-14 | 2026-08-27 | 699 |  |
| 728 | Indicação das áreas a serem edificadas com o contorno da cobertura das edificações, estacionamentos e áreas permeáveis/impermeáveis; | 10d | 2026-08-14 | 2026-08-27 | 699 |  |
| 729 | Denominação das edificações, blocos ou espaços; | 10d | 2026-08-14 | 2026-08-27 | 699 |  |
| 730 | Cotas gerais | 10d | 2026-08-14 | 2026-08-27 | 699 |  |
| 731 | Cotas de nível principal. | 10d | 2026-08-14 | 2026-08-27 | 699 |  |
| 732 | Quadros de áreas | 10d | 2026-08-14 | 2026-08-27 | 699 |  |
| 733 | Planta com as cotas de nível projetadas e existentes | 1d | 2026-08-28 | 2026-08-28 | 732 |  |
| 734 | **Plantas baixas (se tiver mais de um pavimento, duplicar bloco)** | 1d | 2026-08-31 | 2026-08-31 |  |  |
| 735 | Indicar simbologias de representação gráfica, conforme NBR 6492:2021; | 1d | 2026-08-31 | 2026-08-31 | 733 |  |
| 736 | Compatibilização (verificar se está tudo conforme as normas e alinhar com o restante das disciplinas de engenharia) | 1d | 2026-08-31 | 2026-08-31 | 733 |  |
| 737 | Compatibilização (deixar tudo conforme padrão Quanta) | 1d | 2026-08-31 | 2026-08-31 | 733 |  |
| 738 | Indicação de Norte; | 1d | 2026-08-31 | 2026-08-31 | 733 |  |
| 739 | Indicação de Escala; | 1d | 2026-08-31 | 2026-08-31 | 733 |  |
| 740 | Indicação de Acessos; | 1d | 2026-08-31 | 2026-08-31 | 733 |  |
| 741 | Elementos de vedação internos e externos; | 1d | 2026-08-31 | 2026-08-31 | 733 |  |
| 742 | Esquadrias (sem código e sem quadro); | 1d | 2026-08-31 | 2026-08-31 | 733 |  |
| 743 | Elementos estruturais principais; | 1d | 2026-08-31 | 2026-08-31 | 733 |  |
| 744 | Identificação dos ambientes e espaços (internos e externos); | 1d | 2026-08-31 | 2026-08-31 | 733 |  |
| 745 | Espaços de circulação internos e externos; | 1d | 2026-08-31 | 2026-08-31 | 733 |  |
| 746 | Áreas de serviço, funcionais e técnicas (internos e externos); | 1d | 2026-08-31 | 2026-08-31 | 733 |  |
| 747 | Projeções de níveis superiores; | 1d | 2026-08-31 | 2026-08-31 | 733 |  |
| 748 | Cotas gerais | 1d | 2026-08-31 | 2026-08-31 | 733 |  |
| 749 | Cotas de nível principal. | 1d | 2026-08-31 | 2026-08-31 | 733 |  |
| 750 | Quadro de áreas | 1d | 2026-08-31 | 2026-08-31 | 733 |  |
| 751 | **Planta das coberturas** | 1d | 2026-09-01 | 2026-09-01 |  |  |
| 752 | Indicação do Norte | 1d | 2026-09-01 | 2026-09-01 | 750 |  |
| 754 | Curvas de nível | 1d | 2026-09-01 | 2026-09-01 | 750 |  |
| 755 | Indicação de Acessos; | 1d | 2026-09-01 | 2026-09-01 | 750 |  |
| 756 | Estacionamento e áreas cobertas | 1d | 2026-09-01 | 2026-09-01 | 750 |  |
| 757 | Cobertura das edificações | 1d | 2026-09-01 | 2026-09-01 | 750 |  |
| 758 | Sentido de escoamento das águas pluviais e inclinação | 1d | 2026-09-01 | 2026-09-01 | 750 |  |
| 759 | Cotas gerais | 1d | 2026-09-01 | 2026-09-01 | 750 |  |
| 760 | Cotas de nível principal | 1d | 2026-09-01 | 2026-09-01 | 750 |  |
| 761 | **Cortes longitudinais** | 1d | 2026-09-02 | 2026-09-02 |  |  |
| 762 | Indicar simbologias de representação gráfica, conforme NBR 6492:2021; | 1d | 2026-09-02 | 2026-09-02 | 760 |  |
| 763 | Indicação de Escala; | 1d | 2026-09-02 | 2026-09-02 | 760 |  |
| 764 | Elementos estruturais principais; | 1d | 2026-09-02 | 2026-09-02 | 760 |  |
| 765 | Elementos de vedação internos e externos; | 1d | 2026-09-02 | 2026-09-02 | 760 |  |
| 766 | Esquadrias; | 1d | 2026-09-02 | 2026-09-02 | 760 |  |
| 767 | Identificação dos ambientes; | 1d | 2026-09-02 | 2026-09-02 | 760 |  |
| 768 | Cobertura com indicação da respectiva inclinação; | 1d | 2026-09-02 | 2026-09-02 | 760 |  |
| 769 | Cotas gerais; | 1d | 2026-09-02 | 2026-09-02 | 760 |  |
| 770 | Cotas de nível principal; | 1d | 2026-09-02 | 2026-09-02 | 760 |  |
| 771 | Eixos do projeto; | 1d | 2026-09-02 | 2026-09-02 | 760 |  |
| 772 | Relevo construído; | 1d | 2026-09-02 | 2026-09-02 | 760 |  |
| 773 | Projeção da topografia natural. | 1d | 2026-09-02 | 2026-09-02 | 760 |  |
| 774 | **Cortes transversais** | 1d | 2026-09-03 | 2026-09-03 |  |  |
| 775 | Indicar simbologias de representação gráfica, conforme NBR 6492:2021; | 1d | 2026-09-03 | 2026-09-03 | 773 |  |
| 776 | Indicação de Escala; | 1d | 2026-09-03 | 2026-09-03 | 773 |  |
| 777 | Elementos estruturais principais; | 1d | 2026-09-03 | 2026-09-03 | 773 |  |
| 778 | Elementos de vedação internos e externos; | 1d | 2026-09-03 | 2026-09-03 | 773 |  |
| 779 | Esquadrias; | 1d | 2026-09-03 | 2026-09-03 | 773 |  |
| 780 | Identificação dos ambientes; | 1d | 2026-09-03 | 2026-09-03 | 773 |  |
| 781 | Cobertura com indicação da respectiva inclinação; | 1d | 2026-09-03 | 2026-09-03 | 773 |  |
| 782 | Cotas gerais; | 1d | 2026-09-03 | 2026-09-03 | 773 |  |
| 783 | Cotas de nível principal; | 1d | 2026-09-03 | 2026-09-03 | 773 |  |
| 784 | Eixos do projeto; | 1d | 2026-09-03 | 2026-09-03 | 773 |  |
| 785 | Relevo construído; | 1d | 2026-09-03 | 2026-09-03 | 773 |  |
| 786 | Projeção da topografia natural | 1d | 2026-09-03 | 2026-09-03 | 773 |  |
| 787 | **Elevações** | 1d | 2026-09-04 | 2026-09-04 |  |  |
| 788 | Indicar simbologias de representação gráfica, conforme NBR 6492:2021; | 1d | 2026-09-04 | 2026-09-04 | 786 |  |
| 789 | Indicação de Escala; | 1d | 2026-09-04 | 2026-09-04 | 786 |  |
| 790 | Elementos estruturais principais; | 1d | 2026-09-04 | 2026-09-04 | 786 |  |
| 791 | Elementos de vedação internos e externos; | 1d | 2026-09-04 | 2026-09-04 | 786 |  |
| 792 | Esquadrias (sem código e sem quadro); | 1d | 2026-09-04 | 2026-09-04 | 786 |  |
| 793 | Relevo construído; | 1d | 2026-09-04 | 2026-09-04 | 786 |  |
| 794 | Cotas gerais; | 1d | 2026-09-04 | 2026-09-04 | 786 |  |
| 795 | Cotas de nível principais; | 1d | 2026-09-04 | 2026-09-04 | 786 |  |
| 796 | Cobertura (quando aparente). | 1d | 2026-09-04 | 2026-09-04 | 786 |  |
| 797 | Memorial Descritivo | 4d | 2026-09-08 | 2026-09-11 | 787 |  |
| 798 | Aprovação de Conformidade | 3d | 2026-09-09 | 2026-09-11 | 797FF |  |
| 799 | Material para entrega ao contrato | 3d | 2026-09-09 | 2026-09-11 | 797FF |  |
| 800 | **Engenharia** | 34d | 2026-07-27 A | 2026-09-11 |  |  |
| 801 | **Estrutura** | 34d | 2026-07-27 A | 2026-09-11 |  |  |
| 802 | **LOD 100 — Premissas, diretrizes e interfaces** | 7d | 2026-07-27 A | 2026-08-04 |  |  |
| 803 | Levantamento de tipos de cargas globais estimadas (permanentes, acidentais, vento e especiais). | 2d | 2026-07-27 A | 2026-07-28 | 699SS-9d |  |
| 804 | Estudo volumétrico com modulação inicial de pilares, vigas e lajes. Entendendo vãos e desafios | 5d | 2026-07-27 A | 2026-07-31 | 699SS-9d |  |
| 805 | Localização aproximada de elementos estruturais principais. Avaliando vãos e estudando posições | 2d | 2026-07-27 A | 2026-07-28 | 699SS-9d |  |
| 806 | Estudo de viabilidade técnica e construtiva. | 3d | 2026-07-29 | 2026-07-31 | 805 |  |
| 807 | Definição preliminar do sistema estrutural (concreto armado, metálica ou mista). | 3d | 2026-07-29 | 2026-07-31 | 805 |  |
| 808 | Estimativa preliminar de tipologias de fundações (sapatas, blocos, estacas). | 2d | 2026-08-03 | 2026-08-04 | 806 |  |
| 809 | Previsão de áreas técnicas, casas de máquinas, reservatórios elevados e estrutura de cobertura. | 2d | 2026-08-03 | 2026-08-04 | 806 |  |
| 810 | **LOD 200 — Validação interdisciplinar e solução preliminar** | 20d | 2026-08-05 | 2026-09-01 |  |  |
| 811 | Lista preliminar de cargas e ações para dimensionamento. | 5d | 2026-08-05 | 2026-08-11 | 809 |  |
| 812 | Definição preliminar de alturas de pavimentos e níveis de fundação. | 5d | 2026-08-05 | 2026-08-11 | 809 |  |
| 813 | Indicação aproximada do sistema de cobertura (tesouras, treliças, vigamento metálico ou concreto). | 5d | 2026-08-05 | 2026-08-11 | 809 |  |
| 814 | Modelagem genérica de pilares, vigas, lajes e fundações. | 5d | 2026-08-12 | 2026-08-18 | 811 |  |
| 815 | Traçado preliminar de elementos especiais (escadas, rampas estruturais, reservatórios). | 5d | 2026-08-12 | 2026-08-18 | 811 |  |
| 816 | Arquivo IFC, plantas de forma e planta de locação | 5d | 2026-08-12 | 2026-08-18 | 811 |  |
| 817 | Inserção de fundações com tipologia e dimensões preliminares. | 5d | 2026-08-19 | 2026-08-25 | 815 |  |
| 818 | Compatibilização inicial com arquitetura e demais disciplinas. | 5d | 2026-08-19 | 2026-08-25 | 816 |  |
| 819 | Indicação de passagens de infraestrutura (shafts, aberturas em lajes e vigas). | 5d | 2026-08-19 | 2026-08-25 | 816 |  |
| 820 | Modelagem assertiva de elementos principais com dimensões aproximadas (largura, altura, espessura). | 10d | 2026-08-19 | 2026-09-01 | 816 |  |
| 821 | Modelagem estimada de armaduras principais (em nível de concepção). | 5d | 2026-08-26 | 2026-09-01 | 820FF |  |
| 822 | **LOD 300 - Consolidação e documentação de entrega** | 7d | 2026-09-02 | 2026-09-11 |  |  |
| 823 | Indicação de níveis e cotas exatas. | 7d | 2026-09-02 | 2026-09-11 | 820, 821 |  |
| 824 | Quadro de cargas atualizado. | 7d | 2026-09-02 | 2026-09-11 | 820, 821 |  |
| 825 | Dimensionamento final de fundações conforme sondagem e cálculo estrutural. | 7d | 2026-09-02 | 2026-09-11 | 820, 821 |  |
| 826 | Definição final dos elementos da cobertura (treliças, vigas, chapas, purlins). | 7d | 2026-09-02 | 2026-09-11 | 820, 821 |  |
| 827 | Compatibilização final com arquitetura e instalações (aberturas, embutidos e passagens). | 7d | 2026-09-02 | 2026-09-11 | 820, 821 |  |
| 828 | Modelagem definitiva de pilares, vigas, lajes, blocos, sapatas e estacas. | 7d | 2026-09-02 | 2026-09-11 | 820, 821 |  |
| 829 | Planta estrutural com todos os elementos identificados. | 7d | 2026-09-02 | 2026-09-11 | 820, 821 |  |
| 830 | Memorial descritivo contendo: objetivos, justificativa, descrição do sistema, concepção de fundações/cobertura, especificações e quadro de cargas. | 7d | 2026-09-02 | 2026-09-11 | 820, 821 |  |
| 831 | Normas técnicas utilizadas (NBR 6118, 6120, 6122, 8800, etc.). | 7d | 2026-09-02 | 2026-09-11 | 820, 821 |  |
| 832 | Consolidar documentação de entrega e emissão formal da disciplina | 7d | 2026-09-02 | 2026-09-11 | 820, 821 |  |
| 833 | Aprovação de Conformidade | 3d | 2026-09-09 | 2026-09-11 | 822FF |  |
| 834 | Material para entrega ao contrato | 3d | 2026-09-09 | 2026-09-11 | 822FF |  |
| 835 | **Hidrossanitário** | 34d | 2026-07-27 A | 2026-09-11 |  |  |
| 836 | **LOD 100 — Premissas, diretrizes e interfaces** | 8d | 2026-07-27 A | 2026-08-05 |  |  |
| 837 | Memorial preliminar | 8d | 2026-07-27 A | 2026-08-05 | 699SS-9d |  |
| 838 | Indicação de áreas técnicas | 6d | 2026-07-27 A | 2026-08-03 | 699SS-9d |  |
| 839 | Planta baixa com traçado conceitual | 6d | 2026-07-27 A | 2026-08-03 | 699SS-9d |  |
| 840 | Pontos de consumo principais e coletas sanitárias | 6d | 2026-07-27 A | 2026-08-03 | 699SS-9d |  |
| 841 | Classificação de uso | 8d | 2026-07-27 A | 2026-08-05 | 699SS-9d |  |
| 842 | Diretrizes de espaço | 8d | 2026-07-27 A | 2026-08-05 | 699SS-9d |  |
| 843 | Estimativa de demanda ou população de uso | 8d | 2026-07-27 A | 2026-08-05 | 699SS-9d |  |
| 844 | Levantamento de elementos especiais dentre outras disciplinas de Engenharia e Arquitetura | 8d | 2026-07-27 A | 2026-08-05 | 699SS-9d |  |
| 845 | **LOD 200 — Validação interdisciplinar e solução preliminar** | 20d | 2026-08-06 | 2026-09-02 |  |  |
| 846 | Critérios normativos adotados (ABNT, concessionárias, etc.) | 20d | 2026-08-06 | 2026-09-02 | 844 |  |
| 847 | Informações de demanda na concessionária (DPE ou AVT Aviso de Viabilidade Técnica) | 20d | 2026-08-06 | 2026-09-02 | 846SS |  |
| 848 | Recebimento e Análise de Sondagem (permeabilidade ou percolação) | 20d | 2026-08-06 | 2026-09-02 | 846SS |  |
| 849 | Recebimento e Análise de Topografia | 20d | 2026-08-06 | 2026-09-02 | 846SS |  |
| 850 | Estudo de viabilidade técnica, econômica e ambiental | 20d | 2026-08-06 | 2026-09-02 | 846SS |  |
| 851 | Lista preliminar de sistemas envolvidos. | 20d | 2026-08-06 | 2026-09-02 | 844 |  |
| 852 | Planta baixa e cortes estimada contendo: - Traçado preliminar de barrilete, ramais, colunas - Diâmetros estimados - Localização aproximada das bombas e unidades de tratamento e reúso - Localização do ramal predial de água e esgoto - Localização aproximada | 20d | 2026-08-06 | 2026-09-02 | 844 |  |
| 853 | **LOD 300 - Consolidação e documentação de entrega** | 6d | 2026-09-03 | 2026-09-11 |  |  |
| 854 | Planta, corte e detalhe isométrico contendo: - Modelagem detalhada com diâmetros, cotas e inclinações definitivas (barriletes, colunas, ramais) - Quantitativos e especificação técnica dos materiais (tubos, conexões, reservatórios, registros e válvulas com | 6d | 2026-09-03 | 2026-09-11 | 852 |  |
| 855 | Memorial descritivo | 3d | 2026-09-09 | 2026-09-11 | 854FF |  |
| 856 | Memória de cálculo (pressão, vazão, diâmetros, perda de carga). | 3d | 2026-09-09 | 2026-09-11 | 852, 854FF |  |
| 857 | Aprovação de Conformidade | 3d | 2026-09-09 | 2026-09-11 | 853FF |  |
| 858 | Material para entrega ao contrato | 3d | 2026-09-09 | 2026-09-11 | 853FF |  |
| 859 | **AVAC** | 34d | 2026-07-27 A | 2026-09-11 |  |  |
| 860 | **LOD 100 — Premissas, diretrizes e interfaces** | 20d | 2026-07-27 A | 2026-08-21 |  |  |
| 861 | Estimativa de carga térmica por ambiente. | 10d | 2026-07-27 A | 2026-08-07 | 699SS-9d |  |
| 862 | Localização preliminar de unidades de tratamento de ar, condensadoras e exaustores. | 10d | 2026-07-27 A | 2026-08-07 | 699SS-9d |  |
| 863 | Pontos locação para seus elementos no projeto arquitetônico. | 10d | 2026-07-27 A | 2026-08-07 | 699SS-9d |  |
| 864 | Estudo de viabilidade e rotas principais de distribuição de ar. | 10d | 2026-07-27 A | 2026-08-07 | 699SS-9d |  |
| 865 | Reserva de espaços técnicos e shafts. | 10d | 2026-07-27 A | 2026-08-07 | 699SS-9d |  |
| 866 | Levantamento de cargas especiais provenientes de outras disciplinas. | 10d | 2026-08-10 | 2026-08-21 | 888, 900 |  |
| 867 | **LOD 200 — Validação interdisciplinar e solução preliminar** | 24d | 2026-08-10 | 2026-09-11 |  |  |
| 868 | Lista preliminar de sistemas HVAC envolvidos (expansão direta, VRF, chillers, ventilação, exaustão). | 24d | 2026-08-10 | 2026-09-11 | 865 |  |
| 869 | Planta baixa estimada contendo: pontos de insuflamento e retorno. | 24d | 2026-08-10 | 2026-09-11 | 865 |  |
| 870 | Rotas iniciais de dutos, tubulações e drenos. | 24d | 2026-08-10 | 2026-09-11 | 865 |  |
| 871 | Planta baixa estimada contendo: unidades internas e externas com posição preliminar. | 24d | 2026-08-10 | 2026-09-11 | 865 |  |
| 872 | Aprovação de Conformidade | 3d | 2026-09-09 | 2026-09-11 | 867FF |  |
| 873 | Material para entrega ao contrato | 3d | 2026-09-09 | 2026-09-11 | 867FF |  |
| 874 | **PCI (Incêndio)** | 34d | 2026-07-27 A | 2026-09-11 |  |  |
| 875 | **LOD 100 — Premissas, diretrizes e interfaces** | 10d | 2026-07-27 A | 2026-08-07 |  |  |
| 876 | Estudo e avaliação da arquitetura atendendo as normas competentes de PCI | 10d | 2026-07-27 A | 2026-08-07 | 699SS-9d |  |
| 877 | Avaliação do espaço para CMI e Central de Gás. | 10d | 2026-07-27 A | 2026-08-07 | 699SS-9d |  |
| 878 | Pontos locação para seus elementos no projeto arquitetônico | 10d | 2026-07-27 A | 2026-08-07 | 699SS-9d |  |
| 879 | **LOD 200 — Validação interdisciplinar e solução preliminar** | 24d | 2026-08-10 | 2026-09-11 |  |  |
| 880 | Definição da classificação da edificação e o risco de incêndio | 24d | 2026-08-10 | 2026-09-11 | 878 |  |
| 881 | Cálculos pré-dimensionados dos extintores, hidrantes e bomba. | 24d | 2026-08-10 | 2026-09-11 | 878 |  |
| 882 | Avaliação das rotas de fuga, ventilação de CMI e outros elementos de importância para as normas de PCI | 24d | 2026-08-10 | 2026-09-11 | 878 |  |
| 883 | Aprovação de Conformidade | 3d | 2026-09-09 | 2026-09-11 | 879FF |  |
| 884 | Material para entrega ao contrato | 3d | 2026-09-09 | 2026-09-11 | 879FF |  |
| 885 | **Elétrica Baixa Tensão** | 34d | 2026-07-27 A | 2026-09-11 |  |  |
| 886 | **LOD 100 — Concepção** | 14d | 2026-07-27 A | 2026-08-13 |  |  |
| 887 | Avaliação e Diretrizes Técnicas para Arquitetura | 4d | 2026-07-27 A | 2026-07-30 | 699SS-9d |  |
| 888 | Estimativa de Cargas e Demanda | 7d | 2026-07-27 A | 2026-08-04 | 699SS-9d |  |
| 889 | Levantamento de Equipamentos de Outras Disciplinas | 4d | 2026-08-10 | 2026-08-13 | 863, 878 |  |
| 890 | **LOD 200 — Anteprojeto** | 16d | 2026-08-14 | 2026-09-04 |  |  |
| 891 | TUGs Estimados | 16d | 2026-08-14 | 2026-09-04 | 888, 889 |  |
| 892 | Pontos de Luz Estimados | 16d | 2026-08-14 | 2026-09-04 | 888, 889 |  |
| 893 | TUEs e Quadros Estimados | 16d | 2026-08-14 | 2026-09-04 | 888, 889 |  |
| 894 | LOD 300 - Consolidação e documentação de entrega | 4d | 2026-09-08 | 2026-09-11 | 890 |  |
| 895 | Aprovação de Conformidade | 3d | 2026-09-09 | 2026-09-11 | 894FF |  |
| 896 | Material para entrega ao contrato | 3d | 2026-09-09 | 2026-09-11 | 894FF |  |
| 897 | **Telecom** | 34d | 2026-07-27 A | 2026-09-11 |  |  |
| 898 | **LOD 100 — Concepção** | 10d | 2026-07-27 A | 2026-08-07 |  |  |
| 899 | Avaliação e Diretrizes Técnicas para Arquitetura | 10d | 2026-07-27 A | 2026-08-07 | 699SS-9d |  |
| 900 | Estimativa de Demanda de Telecomunicações | 10d | 2026-07-27 A | 2026-08-07 | 699SS-9d |  |
| 901 | Levantamento de Equipamentos e Interfaces com Outras Disciplinas | 10d | 2026-07-27 A | 2026-08-07 | 699SS-9d |  |
| 902 | **LOD 200 — Anteprojeto** | 20d | 2026-08-10 | 2026-09-04 |  |  |
| 903 | Pontos de Telecomunicações Estimados (Rede, Voz, CFTV e Demais Sistemas) | 10d | 2026-08-10 | 2026-08-21 | 901 |  |
| 904 | Racks Estimados | 10d | 2026-08-10 | 2026-08-21 | 901 |  |
| 905 | Infraestrutura de Telecomunicações Preliminar | 10d | 2026-08-24 | 2026-09-04 | 903, 904 |  |
| 906 | LOD 300 - Consolidação e documentação de entrega | 4d | 2026-09-08 | 2026-09-11 | 902 |  |
| 907 | Aprovação de Conformidade | 3d | 2026-09-09 | 2026-09-11 | 906FF |  |
| 908 | Material para entrega ao contrato | 3d | 2026-09-09 | 2026-09-11 | 906FF |  |
| 909 | **SPDA** | 34d | 2026-07-27 A | 2026-09-11 |  |  |
| 910 | **LOD 100 — Concepção** | 10d | 2026-07-27 A | 2026-08-07 |  |  |
| 911 | Avaliação e Diretrizes Técnicas para Arquitetura | 10d | 2026-07-27 A | 2026-08-07 | 699SS-9d |  |
| 912 | Coleta de Informações da Edificação e Análise de Risco (ABNT NBR 5419-2) | 10d | 2026-07-27 A | 2026-08-07 | 699SS-9d |  |
| 913 | Estudo Preliminar de Necessidade e Nível de Proteção do SPDA | 10d | 2026-07-27 A | 2026-08-07 | 699SS-9d |  |
| 914 | **LOD 200 — Anteprojeto** | 20d | 2026-08-10 | 2026-09-04 |  |  |
| 915 | Definição da Estratégia de Proteção e Soluções Técnicas | 10d | 2026-08-10 | 2026-08-21 | 913 |  |
| 916 | Zoneamento de Captação, Descida e Traçados Preliminares | 10d | 2026-08-24 | 2026-09-04 | 915 |  |
| 917 | Estudo de Interferências, Compatibilização e Métodos Construtivos | 10d | 2026-08-24 | 2026-09-04 | 915 |  |
| 918 | LOD 300 - Consolidação e documentação de entrega | 4d | 2026-09-08 | 2026-09-11 | 917 |  |
| 919 | Aprovação de Conformidade | 3d | 2026-09-09 | 2026-09-11 | 918FF |  |
| 920 | Material para entrega ao contrato | 3d | 2026-09-09 | 2026-09-11 | 918FF |  |
| 921 | **Energia Renovável** | 34d | 2026-07-27 A | 2026-09-11 |  |  |
| 922 | **LOD 100 — Concepção** | 10d | 2026-07-27 A | 2026-08-07 |  |  |
| 923 | Viabilidade e Premissas de Geração | 10d | 2026-07-27 A | 2026-08-07 | 699SS-9d |  |
| 924 | Levantamento Preliminar de Áreas e Sombreamento | 10d | 2026-07-27 A | 2026-08-07 | 699SS-9d |  |
| 925 | Avaliação e Diretrizes Técnicas para Arquitetônico | 10d | 2026-07-27 A | 2026-08-07 | 699SS-9d |  |
| 926 | **LOD 200 — Anteprojeto** | 20d | 2026-08-10 | 2026-09-04 |  |  |
| 927 | Layout Preliminar de Módulos, Inversores e String Boxes | 20d | 2026-08-10 | 2026-09-04 | 924 |  |
| 928 | Infraestrutura e Rotas Técnicas Preliminares (DC/AC e Aterramento) | 20d | 2026-08-10 | 2026-09-04 | 924 |  |
| 929 | Critérios Preliminares de Proteção e Estimativa de Quantitativos | 20d | 2026-08-10 | 2026-09-04 | 924 |  |
| 930 | LOD 300 - Consolidação e documentação de entrega | 4d | 2026-09-08 | 2026-09-11 | 926 |  |
| 931 | Aprovação de Conformidade | 3d | 2026-09-09 | 2026-09-11 | 930FF |  |
| 932 | Material para entrega ao contrato | 3d | 2026-09-09 | 2026-09-11 | 930FF |  |
| 933 | **005 - Restaurante** | 45d | 2026-07-10 A | 2026-09-11 |  |  |
| 934 | **Arquitetura** | 45d | 2026-07-10 A | 2026-09-11 |  |  |
| 935 | **Análise e Compatibilização (caso a gente receba o projeto e precise adequar)** | 31d | 2026-07-10 A | 2026-08-21 |  |  |
| 936 | Conferir normas de cozinha industrial | 20d | 2026-07-10 | 2026-08-06 | 24FS+5d | start no earlier than 2026-06-01 |
| 937 | Conferir e fechar alinhamento das paredes | 20d | 2026-07-10 A | 2026-08-06 A | 24FS+5d | start no earlier than 2026-06-01 |
| 938 | Conferir quantidade de sanitários e cubas de acordo com os setores | 20d | 2026-07-10 A | 2026-08-06 A | 24FS+5d | start no earlier than 2026-06-01 |
| 939 | Conferir layout | 20d | 2026-07-10 A | 2026-08-06 A | 24FS+5d | start no earlier than 2026-06-01 |
| 940 | Conferir e fechar Pisos | 20d | 2026-07-10 A | 2026-08-06 A | 24FS+5d | start no earlier than 2026-06-01 |
| 941 | Conferir e fechar Esquadrias | 20d | 2026-07-10 A | 2026-08-06 A | 24FS+5d | start no earlier than 2026-06-01 |
| 942 | Conferir acessibilidade em rampas e sanitários | 20d | 2026-07-10 A | 2026-08-06 A | 24FS+5d | start no earlier than 2026-06-01 |
| 943 | Conferir nomas técnicas para o dimensionamento dos ambientes - principalmente banheiros e circulações | 20d | 2026-07-10 A | 2026-08-06 A | 24FS+5d | start no earlier than 2026-06-01 |
| 944 | Conferir normas técnicas para auditórios (se tiver) | 20d | 2026-07-10 | 2026-08-06 | 24FS+5d | start no earlier than 2026-06-01 |
| 945 | Compatibilização (pedir relatório de análise de projeto para disciplinas de engenharia) | 5d | 2026-08-07 | 2026-08-13 | 944 |  |
| 946 | Compatibilizar as rotas de fulga de acordo com as solicitações de PCI | 11d | 2026-08-07 A | 2026-08-21 A | 944 |  |
| 947 | Comatibilizar as prumadas com as equipes de engenharia | 11d | 2026-08-07 | 2026-08-21 | 944 |  |
| 948 | Ajustar área dos ambientes conforme solicitado pela equipe de elétrica | 11d | 2026-08-07 | 2026-08-21 | 944 |  |
| 949 | **LOD 300 - ANTEPROJETO** | 20d | 2026-08-14 A | 2026-09-11 |  |  |
| 950 | **Modelagem e compatibilização** | 10d | 2026-08-14 A | 2026-08-27 |  |  |
| 951 | Ajustar o navegador de projeto conforme o padrão da Quanta - verificar se todas as vistas estão dentro da disciplina correta - alinahr com o líder da OS | 10d | 2026-08-14 A | 2026-08-27 A | 945 |  |
| 952 | Limpar o arquivo e transferir os padões de projeto da Quanta | 10d | 2026-08-14 A | 2026-08-27 A | 945 |  |
| 953 | Criar Worksets (em caso de arquivos colaborados) | 10d | 2026-08-14 | 2026-08-27 | 945 |  |
| 954 | Colocar todas as elementos em seus devidos Worksets | 10d | 2026-08-14 | 2026-08-27 | 945 |  |
| 955 | Fazer ajustes dos modelos para Colaboração | 10d | 2026-08-14 | 2026-08-27 | 945 |  |
| 956 | Mudar os pisos para o padrão da quanta (1º pavimento) | 10d | 2026-08-14 A | 2026-08-27 A | 945 |  |
| 957 | Mudar as parades para o padão da quanta (1º pavimento) | 10d | 2026-08-14 A | 2026-08-27 A | 945 |  |
| 958 | Mudar as portas para o padão da quanta (1º pavimento) | 10d | 2026-08-14 A | 2026-08-27 A | 945 |  |
| 959 | Mudar as soleiras para o padão da quanta | 10d | 2026-08-14 | 2026-08-27 | 945 |  |
| 960 | Mudar as bancadas para o padão da Quanta (1º pavimento) | 10d | 2026-08-14 A | 2026-08-27 A | 945 |  |
| 961 | Mudar metais para padrão da Quanta (1º pavimento) | 10d | 2026-08-14 | 2026-08-27 | 945 |  |
| 962 | Mudar demais acabamentos para padrão o padrão da Quanta | 10d | 2026-08-14 A | 2026-08-27 A | 945 |  |
| 963 | Ajustar ralos das áreas molhadas (1º pavimento) | 10d | 2026-08-14 A | 2026-08-27 A | 945 |  |
| 964 | Se vier as tomadas - excluir (1º Pavimento) | 10d | 2026-08-14 | 2026-08-27 | 945 |  |
| 965 | Se vier as luminárias - excluir (1° pavimento) | 10d | 2026-08-14 | 2026-08-27 | 945 |  |
| 966 | Inserir caixa d'água - Conferir pré dimensionamento com a engenharia | 10d | 2026-08-14 | 2026-08-27 | 945 |  |
| 967 | Separar camadas dos pisos - leje 10cm (1° camada), contrapiso 3cm+argamassa 2cm+rev 1cm, (2°camada) | 10d | 2026-08-14 A | 2026-08-27 A | 945 |  |
| 968 | Descrição dos elementos da edificação | 10d | 2026-08-14 | 2026-08-27 | 945 |  |
| 969 | Descrição dos componentes construtivos e materiais de construção | 10d | 2026-08-14 | 2026-08-27 | 945 |  |
| 970 | Lista de pranchas anexas e documentos | 10d | 2026-08-14 | 2026-08-27 | 945 |  |
| 971 | Vias de acesso ao conjunto, arruamento, logradouros adjacentes e calçadas com os respectivos equipamentos urbanos; | 10d | 2026-08-14 | 2026-08-27 | 945 |  |
| 972 | Platôs e taludes principais; | 10d | 2026-08-14 | 2026-08-27 | 945 |  |
| 973 | Perímetro do terreno, recuos e afastamentos; | 10d | 2026-08-14 | 2026-08-27 | 945 |  |
| 974 | Indicação das áreas a serem edificadas com o contorno da cobertura das edificações, estacionamentos e áreas permeáveis/impermeáveis; | 10d | 2026-08-14 | 2026-08-27 | 945 |  |
| 975 | Denominação das edificações, blocos ou espaços; | 10d | 2026-08-14 | 2026-08-27 | 945 |  |
| 976 | Cotas gerais | 10d | 2026-08-14 A | 2026-08-27 A | 945 |  |
| 977 | Cotas de nível principal. | 10d | 2026-08-14 | 2026-08-27 | 945 |  |
| 978 | Quadros de áreas | 10d | 2026-08-14 A | 2026-08-27 A | 945 |  |
| 979 | Planta com as cotas de nível projetadas e existentes | 1d | 2026-08-28 | 2026-08-28 | 978 |  |
| 980 | **Plantas baixas (se tiver mais de um pavimento, duplicar bloco)** | 1d | 2026-08-31 | 2026-08-31 |  |  |
| 981 | Indicar simbologias de representação gráfica, conforme NBR 6492:2021; | 1d | 2026-08-31 | 2026-08-31 | 979 |  |
| 982 | Compatibilização (verificar se está tudo conforme as normas e alinhar com o restante das disciplinas de engenharia) | 1d | 2026-08-31 | 2026-08-31 | 979 |  |
| 983 | Compatibilização (deixar tudo conforme padrão Quanta) | 1d | 2026-08-31 | 2026-08-31 | 979 |  |
| 984 | Indicação de Norte; | 1d | 2026-08-31 | 2026-08-31 | 979 |  |
| 985 | Indicação de Escala; | 1d | 2026-08-31 | 2026-08-31 | 979 |  |
| 986 | Indicação de Acessos; | 1d | 2026-08-31 | 2026-08-31 | 979 |  |
| 987 | Elementos de vedação internos e externos; | 1d | 2026-08-31 | 2026-08-31 | 979 |  |
| 988 | Esquadrias (sem código e sem quadro); | 1d | 2026-08-31 | 2026-08-31 | 979 |  |
| 989 | Elementos estruturais principais; | 1d | 2026-08-31 | 2026-08-31 | 979 |  |
| 990 | Identificação dos ambientes e espaços (internos e externos); | 1d | 2026-08-31 | 2026-08-31 | 979 |  |
| 991 | Espaços de circulação internos e externos; | 1d | 2026-08-31 | 2026-08-31 | 979 |  |
| 992 | Áreas de serviço, funcionais e técnicas (internos e externos); | 1d | 2026-08-31 | 2026-08-31 | 979 |  |
| 993 | Projeções de níveis superiores; | 1d | 2026-08-31 | 2026-08-31 | 979 |  |
| 994 | Cotas gerais | 1d | 2026-08-31 | 2026-08-31 | 979 |  |
| 995 | Cotas de nível principal. | 1d | 2026-08-31 | 2026-08-31 | 979 |  |
| 996 | Quadro de áreas | 1d | 2026-08-31 | 2026-08-31 | 979 |  |
| 997 | **Planta das coberturas** | 1d | 2026-09-01 | 2026-09-01 |  |  |
| 998 | Indicação do Norte | 1d | 2026-09-01 | 2026-09-01 | 996 |  |
| 1000 | Curvas de nível | 1d | 2026-09-01 | 2026-09-01 | 996 |  |
| 1001 | Indicação de Acessos; | 1d | 2026-09-01 | 2026-09-01 | 996 |  |
| 1002 | Estacionamento e áreas cobertas | 1d | 2026-09-01 | 2026-09-01 | 996 |  |
| 1003 | Cobertura das edificações | 1d | 2026-09-01 | 2026-09-01 | 996 |  |
| 1004 | Sentido de escoamento das águas pluviais e inclinação | 1d | 2026-09-01 | 2026-09-01 | 996 |  |
| 1005 | Cotas gerais | 1d | 2026-09-01 | 2026-09-01 | 996 |  |
| 1006 | Cotas de nível principal | 1d | 2026-09-01 | 2026-09-01 | 996 |  |
| 1007 | **Cortes longitudinais** | 1d | 2026-09-02 | 2026-09-02 |  |  |
| 1008 | Indicar simbologias de representação gráfica, conforme NBR 6492:2021; | 1d | 2026-09-02 | 2026-09-02 | 1006 |  |
| 1009 | Indicação de Escala; | 1d | 2026-09-02 | 2026-09-02 | 1006 |  |
| 1010 | Elementos estruturais principais; | 1d | 2026-09-02 | 2026-09-02 | 1006 |  |
| 1011 | Elementos de vedação internos e externos; | 1d | 2026-09-02 | 2026-09-02 | 1006 |  |
| 1012 | Esquadrias; | 1d | 2026-09-02 | 2026-09-02 | 1006 |  |
| 1013 | Identificação dos ambientes; | 1d | 2026-09-02 | 2026-09-02 | 1006 |  |
| 1014 | Cobertura com indicação da respectiva inclinação; | 1d | 2026-09-02 | 2026-09-02 | 1006 |  |
| 1015 | Cotas gerais; | 1d | 2026-09-02 | 2026-09-02 | 1006 |  |
| 1016 | Cotas de nível principal; | 1d | 2026-09-02 | 2026-09-02 | 1006 |  |
| 1017 | Eixos do projeto; | 1d | 2026-09-02 | 2026-09-02 | 1006 |  |
| 1018 | Relevo construído; | 1d | 2026-09-02 | 2026-09-02 | 1006 |  |
| 1019 | Projeção da topografia natural. | 1d | 2026-09-02 | 2026-09-02 | 1006 |  |
| 1020 | **Cortes transversais** | 1d | 2026-09-03 | 2026-09-03 |  |  |
| 1021 | Indicar simbologias de representação gráfica, conforme NBR 6492:2021; | 1d | 2026-09-03 | 2026-09-03 | 1019 |  |
| 1022 | Indicação de Escala; | 1d | 2026-09-03 | 2026-09-03 | 1019 |  |
| 1023 | Elementos estruturais principais; | 1d | 2026-09-03 | 2026-09-03 | 1019 |  |
| 1024 | Elementos de vedação internos e externos; | 1d | 2026-09-03 | 2026-09-03 | 1019 |  |
| 1025 | Esquadrias; | 1d | 2026-09-03 | 2026-09-03 | 1019 |  |
| 1026 | Identificação dos ambientes; | 1d | 2026-09-03 | 2026-09-03 | 1019 |  |
| 1027 | Cobertura com indicação da respectiva inclinação; | 1d | 2026-09-03 | 2026-09-03 | 1019 |  |
| 1028 | Cotas gerais; | 1d | 2026-09-03 | 2026-09-03 | 1019 |  |
| 1029 | Cotas de nível principal; | 1d | 2026-09-03 | 2026-09-03 | 1019 |  |
| 1030 | Eixos do projeto; | 1d | 2026-09-03 | 2026-09-03 | 1019 |  |
| 1031 | Relevo construído; | 1d | 2026-09-03 | 2026-09-03 | 1019 |  |
| 1032 | Projeção da topografia natural | 1d | 2026-09-03 | 2026-09-03 | 1019 |  |
| 1033 | **Elevações** | 1d | 2026-09-04 | 2026-09-04 |  |  |
| 1034 | Indicar simbologias de representação gráfica, conforme NBR 6492:2021; | 1d | 2026-09-04 | 2026-09-04 | 1032 |  |
| 1035 | Indicação de Escala; | 1d | 2026-09-04 | 2026-09-04 | 1032 |  |
| 1036 | Elementos estruturais principais; | 1d | 2026-09-04 | 2026-09-04 | 1032 |  |
| 1037 | Elementos de vedação internos e externos; | 1d | 2026-09-04 | 2026-09-04 | 1032 |  |
| 1038 | Esquadrias (sem código e sem quadro); | 1d | 2026-09-04 | 2026-09-04 | 1032 |  |
| 1039 | Relevo construído; | 1d | 2026-09-04 | 2026-09-04 | 1032 |  |
| 1040 | Cotas gerais; | 1d | 2026-09-04 | 2026-09-04 | 1032 |  |
| 1041 | Cotas de nível principais; | 1d | 2026-09-04 | 2026-09-04 | 1032 |  |
| 1042 | Cobertura (quando aparente). | 1d | 2026-09-04 | 2026-09-04 | 1032 |  |
| 1043 | Memorial Descritivo | 4d | 2026-09-08 | 2026-09-11 | 1033 |  |
| 1044 | Aprovação de Conformidade | 3d | 2026-09-09 | 2026-09-11 | 1043FF |  |
| 1045 | Material para entrega ao contrato | 3d | 2026-09-09 | 2026-09-11 | 1043FF |  |
| 1046 | **Engenharia** | 34d | 2026-07-27 A | 2026-09-11 |  |  |
| 1047 | **Estrutura** | 34d | 2026-07-27 A | 2026-09-11 |  |  |
| 1048 | **LOD 100 — Premissas, diretrizes e interfaces** | 7d | 2026-07-27 A | 2026-08-04 |  |  |
| 1049 | Levantamento de tipos de cargas globais estimadas (permanentes, acidentais, vento e especiais). | 2d | 2026-07-27 A | 2026-07-28 | 945SS-9d |  |
| 1050 | Estudo volumétrico com modulação inicial de pilares, vigas e lajes. Entendendo vãos e desafios | 5d | 2026-07-27 A | 2026-07-31 | 945SS-9d |  |
| 1051 | Localização aproximada de elementos estruturais principais. Avaliando vãos e estudando posições | 2d | 2026-07-27 A | 2026-07-28 | 945SS-9d |  |
| 1052 | Estudo de viabilidade técnica e construtiva. | 3d | 2026-07-29 | 2026-07-31 | 1051 |  |
| 1053 | Definição preliminar do sistema estrutural (concreto armado, metálica ou mista). | 3d | 2026-07-29 | 2026-07-31 | 1051 |  |
| 1054 | Estimativa preliminar de tipologias de fundações (sapatas, blocos, estacas). | 2d | 2026-08-03 | 2026-08-04 | 1052 |  |
| 1055 | Previsão de áreas técnicas, casas de máquinas, reservatórios elevados e estrutura de cobertura. | 2d | 2026-08-03 | 2026-08-04 | 1052 |  |
| 1056 | **LOD 200 — Validação interdisciplinar e solução preliminar** | 20d | 2026-08-05 | 2026-09-01 |  |  |
| 1057 | Lista preliminar de cargas e ações para dimensionamento. | 5d | 2026-08-05 | 2026-08-11 | 1055 |  |
| 1058 | Definição preliminar de alturas de pavimentos e níveis de fundação. | 5d | 2026-08-05 | 2026-08-11 | 1055 |  |
| 1059 | Indicação aproximada do sistema de cobertura (tesouras, treliças, vigamento metálico ou concreto). | 5d | 2026-08-05 | 2026-08-11 | 1055 |  |
| 1060 | Modelagem genérica de pilares, vigas, lajes e fundações. | 5d | 2026-08-12 | 2026-08-18 | 1057 |  |
| 1061 | Traçado preliminar de elementos especiais (escadas, rampas estruturais, reservatórios). | 5d | 2026-08-12 | 2026-08-18 | 1057 |  |
| 1062 | Arquivo IFC, plantas de forma e planta de locação | 5d | 2026-08-12 | 2026-08-18 | 1057 |  |
| 1063 | Inserção de fundações com tipologia e dimensões preliminares. | 5d | 2026-08-19 | 2026-08-25 | 1061 |  |
| 1064 | Compatibilização inicial com arquitetura e demais disciplinas. | 5d | 2026-08-19 | 2026-08-25 | 1062 |  |
| 1065 | Indicação de passagens de infraestrutura (shafts, aberturas em lajes e vigas). | 5d | 2026-08-19 | 2026-08-25 | 1062 |  |
| 1066 | Modelagem assertiva de elementos principais com dimensões aproximadas (largura, altura, espessura). | 10d | 2026-08-19 | 2026-09-01 | 1062 |  |
| 1067 | Modelagem estimada de armaduras principais (em nível de concepção). | 5d | 2026-08-26 | 2026-09-01 | 1066FF |  |
| 1068 | **LOD 300 - Consolidação e documentação de entrega** | 7d | 2026-09-02 | 2026-09-11 |  |  |
| 1069 | Indicação de níveis e cotas exatas. | 7d | 2026-09-02 | 2026-09-11 | 1066, 1067 |  |
| 1070 | Quadro de cargas atualizado. | 7d | 2026-09-02 | 2026-09-11 | 1066, 1067 |  |
| 1071 | Dimensionamento final de fundações conforme sondagem e cálculo estrutural. | 7d | 2026-09-02 | 2026-09-11 | 1066, 1067 |  |
| 1072 | Definição final dos elementos da cobertura (treliças, vigas, chapas, purlins). | 7d | 2026-09-02 | 2026-09-11 | 1066, 1067 |  |
| 1073 | Compatibilização final com arquitetura e instalações (aberturas, embutidos e passagens). | 7d | 2026-09-02 | 2026-09-11 | 1066, 1067 |  |
| 1074 | Modelagem definitiva de pilares, vigas, lajes, blocos, sapatas e estacas. | 7d | 2026-09-02 | 2026-09-11 | 1066, 1067 |  |
| 1075 | Planta estrutural com todos os elementos identificados. | 7d | 2026-09-02 | 2026-09-11 | 1066, 1067 |  |
| 1076 | Memorial descritivo contendo: objetivos, justificativa, descrição do sistema, concepção de fundações/cobertura, especificações e quadro de cargas. | 7d | 2026-09-02 | 2026-09-11 | 1066, 1067 |  |
| 1077 | Normas técnicas utilizadas (NBR 6118, 6120, 6122, 8800, etc.). | 7d | 2026-09-02 | 2026-09-11 | 1066, 1067 |  |
| 1078 | Consolidar documentação de entrega e emissão formal da disciplina | 7d | 2026-09-02 | 2026-09-11 | 1066, 1067 |  |
| 1079 | Aprovação de Conformidade | 3d | 2026-09-09 | 2026-09-11 | 1068FF |  |
| 1080 | Material para entrega ao contrato | 3d | 2026-09-09 | 2026-09-11 | 1068FF |  |
| 1081 | **Hidrossanitário** | 34d | 2026-07-27 A | 2026-09-11 |  |  |
| 1082 | **LOD 100 — Premissas, diretrizes e interfaces** | 8d | 2026-07-27 A | 2026-08-05 |  |  |
| 1083 | Memorial preliminar | 8d | 2026-07-27 A | 2026-08-05 | 945SS-9d |  |
| 1084 | Indicação de áreas técnicas | 6d | 2026-07-27 A | 2026-08-03 | 945SS-9d |  |
| 1085 | Planta baixa com traçado conceitual | 6d | 2026-07-27 A | 2026-08-03 | 945SS-9d |  |
| 1086 | Pontos de consumo principais e coletas sanitárias | 6d | 2026-07-27 A | 2026-08-03 | 945SS-9d |  |
| 1087 | Classificação de uso | 8d | 2026-07-27 A | 2026-08-05 | 945SS-9d |  |
| 1088 | Diretrizes de espaço | 8d | 2026-07-27 A | 2026-08-05 | 945SS-9d |  |
| 1089 | Estimativa de demanda ou população de uso | 8d | 2026-07-27 A | 2026-08-05 | 945SS-9d |  |
| 1090 | Levantamento de elementos especiais dentre outras disciplinas de Engenharia e Arquitetura | 8d | 2026-07-27 A | 2026-08-05 | 945SS-9d |  |
| 1091 | **LOD 200 — Validação interdisciplinar e solução preliminar** | 20d | 2026-08-06 | 2026-09-02 |  |  |
| 1092 | Critérios normativos adotados (ABNT, concessionárias, etc.) | 20d | 2026-08-06 | 2026-09-02 | 1090 |  |
| 1093 | Informações de demanda na concessionária (DPE ou AVT Aviso de Viabilidade Técnica) | 20d | 2026-08-06 | 2026-09-02 | 1092SS |  |
| 1094 | Recebimento e Análise de Sondagem (permeabilidade ou percolação) | 20d | 2026-08-06 | 2026-09-02 | 1092SS |  |
| 1095 | Recebimento e Análise de Topografia | 20d | 2026-08-06 | 2026-09-02 | 1092SS |  |
| 1096 | Estudo de viabilidade técnica, econômica e ambiental | 20d | 2026-08-06 | 2026-09-02 | 1092SS |  |
| 1097 | Lista preliminar de sistemas envolvidos. | 20d | 2026-08-06 | 2026-09-02 | 1090 |  |
| 1098 | Planta baixa e cortes estimada contendo: - Traçado preliminar de barrilete, ramais, colunas - Diâmetros estimados - Localização aproximada das bombas e unidades de tratamento e reúso - Localização do ramal predial de água e esgoto - Localização aproximada | 20d | 2026-08-06 | 2026-09-02 | 1090 |  |
| 1099 | **LOD 300 - Consolidação e documentação de entrega** | 6d | 2026-09-03 | 2026-09-11 |  |  |
| 1100 | Planta, corte e detalhe isométrico contendo: - Modelagem detalhada com diâmetros, cotas e inclinações definitivas (barriletes, colunas, ramais) - Quantitativos e especificação técnica dos materiais (tubos, conexões, reservatórios, registros e válvulas com | 6d | 2026-09-03 | 2026-09-11 | 1098 |  |
| 1101 | Memorial descritivo | 3d | 2026-09-09 | 2026-09-11 | 1100FF |  |
| 1102 | Memória de cálculo (pressão, vazão, diâmetros, perda de carga). | 3d | 2026-09-09 | 2026-09-11 | 1098, 1100FF |  |
| 1103 | Aprovação de Conformidade | 3d | 2026-09-09 | 2026-09-11 | 1099FF |  |
| 1104 | Material para entrega ao contrato | 3d | 2026-09-09 | 2026-09-11 | 1099FF |  |
| 1105 | **AVAC** | 34d | 2026-07-27 A | 2026-09-11 |  |  |
| 1106 | **LOD 100 — Premissas, diretrizes e interfaces** | 20d | 2026-07-27 A | 2026-08-21 |  |  |
| 1107 | Estimativa de carga térmica por ambiente. | 10d | 2026-07-27 A | 2026-08-07 | 945SS-9d |  |
| 1108 | Localização preliminar de unidades de tratamento de ar, condensadoras e exaustores. | 10d | 2026-07-27 A | 2026-08-07 | 945SS-9d |  |
| 1109 | Pontos locação para seus elementos no projeto arquitetônico. | 10d | 2026-07-27 A | 2026-08-07 | 945SS-9d |  |
| 1110 | Estudo de viabilidade e rotas principais de distribuição de ar. | 10d | 2026-07-27 A | 2026-08-07 | 945SS-9d |  |
| 1111 | Reserva de espaços técnicos e shafts. | 10d | 2026-07-27 A | 2026-08-07 | 945SS-9d |  |
| 1112 | Levantamento de cargas especiais provenientes de outras disciplinas. | 10d | 2026-08-10 | 2026-08-21 | 1134, 1146 |  |
| 1113 | **LOD 200 — Validação interdisciplinar e solução preliminar** | 24d | 2026-08-10 | 2026-09-11 |  |  |
| 1114 | Lista preliminar de sistemas HVAC envolvidos (expansão direta, VRF, chillers, ventilação, exaustão). | 24d | 2026-08-10 | 2026-09-11 | 1111 |  |
| 1115 | Planta baixa estimada contendo: pontos de insuflamento e retorno. | 24d | 2026-08-10 | 2026-09-11 | 1111 |  |
| 1116 | Rotas iniciais de dutos, tubulações e drenos. | 24d | 2026-08-10 | 2026-09-11 | 1111 |  |
| 1117 | Planta baixa estimada contendo: unidades internas e externas com posição preliminar. | 24d | 2026-08-10 | 2026-09-11 | 1111 |  |
| 1118 | Aprovação de Conformidade | 3d | 2026-09-09 | 2026-09-11 | 1113FF |  |
| 1119 | Material para entrega ao contrato | 3d | 2026-09-09 | 2026-09-11 | 1113FF |  |
| 1120 | **PCI (Incêndio)** | 34d | 2026-07-27 A | 2026-09-11 |  |  |
| 1121 | **LOD 100 — Premissas, diretrizes e interfaces** | 10d | 2026-07-27 A | 2026-08-07 |  |  |
| 1122 | Estudo e avaliação da arquitetura atendendo as normas competentes de PCI | 10d | 2026-07-27 A | 2026-08-07 | 945SS-9d |  |
| 1123 | Avaliação do espaço para CMI e Central de Gás. | 10d | 2026-07-27 A | 2026-08-07 | 945SS-9d |  |
| 1124 | Pontos locação para seus elementos no projeto arquitetônico | 10d | 2026-07-27 A | 2026-08-07 | 945SS-9d |  |
| 1125 | **LOD 200 — Validação interdisciplinar e solução preliminar** | 24d | 2026-08-10 | 2026-09-11 |  |  |
| 1126 | Definição da classificação da edificação e o risco de incêndio | 24d | 2026-08-10 | 2026-09-11 | 1124 |  |
| 1127 | Cálculos pré-dimensionados dos extintores, hidrantes e bomba. | 24d | 2026-08-10 | 2026-09-11 | 1124 |  |
| 1128 | Avaliação das rotas de fuga, ventilação de CMI e outros elementos de importância para as normas de PCI | 24d | 2026-08-10 | 2026-09-11 | 1124 |  |
| 1129 | Aprovação de Conformidade | 3d | 2026-09-09 | 2026-09-11 | 1125FF |  |
| 1130 | Material para entrega ao contrato | 3d | 2026-09-09 | 2026-09-11 | 1125FF |  |
| 1131 | **Elétrica Baixa Tensão** | 34d | 2026-07-27 A | 2026-09-11 |  |  |
| 1132 | **LOD 100 — Concepção** | 14d | 2026-07-27 A | 2026-08-13 |  |  |
| 1133 | Avaliação e Diretrizes Técnicas para Arquitetura | 4d | 2026-07-27 A | 2026-07-30 | 945SS-9d |  |
| 1134 | Estimativa de Cargas e Demanda | 7d | 2026-07-27 A | 2026-08-04 | 945SS-9d |  |
| 1135 | Levantamento de Equipamentos de Outras Disciplinas | 4d | 2026-08-10 | 2026-08-13 | 1109, 1124 |  |
| 1136 | **LOD 200 — Anteprojeto** | 16d | 2026-08-14 | 2026-09-04 |  |  |
| 1137 | TUGs Estimados | 16d | 2026-08-14 | 2026-09-04 | 1134, 1135 |  |
| 1138 | Pontos de Luz Estimados | 16d | 2026-08-14 | 2026-09-04 | 1134, 1135 |  |
| 1139 | TUEs e Quadros Estimados | 16d | 2026-08-14 | 2026-09-04 | 1134, 1135 |  |
| 1140 | LOD 300 - Consolidação e documentação de entrega | 4d | 2026-09-08 | 2026-09-11 | 1136 |  |
| 1141 | Aprovação de Conformidade | 3d | 2026-09-09 | 2026-09-11 | 1140FF |  |
| 1142 | Material para entrega ao contrato | 3d | 2026-09-09 | 2026-09-11 | 1140FF |  |
| 1143 | **Telecom** | 34d | 2026-07-27 A | 2026-09-11 |  |  |
| 1144 | **LOD 100 — Concepção** | 10d | 2026-07-27 A | 2026-08-07 |  |  |
| 1145 | Avaliação e Diretrizes Técnicas para Arquitetura | 10d | 2026-07-27 A | 2026-08-07 | 945SS-9d |  |
| 1146 | Estimativa de Demanda de Telecomunicações | 10d | 2026-07-27 A | 2026-08-07 | 945SS-9d |  |
| 1147 | Levantamento de Equipamentos e Interfaces com Outras Disciplinas | 10d | 2026-07-27 A | 2026-08-07 | 945SS-9d |  |
| 1148 | **LOD 200 — Anteprojeto** | 20d | 2026-08-10 | 2026-09-04 |  |  |
| 1149 | Pontos de Telecomunicações Estimados (Rede, Voz, CFTV e Demais Sistemas) | 10d | 2026-08-10 | 2026-08-21 | 1147 |  |
| 1150 | Racks Estimados | 10d | 2026-08-10 | 2026-08-21 | 1147 |  |
| 1151 | Infraestrutura de Telecomunicações Preliminar | 10d | 2026-08-24 | 2026-09-04 | 1149, 1150 |  |
| 1152 | LOD 300 - Consolidação e documentação de entrega | 4d | 2026-09-08 | 2026-09-11 | 1148 |  |
| 1153 | Aprovação de Conformidade | 3d | 2026-09-09 | 2026-09-11 | 1152FF |  |
| 1154 | Material para entrega ao contrato | 3d | 2026-09-09 | 2026-09-11 | 1152FF |  |
| 1155 | **SPDA** | 34d | 2026-07-27 A | 2026-09-11 |  |  |
| 1156 | **LOD 100 — Concepção** | 10d | 2026-07-27 A | 2026-08-07 |  |  |
| 1157 | Avaliação e Diretrizes Técnicas para Arquitetura | 10d | 2026-07-27 A | 2026-08-07 | 945SS-9d |  |
| 1158 | Coleta de Informações da Edificação e Análise de Risco (ABNT NBR 5419-2) | 10d | 2026-07-27 A | 2026-08-07 | 945SS-9d |  |
| 1159 | Estudo Preliminar de Necessidade e Nível de Proteção do SPDA | 10d | 2026-07-27 A | 2026-08-07 | 945SS-9d |  |
| 1160 | **LOD 200 — Anteprojeto** | 20d | 2026-08-10 | 2026-09-04 |  |  |
| 1161 | Definição da Estratégia de Proteção e Soluções Técnicas | 10d | 2026-08-10 | 2026-08-21 | 1159 |  |
| 1162 | Zoneamento de Captação, Descida e Traçados Preliminares | 10d | 2026-08-24 | 2026-09-04 | 1161 |  |
| 1163 | Estudo de Interferências, Compatibilização e Métodos Construtivos | 10d | 2026-08-24 | 2026-09-04 | 1161 |  |
| 1164 | LOD 300 - Consolidação e documentação de entrega | 4d | 2026-09-08 | 2026-09-11 | 1163 |  |
| 1165 | Aprovação de Conformidade | 3d | 2026-09-09 | 2026-09-11 | 1164FF |  |
| 1166 | Material para entrega ao contrato | 3d | 2026-09-09 | 2026-09-11 | 1164FF |  |
| 1167 | **Energia Renovável** | 34d | 2026-07-27 A | 2026-09-11 |  |  |
| 1168 | **LOD 100 — Concepção** | 10d | 2026-07-27 A | 2026-08-07 |  |  |
| 1169 | Viabilidade e Premissas de Geração | 10d | 2026-07-27 A | 2026-08-07 | 945SS-9d |  |
| 1170 | Levantamento Preliminar de Áreas e Sombreamento | 10d | 2026-07-27 A | 2026-08-07 | 945SS-9d |  |
| 1171 | Avaliação e Diretrizes Técnicas para Arquitetônico | 10d | 2026-07-27 A | 2026-08-07 | 945SS-9d |  |
| 1172 | **LOD 200 — Anteprojeto** | 20d | 2026-08-10 | 2026-09-04 |  |  |
| 1173 | Layout Preliminar de Módulos, Inversores e String Boxes | 20d | 2026-08-10 | 2026-09-04 | 1170 |  |
| 1174 | Infraestrutura e Rotas Técnicas Preliminares (DC/AC e Aterramento) | 20d | 2026-08-10 | 2026-09-04 | 1170 |  |
| 1175 | Critérios Preliminares de Proteção e Estimativa de Quantitativos | 20d | 2026-08-10 | 2026-09-04 | 1170 |  |
| 1176 | LOD 300 - Consolidação e documentação de entrega | 4d | 2026-09-08 | 2026-09-11 | 1172 |  |
| 1177 | Aprovação de Conformidade | 3d | 2026-09-09 | 2026-09-11 | 1176FF |  |
| 1178 | Material para entrega ao contrato | 3d | 2026-09-09 | 2026-09-11 | 1176FF |  |
| 1179 | **006 - Guarita (3 guaritas)** | 45d | 2026-07-10 A | 2026-09-11 |  |  |
| 1180 | **Arquitetura** | 45d | 2026-07-10 A | 2026-09-11 |  |  |
| 1181 | **Análise e Compatibilização (caso a gente receba o projeto e precise adequar)** | 31d | 2026-07-10 A | 2026-08-21 A |  |  |
| 1182 | Conferir normas de cozinha industrial | 20d | 2026-07-10 A | 2026-08-06 A | 24FS+5d | start no earlier than 2026-06-01 |
| 1183 | Conferir e fechar alinhamento das paredes | 20d | 2026-07-10 A | 2026-08-06 A | 24FS+5d | start no earlier than 2026-06-01 |
| 1184 | Conferir quantidade de sanitários e cubas de acordo com os setores | 20d | 2026-07-10 A | 2026-08-06 A | 24FS+5d | start no earlier than 2026-06-01 |
| 1185 | Conferir layout | 20d | 2026-07-10 A | 2026-08-06 A | 24FS+5d | start no earlier than 2026-06-01 |
| 1186 | Conferir e fechar Pisos | 20d | 2026-07-10 A | 2026-08-06 A | 24FS+5d | start no earlier than 2026-06-01 |
| 1187 | Conferir e fechar Esquadrias | 20d | 2026-07-10 A | 2026-08-06 A | 24FS+5d | start no earlier than 2026-06-01 |
| 1188 | Conferir acessibilidade em rampas e sanitários | 20d | 2026-07-10 A | 2026-08-06 A | 24FS+5d | start no earlier than 2026-06-01 |
| 1189 | Conferir nomas técnicas para o dimensionamento dos ambientes - principalmente banheiros e circulações | 20d | 2026-07-10 A | 2026-08-06 A | 24FS+5d | start no earlier than 2026-06-01 |
| 1190 | Conferir normas técnicas para auditórios (se tiver) | 20d | 2026-07-10 A | 2026-08-06 A | 24FS+5d | start no earlier than 2026-06-01 |
| 1191 | Compatibilização (pedir relatório de análise de projeto para disciplinas de engenharia) | 5d | 2026-08-07 A | 2026-08-13 A | 1190 |  |
| 1192 | Compatibilizar as rotas de fulga de acordo com as solicitações de PCI | 11d | 2026-08-07 A | 2026-08-21 A | 1190 |  |
| 1193 | Comatibilizar as prumadas com as equipes de engenharia | 11d | 2026-08-07 A | 2026-08-21 A | 1190 |  |
| 1194 | Ajustar área dos ambientes conforme solicitado pela equipe de elétrica | 11d | 2026-08-07 A | 2026-08-21 A | 1190 |  |
| 1195 | **LOD 300 - ANTEPROJETO** | 20d | 2026-08-14 A | 2026-09-11 |  |  |
| 1196 | **Modelagem e compatibilização** | 10d | 2026-08-14 A | 2026-08-27 |  |  |
| 1197 | Ajustar o navegador de projeto conforme o padrão da Quanta - verificar se todas as vistas estão dentro da disciplina correta - alinahr com o líder da OS | 10d | 2026-08-14 | 2026-08-27 | 1191 |  |
| 1198 | Limpar o arquivo e transferir os padões de projeto da Quanta | 10d | 2026-08-14 | 2026-08-27 | 1191 |  |
| 1199 | Criar Worksets (em caso de arquivos colaborados) | 10d | 2026-08-14 | 2026-08-27 | 1191 |  |
| 1200 | Colocar todas as elementos em seus devidos Worksets | 10d | 2026-08-14 | 2026-08-27 | 1191 |  |
| 1201 | Fazer ajustes dos modelos para Colaboração | 10d | 2026-08-14 | 2026-08-27 | 1191 |  |
| 1202 | Mudar os pisos para o padrão da quanta (1º pavimento) | 10d | 2026-08-14 A | 2026-08-27 A | 1191 |  |
| 1203 | Mudar as parades para o padão da quanta (1º pavimento) | 10d | 2026-08-14 A | 2026-08-27 A | 1191 |  |
| 1204 | Mudar as portas para o padão da quanta (1º pavimento) | 10d | 2026-08-14 A | 2026-08-27 A | 1191 |  |
| 1205 | Mudar as soleiras para o padão da quanta | 10d | 2026-08-14 A | 2026-08-27 A | 1191 |  |
| 1206 | Mudar as bancadas para o padão da Quanta (1º pavimento) | 10d | 2026-08-14 A | 2026-08-27 A | 1191 |  |
| 1207 | Mudar metais para padrão da Quanta (1º pavimento) | 10d | 2026-08-14 A | 2026-08-27 A | 1191 |  |
| 1208 | Mudar demais acabamentos para padrão o padrão da Quanta | 10d | 2026-08-14 A | 2026-08-27 A | 1191 |  |
| 1209 | Ajustar ralos das áreas molhadas (1º pavimento) | 10d | 2026-08-14 A | 2026-08-27 A | 1191 |  |
| 1210 | Se vier as tomadas - excluir (1º Pavimento) | 10d | 2026-08-14 | 2026-08-27 | 1191 |  |
| 1211 | Se vier as luminárias - excluir (1° pavimento) | 10d | 2026-08-14 | 2026-08-27 | 1191 |  |
| 1212 | Inserir caixa d'água - Conferir pré dimensionamento com a engenharia | 10d | 2026-08-14 | 2026-08-27 | 1191 |  |
| 1213 | Separar camadas dos pisos - leje 10cm (1° camada), contrapiso 3cm+argamassa 2cm+rev 1cm, (2°camada) | 10d | 2026-08-14 A | 2026-08-27 A | 1191 |  |
| 1214 | Descrição dos elementos da edificação | 10d | 2026-08-14 A | 2026-08-27 | 1191 |  |
| 1215 | Descrição dos componentes construtivos e materiais de construção | 10d | 2026-08-14 A | 2026-08-27 | 1191 |  |
| 1216 | Lista de pranchas anexas e documentos | 10d | 2026-08-14 | 2026-08-27 | 1191 |  |
| 1217 | Vias de acesso ao conjunto, arruamento, logradouros adjacentes e calçadas com os respectivos equipamentos urbanos; | 10d | 2026-08-14 | 2026-08-27 | 1191 |  |
| 1218 | Platôs e taludes principais; | 10d | 2026-08-14 | 2026-08-27 | 1191 |  |
| 1219 | Perímetro do terreno, recuos e afastamentos; | 10d | 2026-08-14 | 2026-08-27 | 1191 |  |
| 1220 | Indicação das áreas a serem edificadas com o contorno da cobertura das edificações, estacionamentos e áreas permeáveis/impermeáveis; | 10d | 2026-08-14 | 2026-08-27 | 1191 |  |
| 1221 | Denominação das edificações, blocos ou espaços; | 10d | 2026-08-14 | 2026-08-27 | 1191 |  |
| 1222 | Cotas gerais | 10d | 2026-08-14 A | 2026-08-27 A | 1191 |  |
| 1223 | Cotas de nível principal. | 10d | 2026-08-14 A | 2026-08-27 | 1191 |  |
| 1224 | Quadros de áreas | 10d | 2026-08-14 A | 2026-08-27 A | 1191 |  |
| 1225 | Planta com as cotas de nível projetadas e existentes | 1d | 2026-08-28 | 2026-08-28 | 1224 |  |
| 1226 | **Plantas baixas (se tiver mais de um pavimento, duplicar bloco)** | 1d | 2026-08-31 A | 2026-08-31 |  |  |
| 1227 | Indicar simbologias de representação gráfica, conforme NBR 6492:2021; | 1d | 2026-08-31 A | 2026-08-31 | 1225 |  |
| 1228 | Compatibilização (verificar se está tudo conforme as normas e alinhar com o restante das disciplinas de engenharia) | 1d | 2026-08-31 | 2026-08-31 | 1225 |  |
| 1229 | Compatibilização (deixar tudo conforme padrão Quanta) | 1d | 2026-08-31 A | 2026-08-31 | 1225 |  |
| 1230 | Indicação de Norte; | 1d | 2026-08-31 A | 2026-08-31 | 1225 |  |
| 1231 | Indicação de Escala; | 1d | 2026-08-31 | 2026-08-31 | 1225 |  |
| 1232 | Indicação de Acessos; | 1d | 2026-08-31 A | 2026-08-31 | 1225 |  |
| 1233 | Elementos de vedação internos e externos; | 1d | 2026-08-31 | 2026-08-31 | 1225 |  |
| 1234 | Esquadrias (sem código e sem quadro); | 1d | 2026-08-31 A | 2026-08-31 | 1225 |  |
| 1235 | Elementos estruturais principais; | 1d | 2026-08-31 A | 2026-08-31 | 1225 |  |
| 1236 | Identificação dos ambientes e espaços (internos e externos); | 1d | 2026-08-31 A | 2026-08-31 | 1225 |  |
| 1237 | Espaços de circulação internos e externos; | 1d | 2026-08-31 A | 2026-08-31 | 1225 |  |
| 1238 | Áreas de serviço, funcionais e técnicas (internos e externos); | 1d | 2026-08-31 A | 2026-08-31 | 1225 |  |
| 1239 | Projeções de níveis superiores; | 1d | 2026-08-31 A | 2026-08-31 | 1225 |  |
| 1240 | Cotas gerais | 1d | 2026-08-31 A | 2026-08-31 | 1225 |  |
| 1241 | Cotas de nível principal. | 1d | 2026-08-31 A | 2026-08-31 | 1225 |  |
| 1242 | Quadro de áreas | 1d | 2026-08-31 A | 2026-08-31 | 1225 |  |
| 1243 | **Planta das coberturas** | 1d | 2026-09-01 A | 2026-09-01 |  |  |
| 1244 | Indicação do Norte | 1d | 2026-09-01 A | 2026-09-01 | 1242 |  |
| 1246 | Curvas de nível | 1d | 2026-09-01 | 2026-09-01 | 1242 |  |
| 1247 | Indicação de Acessos; | 1d | 2026-09-01 | 2026-09-01 | 1242 |  |
| 1248 | Estacionamento e áreas cobertas | 1d | 2026-09-01 | 2026-09-01 | 1242 |  |
| 1249 | Cobertura das edificações | 1d | 2026-09-01 A | 2026-09-01 | 1242 |  |
| 1250 | Sentido de escoamento das águas pluviais e inclinação | 1d | 2026-09-01 | 2026-09-01 | 1242 |  |
| 1251 | Cotas gerais | 1d | 2026-09-01 A | 2026-09-01 | 1242 |  |
| 1252 | Cotas de nível principal | 1d | 2026-09-01 A | 2026-09-01 | 1242 |  |
| 1253 | **Cortes longitudinais** | 1d | 2026-09-02 A | 2026-09-02 |  |  |
| 1254 | Indicar simbologias de representação gráfica, conforme NBR 6492:2021; | 1d | 2026-09-02 A | 2026-09-02 | 1252 |  |
| 1255 | Indicação de Escala; | 1d | 2026-09-02 | 2026-09-02 | 1252 |  |
| 1256 | Elementos estruturais principais; | 1d | 2026-09-02 A | 2026-09-02 | 1252 |  |
| 1257 | Elementos de vedação internos e externos; | 1d | 2026-09-02 A | 2026-09-02 | 1252 |  |
| 1258 | Esquadrias; | 1d | 2026-09-02 | 2026-09-02 | 1252 |  |
| 1259 | Identificação dos ambientes; | 1d | 2026-09-02 A | 2026-09-02 | 1252 |  |
| 1260 | Cobertura com indicação da respectiva inclinação; | 1d | 2026-09-02 | 2026-09-02 | 1252 |  |
| 1261 | Cotas gerais; | 1d | 2026-09-02 A | 2026-09-02 | 1252 |  |
| 1262 | Cotas de nível principal; | 1d | 2026-09-02 A | 2026-09-02 | 1252 |  |
| 1263 | Eixos do projeto; | 1d | 2026-09-02 A | 2026-09-02 | 1252 |  |
| 1264 | Relevo construído; | 1d | 2026-09-02 | 2026-09-02 | 1252 |  |
| 1265 | Projeção da topografia natural. | 1d | 2026-09-02 | 2026-09-02 | 1252 |  |
| 1266 | **Cortes transversais** | 1d | 2026-09-03 A | 2026-09-03 |  |  |
| 1267 | Indicar simbologias de representação gráfica, conforme NBR 6492:2021; | 1d | 2026-09-03 A | 2026-09-03 | 1265 |  |
| 1268 | Indicação de Escala; | 1d | 2026-09-03 | 2026-09-03 | 1265 |  |
| 1269 | Elementos estruturais principais; | 1d | 2026-09-03 A | 2026-09-03 | 1265 |  |
| 1270 | Elementos de vedação internos e externos; | 1d | 2026-09-03 A | 2026-09-03 | 1265 |  |
| 1271 | Esquadrias; | 1d | 2026-09-03 | 2026-09-03 | 1265 |  |
| 1272 | Identificação dos ambientes; | 1d | 2026-09-03 A | 2026-09-03 | 1265 |  |
| 1273 | Cobertura com indicação da respectiva inclinação; | 1d | 2026-09-03 A | 2026-09-03 | 1265 |  |
| 1274 | Cotas gerais; | 1d | 2026-09-03 A | 2026-09-03 | 1265 |  |
| 1275 | Cotas de nível principal; | 1d | 2026-09-03 A | 2026-09-03 | 1265 |  |
| 1276 | Eixos do projeto; | 1d | 2026-09-03 A | 2026-09-03 | 1265 |  |
| 1277 | Relevo construído; | 1d | 2026-09-03 | 2026-09-03 | 1265 |  |
| 1278 | Projeção da topografia natural | 1d | 2026-09-03 | 2026-09-03 | 1265 |  |
| 1279 | **Elevações** | 1d | 2026-09-04 A | 2026-09-04 |  |  |
| 1280 | Indicar simbologias de representação gráfica, conforme NBR 6492:2021; | 1d | 2026-09-04 A | 2026-09-04 | 1278 |  |
| 1281 | Indicação de Escala; | 1d | 2026-09-04 | 2026-09-04 | 1278 |  |
| 1282 | Elementos estruturais principais; | 1d | 2026-09-04 A | 2026-09-04 | 1278 |  |
| 1283 | Elementos de vedação internos e externos; | 1d | 2026-09-04 A | 2026-09-04 | 1278 |  |
| 1284 | Esquadrias (sem código e sem quadro); | 1d | 2026-09-04 A | 2026-09-04 | 1278 |  |
| 1285 | Relevo construído; | 1d | 2026-09-04 | 2026-09-04 | 1278 |  |
| 1286 | Cotas gerais; | 1d | 2026-09-04 A | 2026-09-04 | 1278 |  |
| 1287 | Cotas de nível principais; | 1d | 2026-09-04 A | 2026-09-04 | 1278 |  |
| 1288 | Cobertura (quando aparente). | 1d | 2026-09-04 A | 2026-09-04 | 1278 |  |
| 1289 | Memorial Descritivo | 4d | 2026-09-08 | 2026-09-11 | 1279 |  |
| 1290 | Aprovação de Conformidade | 3d | 2026-09-09 | 2026-09-11 | 1289FF |  |
| 1291 | Material para entrega ao contrato | 3d | 2026-09-09 | 2026-09-11 | 1289FF |  |
| 1292 | **Engenharia** | 34d | 2026-07-27 A | 2026-09-11 |  |  |
| 1293 | **Estrutura** | 34d | 2026-07-27 A | 2026-09-11 |  |  |
| 1294 | **LOD 100 — Premissas, diretrizes e interfaces** | 7d | 2026-07-27 A | 2026-08-04 |  |  |
| 1295 | Levantamento de tipos de cargas globais estimadas (permanentes, acidentais, vento e especiais). | 2d | 2026-07-27 A | 2026-07-28 | 1191SS-9d |  |
| 1296 | Estudo volumétrico com modulação inicial de pilares, vigas e lajes. Entendendo vãos e desafios | 5d | 2026-07-27 A | 2026-07-31 | 1191SS-9d |  |
| 1297 | Localização aproximada de elementos estruturais principais. Avaliando vãos e estudando posições | 2d | 2026-07-27 A | 2026-07-28 | 1191SS-9d |  |
| 1298 | Estudo de viabilidade técnica e construtiva. | 3d | 2026-07-29 | 2026-07-31 | 1297 |  |
| 1299 | Definição preliminar do sistema estrutural (concreto armado, metálica ou mista). | 3d | 2026-07-29 | 2026-07-31 | 1297 |  |
| 1300 | Estimativa preliminar de tipologias de fundações (sapatas, blocos, estacas). | 2d | 2026-08-03 | 2026-08-04 | 1298 |  |
| 1301 | Previsão de áreas técnicas, casas de máquinas, reservatórios elevados e estrutura de cobertura. | 2d | 2026-08-03 | 2026-08-04 | 1298 |  |
| 1302 | **LOD 200 — Validação interdisciplinar e solução preliminar** | 20d | 2026-08-05 | 2026-09-01 |  |  |
| 1303 | Lista preliminar de cargas e ações para dimensionamento. | 5d | 2026-08-05 | 2026-08-11 | 1301 |  |
| 1304 | Definição preliminar de alturas de pavimentos e níveis de fundação. | 5d | 2026-08-05 | 2026-08-11 | 1301 |  |
| 1305 | Indicação aproximada do sistema de cobertura (tesouras, treliças, vigamento metálico ou concreto). | 5d | 2026-08-05 | 2026-08-11 | 1301 |  |
| 1306 | Modelagem genérica de pilares, vigas, lajes e fundações. | 5d | 2026-08-12 | 2026-08-18 | 1303 |  |
| 1307 | Traçado preliminar de elementos especiais (escadas, rampas estruturais, reservatórios). | 5d | 2026-08-12 | 2026-08-18 | 1303 |  |
| 1308 | Arquivo IFC, plantas de forma e planta de locação | 5d | 2026-08-12 | 2026-08-18 | 1303 |  |
| 1309 | Inserção de fundações com tipologia e dimensões preliminares. | 5d | 2026-08-19 | 2026-08-25 | 1307 |  |
| 1310 | Compatibilização inicial com arquitetura e demais disciplinas. | 5d | 2026-08-19 | 2026-08-25 | 1308 |  |
| 1311 | Indicação de passagens de infraestrutura (shafts, aberturas em lajes e vigas). | 5d | 2026-08-19 | 2026-08-25 | 1308 |  |
| 1312 | Modelagem assertiva de elementos principais com dimensões aproximadas (largura, altura, espessura). | 10d | 2026-08-19 | 2026-09-01 | 1308 |  |
| 1313 | Modelagem estimada de armaduras principais (em nível de concepção). | 5d | 2026-08-26 | 2026-09-01 | 1312FF |  |
| 1314 | **LOD 300 - Consolidação e documentação de entrega** | 7d | 2026-09-02 | 2026-09-11 |  |  |
| 1315 | Indicação de níveis e cotas exatas. | 7d | 2026-09-02 | 2026-09-11 | 1312, 1313 |  |
| 1316 | Quadro de cargas atualizado. | 7d | 2026-09-02 | 2026-09-11 | 1312, 1313 |  |
| 1317 | Dimensionamento final de fundações conforme sondagem e cálculo estrutural. | 7d | 2026-09-02 | 2026-09-11 | 1312, 1313 |  |
| 1318 | Definição final dos elementos da cobertura (treliças, vigas, chapas, purlins). | 7d | 2026-09-02 | 2026-09-11 | 1312, 1313 |  |
| 1319 | Compatibilização final com arquitetura e instalações (aberturas, embutidos e passagens). | 7d | 2026-09-02 | 2026-09-11 | 1312, 1313 |  |
| 1320 | Modelagem definitiva de pilares, vigas, lajes, blocos, sapatas e estacas. | 7d | 2026-09-02 | 2026-09-11 | 1312, 1313 |  |
| 1321 | Planta estrutural com todos os elementos identificados. | 7d | 2026-09-02 | 2026-09-11 | 1312, 1313 |  |
| 1322 | Memorial descritivo contendo: objetivos, justificativa, descrição do sistema, concepção de fundações/cobertura, especificações e quadro de cargas. | 7d | 2026-09-02 | 2026-09-11 | 1312, 1313 |  |
| 1323 | Normas técnicas utilizadas (NBR 6118, 6120, 6122, 8800, etc.). | 7d | 2026-09-02 | 2026-09-11 | 1312, 1313 |  |
| 1324 | Consolidar documentação de entrega e emissão formal da disciplina | 7d | 2026-09-02 | 2026-09-11 | 1312, 1313 |  |
| 1325 | Aprovação de Conformidade | 3d | 2026-09-09 | 2026-09-11 | 1314FF |  |
| 1326 | Material para entrega ao contrato | 3d | 2026-09-09 | 2026-09-11 | 1314FF |  |
| 1327 | **Hidrossanitário** | 34d | 2026-07-27 A | 2026-09-11 |  |  |
| 1328 | **LOD 100 — Premissas, diretrizes e interfaces** | 8d | 2026-07-27 A | 2026-08-05 |  |  |
| 1329 | Memorial preliminar | 8d | 2026-07-27 A | 2026-08-05 | 1191SS-9d |  |
| 1330 | Indicação de áreas técnicas | 6d | 2026-07-27 A | 2026-08-03 | 1191SS-9d |  |
| 1331 | Planta baixa com traçado conceitual | 6d | 2026-07-27 A | 2026-08-03 | 1191SS-9d |  |
| 1332 | Pontos de consumo principais e coletas sanitárias | 6d | 2026-07-27 A | 2026-08-03 | 1191SS-9d |  |
| 1333 | Classificação de uso | 8d | 2026-07-27 A | 2026-08-05 | 1191SS-9d |  |
| 1334 | Diretrizes de espaço | 8d | 2026-07-27 A | 2026-08-05 | 1191SS-9d |  |
| 1335 | Estimativa de demanda ou população de uso | 8d | 2026-07-27 A | 2026-08-05 | 1191SS-9d |  |
| 1336 | Levantamento de elementos especiais dentre outras disciplinas de Engenharia e Arquitetura | 8d | 2026-07-27 A | 2026-08-05 | 1191SS-9d |  |
| 1337 | **LOD 200 — Validação interdisciplinar e solução preliminar** | 20d | 2026-08-06 | 2026-09-02 |  |  |
| 1338 | Critérios normativos adotados (ABNT, concessionárias, etc.) | 20d | 2026-08-06 | 2026-09-02 | 1336 |  |
| 1339 | Informações de demanda na concessionária (DPE ou AVT Aviso de Viabilidade Técnica) | 20d | 2026-08-06 | 2026-09-02 | 1338SS |  |
| 1340 | Recebimento e Análise de Sondagem (permeabilidade ou percolação) | 20d | 2026-08-06 | 2026-09-02 | 1338SS |  |
| 1341 | Recebimento e Análise de Topografia | 20d | 2026-08-06 | 2026-09-02 | 1338SS |  |
| 1342 | Estudo de viabilidade técnica, econômica e ambiental | 20d | 2026-08-06 | 2026-09-02 | 1338SS |  |
| 1343 | Lista preliminar de sistemas envolvidos. | 20d | 2026-08-06 | 2026-09-02 | 1336 |  |
| 1344 | Planta baixa e cortes estimada contendo: - Traçado preliminar de barrilete, ramais, colunas - Diâmetros estimados - Localização aproximada das bombas e unidades de tratamento e reúso - Localização do ramal predial de água e esgoto - Localização aproximada | 20d | 2026-08-06 | 2026-09-02 | 1336 |  |
| 1345 | **LOD 300 - Consolidação e documentação de entrega** | 6d | 2026-09-03 | 2026-09-11 |  |  |
| 1346 | Planta, corte e detalhe isométrico contendo: - Modelagem detalhada com diâmetros, cotas e inclinações definitivas (barriletes, colunas, ramais) - Quantitativos e especificação técnica dos materiais (tubos, conexões, reservatórios, registros e válvulas com | 6d | 2026-09-03 | 2026-09-11 | 1344 |  |
| 1347 | Memorial descritivo | 3d | 2026-09-09 | 2026-09-11 | 1346FF |  |
| 1348 | Memória de cálculo (pressão, vazão, diâmetros, perda de carga). | 3d | 2026-09-09 | 2026-09-11 | 1344, 1346FF |  |
| 1349 | Aprovação de Conformidade | 3d | 2026-09-09 | 2026-09-11 | 1345FF |  |
| 1350 | Material para entrega ao contrato | 3d | 2026-09-09 | 2026-09-11 | 1345FF |  |
| 1351 | **AVAC** | 34d | 2026-07-27 A | 2026-09-11 |  |  |
| 1352 | **LOD 100 — Premissas, diretrizes e interfaces** | 20d | 2026-07-27 A | 2026-08-21 |  |  |
| 1353 | Estimativa de carga térmica por ambiente. | 10d | 2026-07-27 A | 2026-08-07 | 1191SS-9d |  |
| 1354 | Localização preliminar de unidades de tratamento de ar, condensadoras e exaustores. | 10d | 2026-07-27 A | 2026-08-07 | 1191SS-9d |  |
| 1355 | Pontos locação para seus elementos no projeto arquitetônico. | 10d | 2026-07-27 A | 2026-08-07 | 1191SS-9d |  |
| 1356 | Estudo de viabilidade e rotas principais de distribuição de ar. | 10d | 2026-07-27 A | 2026-08-07 | 1191SS-9d |  |
| 1357 | Reserva de espaços técnicos e shafts. | 10d | 2026-07-27 A | 2026-08-07 | 1191SS-9d |  |
| 1358 | Levantamento de cargas especiais provenientes de outras disciplinas. | 10d | 2026-08-10 | 2026-08-21 | 1380, 1392 |  |
| 1359 | **LOD 200 — Validação interdisciplinar e solução preliminar** | 24d | 2026-08-10 | 2026-09-11 |  |  |
| 1360 | Lista preliminar de sistemas HVAC envolvidos (expansão direta, VRF, chillers, ventilação, exaustão). | 24d | 2026-08-10 | 2026-09-11 | 1357 |  |
| 1361 | Planta baixa estimada contendo: pontos de insuflamento e retorno. | 24d | 2026-08-10 | 2026-09-11 | 1357 |  |
| 1362 | Rotas iniciais de dutos, tubulações e drenos. | 24d | 2026-08-10 | 2026-09-11 | 1357 |  |
| 1363 | Planta baixa estimada contendo: unidades internas e externas com posição preliminar. | 24d | 2026-08-10 | 2026-09-11 | 1357 |  |
| 1364 | Aprovação de Conformidade | 3d | 2026-09-09 | 2026-09-11 | 1359FF |  |
| 1365 | Material para entrega ao contrato | 3d | 2026-09-09 | 2026-09-11 | 1359FF |  |
| 1366 | **PCI (Incêndio)** | 34d | 2026-07-27 A | 2026-09-11 |  |  |
| 1367 | **LOD 100 — Premissas, diretrizes e interfaces** | 10d | 2026-07-27 A | 2026-08-07 |  |  |
| 1368 | Estudo e avaliação da arquitetura atendendo as normas competentes de PCI | 10d | 2026-07-27 A | 2026-08-07 | 1191SS-9d |  |
| 1369 | Avaliação do espaço para CMI e Central de Gás. | 10d | 2026-07-27 A | 2026-08-07 | 1191SS-9d |  |
| 1370 | Pontos locação para seus elementos no projeto arquitetônico | 10d | 2026-07-27 A | 2026-08-07 | 1191SS-9d |  |
| 1371 | **LOD 200 — Validação interdisciplinar e solução preliminar** | 24d | 2026-08-10 | 2026-09-11 |  |  |
| 1372 | Definição da classificação da edificação e o risco de incêndio | 24d | 2026-08-10 | 2026-09-11 | 1370 |  |
| 1373 | Cálculos pré-dimensionados dos extintores, hidrantes e bomba. | 24d | 2026-08-10 | 2026-09-11 | 1370 |  |
| 1374 | Avaliação das rotas de fuga, ventilação de CMI e outros elementos de importância para as normas de PCI | 24d | 2026-08-10 | 2026-09-11 | 1370 |  |
| 1375 | Aprovação de Conformidade | 3d | 2026-09-09 | 2026-09-11 | 1371FF |  |
| 1376 | Material para entrega ao contrato | 3d | 2026-09-09 | 2026-09-11 | 1371FF |  |
| 1377 | **Elétrica Baixa Tensão** | 34d | 2026-07-27 A | 2026-09-11 |  |  |
| 1378 | **LOD 100 — Concepção** | 14d | 2026-07-27 A | 2026-08-13 |  |  |
| 1379 | Avaliação e Diretrizes Técnicas para Arquitetura | 4d | 2026-07-27 A | 2026-07-30 | 1191SS-9d |  |
| 1380 | Estimativa de Cargas e Demanda | 7d | 2026-07-27 A | 2026-08-04 | 1191SS-9d |  |
| 1381 | Levantamento de Equipamentos de Outras Disciplinas | 4d | 2026-08-10 | 2026-08-13 | 1355, 1370 |  |
| 1382 | **LOD 200 — Anteprojeto** | 16d | 2026-08-14 | 2026-09-04 |  |  |
| 1383 | TUGs Estimados | 16d | 2026-08-14 | 2026-09-04 | 1380, 1381 |  |
| 1384 | Pontos de Luz Estimados | 16d | 2026-08-14 | 2026-09-04 | 1380, 1381 |  |
| 1385 | TUEs e Quadros Estimados | 16d | 2026-08-14 | 2026-09-04 | 1380, 1381 |  |
| 1386 | LOD 300 - Consolidação e documentação de entrega | 4d | 2026-09-08 | 2026-09-11 | 1382 |  |
| 1387 | Aprovação de Conformidade | 3d | 2026-09-09 | 2026-09-11 | 1386FF |  |
| 1388 | Material para entrega ao contrato | 3d | 2026-09-09 | 2026-09-11 | 1386FF |  |
| 1389 | **Telecom** | 34d | 2026-07-27 A | 2026-09-11 |  |  |
| 1390 | **LOD 100 — Concepção** | 10d | 2026-07-27 A | 2026-08-07 |  |  |
| 1391 | Avaliação e Diretrizes Técnicas para Arquitetura | 10d | 2026-07-27 A | 2026-08-07 | 1191SS-9d |  |
| 1392 | Estimativa de Demanda de Telecomunicações | 10d | 2026-07-27 A | 2026-08-07 | 1191SS-9d |  |
| 1393 | Levantamento de Equipamentos e Interfaces com Outras Disciplinas | 10d | 2026-07-27 A | 2026-08-07 | 1191SS-9d |  |
| 1394 | **LOD 200 — Anteprojeto** | 20d | 2026-08-10 | 2026-09-04 |  |  |
| 1395 | Pontos de Telecomunicações Estimados (Rede, Voz, CFTV e Demais Sistemas) | 10d | 2026-08-10 | 2026-08-21 | 1393 |  |
| 1396 | Racks Estimados | 10d | 2026-08-10 | 2026-08-21 | 1393 |  |
| 1397 | Infraestrutura de Telecomunicações Preliminar | 10d | 2026-08-24 | 2026-09-04 | 1395, 1396 |  |
| 1398 | LOD 300 - Consolidação e documentação de entrega | 4d | 2026-09-08 | 2026-09-11 | 1394 |  |
| 1399 | Aprovação de Conformidade | 3d | 2026-09-09 | 2026-09-11 | 1398FF |  |
| 1400 | Material para entrega ao contrato | 3d | 2026-09-09 | 2026-09-11 | 1398FF |  |
| 1401 | **SPDA** | 34d | 2026-07-27 A | 2026-09-11 |  |  |
| 1402 | **LOD 100 — Concepção** | 10d | 2026-07-27 A | 2026-08-07 |  |  |
| 1403 | Avaliação e Diretrizes Técnicas para Arquitetura | 10d | 2026-07-27 A | 2026-08-07 | 1191SS-9d |  |
| 1404 | Coleta de Informações da Edificação e Análise de Risco (ABNT NBR 5419-2) | 10d | 2026-07-27 A | 2026-08-07 | 1191SS-9d |  |
| 1405 | Estudo Preliminar de Necessidade e Nível de Proteção do SPDA | 10d | 2026-07-27 A | 2026-08-07 | 1191SS-9d |  |
| 1406 | **LOD 200 — Anteprojeto** | 20d | 2026-08-10 | 2026-09-04 |  |  |
| 1407 | Definição da Estratégia de Proteção e Soluções Técnicas | 10d | 2026-08-10 | 2026-08-21 | 1405 |  |
| 1408 | Zoneamento de Captação, Descida e Traçados Preliminares | 10d | 2026-08-24 | 2026-09-04 | 1407 |  |
| 1409 | Estudo de Interferências, Compatibilização e Métodos Construtivos | 10d | 2026-08-24 | 2026-09-04 | 1407 |  |
| 1410 | LOD 300 - Consolidação e documentação de entrega | 4d | 2026-09-08 | 2026-09-11 | 1409 |  |
| 1411 | Aprovação de Conformidade | 3d | 2026-09-09 | 2026-09-11 | 1410FF |  |
| 1412 | Material para entrega ao contrato | 3d | 2026-09-09 | 2026-09-11 | 1410FF |  |
| 1413 | **Energia Renovável** | 34d | 2026-07-27 A | 2026-09-11 |  |  |
| 1414 | **LOD 100 — Concepção** | 10d | 2026-07-27 A | 2026-08-07 |  |  |
| 1415 | Viabilidade e Premissas de Geração | 10d | 2026-07-27 A | 2026-08-07 | 1191SS-9d |  |
| 1416 | Levantamento Preliminar de Áreas e Sombreamento | 10d | 2026-07-27 A | 2026-08-07 | 1191SS-9d |  |
| 1417 | Avaliação e Diretrizes Técnicas para Arquitetônico | 10d | 2026-07-27 A | 2026-08-07 | 1191SS-9d |  |
| 1418 | **LOD 200 — Anteprojeto** | 20d | 2026-08-10 | 2026-09-04 |  |  |
| 1419 | Layout Preliminar de Módulos, Inversores e String Boxes | 20d | 2026-08-10 | 2026-09-04 | 1416 |  |
| 1420 | Infraestrutura e Rotas Técnicas Preliminares (DC/AC e Aterramento) | 20d | 2026-08-10 | 2026-09-04 | 1416 |  |
| 1421 | Critérios Preliminares de Proteção e Estimativa de Quantitativos | 20d | 2026-08-10 | 2026-09-04 | 1416 |  |
| 1422 | LOD 300 - Consolidação e documentação de entrega | 4d | 2026-09-08 | 2026-09-11 | 1418 |  |
| 1423 | Aprovação de Conformidade | 3d | 2026-09-09 | 2026-09-11 | 1422FF |  |
| 1424 | Material para entrega ao contrato | 3d | 2026-09-09 | 2026-09-11 | 1422FF |  |
| 1425 | **007 - Banheiro Externo** | 45d | 2026-07-10 A | 2026-09-11 |  |  |
| 1426 | **Arquitetura** | 45d | 2026-07-10 A | 2026-09-11 |  |  |
| 1427 | **Análise e Compatibilização (caso a gente receba o projeto e precise adequar)** | 31d | 2026-07-10 A | 2026-08-21 |  |  |
| 1428 | Conferir normas de cozinha industrial | 20d | 2026-07-10 | 2026-08-06 | 24FS+5d | start no earlier than 2026-06-01 |
| 1429 | Conferir e fechar alinhamento das paredes | 20d | 2026-07-10 A | 2026-08-06 A | 24FS+5d | start no earlier than 2026-06-01 |
| 1430 | Conferir quantidade de sanitários e cubas de acordo com os setores | 20d | 2026-07-10 A | 2026-08-06 A | 24FS+5d | start no earlier than 2026-06-01 |
| 1431 | Conferir layout | 20d | 2026-07-10 | 2026-08-06 | 24FS+5d | start no earlier than 2026-06-01 |
| 1432 | Conferir e fechar Pisos | 20d | 2026-07-10 A | 2026-08-06 A | 24FS+5d | start no earlier than 2026-06-01 |
| 1433 | Conferir e fechar Esquadrias | 20d | 2026-07-10 A | 2026-08-06 A | 24FS+5d | start no earlier than 2026-06-01 |
| 1434 | Conferir acessibilidade em rampas e sanitários | 20d | 2026-07-10 A | 2026-08-06 A | 24FS+5d | start no earlier than 2026-06-01 |
| 1435 | Conferir nomas técnicas para o dimensionamento dos ambientes - principalmente banheiros e circulações | 20d | 2026-07-10 A | 2026-08-06 A | 24FS+5d | start no earlier than 2026-06-01 |
| 1436 | Conferir normas técnicas para auditórios (se tiver) | 20d | 2026-07-10 | 2026-08-06 | 24FS+5d | start no earlier than 2026-06-01 |
| 1437 | Compatibilização (pedir relatório de análise de projeto para disciplinas de engenharia) | 5d | 2026-08-07 | 2026-08-13 | 1436 |  |
| 1438 | Compatibilizar as rotas de fulga de acordo com as solicitações de PCI | 11d | 2026-08-07 | 2026-08-21 | 1436 |  |
| 1439 | Comatibilizar as prumadas com as equipes de engenharia | 11d | 2026-08-07 | 2026-08-21 | 1436 |  |
| 1440 | Ajustar área dos ambientes conforme solicitado pela equipe de elétrica | 11d | 2026-08-07 | 2026-08-21 | 1436 |  |
| 1441 | **LOD 300 - ANTEPROJETO** | 20d | 2026-08-14 A | 2026-09-11 |  |  |
| 1442 | **Modelagem e compatibilização** | 10d | 2026-08-14 A | 2026-08-27 |  |  |
| 1443 | Ajustar o navegador de projeto conforme o padrão da Quanta - verificar se todas as vistas estão dentro da disciplina correta - alinahr com o líder da OS | 10d | 2026-08-14 | 2026-08-27 | 1437 |  |
| 1444 | Limpar o arquivo e transferir os padões de projeto da Quanta | 10d | 2026-08-14 | 2026-08-27 | 1437 |  |
| 1445 | Criar Worksets (em caso de arquivos colaborados) | 10d | 2026-08-14 | 2026-08-27 | 1437 |  |
| 1446 | Colocar todas as elementos em seus devidos Worksets | 10d | 2026-08-14 | 2026-08-27 | 1437 |  |
| 1447 | Fazer ajustes dos modelos para Colaboração | 10d | 2026-08-14 | 2026-08-27 | 1437 |  |
| 1448 | Mudar os pisos para o padrão da quanta (1º pavimento) | 10d | 2026-08-14 A | 2026-08-27 A | 1437 |  |
| 1449 | Mudar as parades para o padão da quanta (1º pavimento) | 10d | 2026-08-14 A | 2026-08-27 A | 1437 |  |
| 1450 | Mudar as portas para o padão da quanta (1º pavimento) | 10d | 2026-08-14 A | 2026-08-27 A | 1437 |  |
| 1451 | Mudar as soleiras para o padão da quanta | 10d | 2026-08-14 A | 2026-08-27 A | 1437 |  |
| 1452 | Mudar as bancadas para o padão da Quanta (1º pavimento) | 10d | 2026-08-14 A | 2026-08-27 A | 1437 |  |
| 1453 | Mudar metais para padrão da Quanta (1º pavimento) | 10d | 2026-08-14 A | 2026-08-27 A | 1437 |  |
| 1454 | Mudar demais acabamentos para padrão o padrão da Quanta | 10d | 2026-08-14 A | 2026-08-27 A | 1437 |  |
| 1455 | Ajustar ralos das áreas molhadas (1º pavimento) | 10d | 2026-08-14 | 2026-08-27 | 1437 |  |
| 1456 | Se vier as tomadas - excluir (1º Pavimento) | 10d | 2026-08-14 | 2026-08-27 | 1437 |  |
| 1457 | Se vier as luminárias - excluir (1° pavimento) | 10d | 2026-08-14 | 2026-08-27 | 1437 |  |
| 1458 | Inserir caixa d'água - Conferir pré dimensionamento com a engenharia | 10d | 2026-08-14 | 2026-08-27 | 1437 |  |
| 1459 | Separar camadas dos pisos - leje 10cm (1° camada), contrapiso 3cm+argamassa 2cm+rev 1cm, (2°camada) | 10d | 2026-08-14 A | 2026-08-27 A | 1437 |  |
| 1460 | Descrição dos elementos da edificação | 10d | 2026-08-14 | 2026-08-27 | 1437 |  |
| 1461 | Descrição dos componentes construtivos e materiais de construção | 10d | 2026-08-14 | 2026-08-27 | 1437 |  |
| 1462 | Lista de pranchas anexas e documentos | 10d | 2026-08-14 | 2026-08-27 | 1437 |  |
| 1463 | Vias de acesso ao conjunto, arruamento, logradouros adjacentes e calçadas com os respectivos equipamentos urbanos; | 10d | 2026-08-14 | 2026-08-27 | 1437 |  |
| 1464 | Platôs e taludes principais; | 10d | 2026-08-14 | 2026-08-27 | 1437 |  |
| 1465 | Perímetro do terreno, recuos e afastamentos; | 10d | 2026-08-14 | 2026-08-27 | 1437 |  |
| 1466 | Indicação das áreas a serem edificadas com o contorno da cobertura das edificações, estacionamentos e áreas permeáveis/impermeáveis; | 10d | 2026-08-14 | 2026-08-27 | 1437 |  |
| 1467 | Denominação das edificações, blocos ou espaços; | 10d | 2026-08-14 | 2026-08-27 | 1437 |  |
| 1468 | Cotas gerais | 10d | 2026-08-14 | 2026-08-27 | 1437 |  |
| 1469 | Cotas de nível principal. | 10d | 2026-08-14 | 2026-08-27 | 1437 |  |
| 1470 | Quadros de áreas | 10d | 2026-08-14 | 2026-08-27 | 1437 |  |
| 1471 | Planta com as cotas de nível projetadas e existentes | 1d | 2026-08-28 | 2026-08-28 | 1470 |  |
| 1472 | **Plantas baixas (se tiver mais de um pavimento, duplicar bloco)** | 1d | 2026-08-31 | 2026-08-31 |  |  |
| 1473 | Indicar simbologias de representação gráfica, conforme NBR 6492:2021; | 1d | 2026-08-31 | 2026-08-31 | 1471 |  |
| 1474 | Compatibilização (verificar se está tudo conforme as normas e alinhar com o restante das disciplinas de engenharia) | 1d | 2026-08-31 | 2026-08-31 | 1471 |  |
| 1475 | Compatibilização (deixar tudo conforme padrão Quanta) | 1d | 2026-08-31 | 2026-08-31 | 1471 |  |
| 1476 | Indicação de Norte; | 1d | 2026-08-31 | 2026-08-31 | 1471 |  |
| 1477 | Indicação de Escala; | 1d | 2026-08-31 | 2026-08-31 | 1471 |  |
| 1478 | Indicação de Acessos; | 1d | 2026-08-31 | 2026-08-31 | 1471 |  |
| 1479 | Elementos de vedação internos e externos; | 1d | 2026-08-31 | 2026-08-31 | 1471 |  |
| 1480 | Esquadrias (sem código e sem quadro); | 1d | 2026-08-31 | 2026-08-31 | 1471 |  |
| 1481 | Elementos estruturais principais; | 1d | 2026-08-31 | 2026-08-31 | 1471 |  |
| 1482 | Identificação dos ambientes e espaços (internos e externos); | 1d | 2026-08-31 | 2026-08-31 | 1471 |  |
| 1483 | Espaços de circulação internos e externos; | 1d | 2026-08-31 | 2026-08-31 | 1471 |  |
| 1484 | Áreas de serviço, funcionais e técnicas (internos e externos); | 1d | 2026-08-31 | 2026-08-31 | 1471 |  |
| 1485 | Projeções de níveis superiores; | 1d | 2026-08-31 | 2026-08-31 | 1471 |  |
| 1486 | Cotas gerais | 1d | 2026-08-31 | 2026-08-31 | 1471 |  |
| 1487 | Cotas de nível principal. | 1d | 2026-08-31 | 2026-08-31 | 1471 |  |
| 1488 | Quadro de áreas | 1d | 2026-08-31 | 2026-08-31 | 1471 |  |
| 1489 | **Planta das coberturas** | 1d | 2026-09-01 | 2026-09-01 |  |  |
| 1490 | Indicação do Norte | 1d | 2026-09-01 | 2026-09-01 | 1488 |  |
| 1491 | Indicação de escala | 1d | 2026-09-01 | 2026-09-01 | 1488 |  |
| 1492 | Curvas de nível | 1d | 2026-09-01 | 2026-09-01 | 1488 |  |
| 1493 | Indicação de Acessos; | 1d | 2026-09-01 | 2026-09-01 | 1488 |  |
| 1494 | Estacionamento e áreas cobertas | 1d | 2026-09-01 | 2026-09-01 | 1488 |  |
| 1495 | Cobertura das edificações | 1d | 2026-09-01 | 2026-09-01 | 1488 |  |
| 1496 | Sentido de escoamento das águas pluviais e inclinação | 1d | 2026-09-01 | 2026-09-01 | 1488 |  |
| 1497 | Cotas gerais | 1d | 2026-09-01 | 2026-09-01 | 1488 |  |
| 1498 | Cotas de nível principal | 1d | 2026-09-01 | 2026-09-01 | 1488 |  |
| 1499 | **Cortes longitudinais** | 1d | 2026-09-02 | 2026-09-02 |  |  |
| 1500 | Indicar simbologias de representação gráfica, conforme NBR 6492:2021; | 1d | 2026-09-02 | 2026-09-02 | 1498 |  |
| 1501 | Indicação de Escala; | 1d | 2026-09-02 | 2026-09-02 | 1498 |  |
| 1502 | Elementos estruturais principais; | 1d | 2026-09-02 | 2026-09-02 | 1498 |  |
| 1503 | Elementos de vedação internos e externos; | 1d | 2026-09-02 | 2026-09-02 | 1498 |  |
| 1504 | Esquadrias; | 1d | 2026-09-02 | 2026-09-02 | 1498 |  |
| 1505 | Identificação dos ambientes; | 1d | 2026-09-02 | 2026-09-02 | 1498 |  |
| 1506 | Cobertura com indicação da respectiva inclinação; | 1d | 2026-09-02 | 2026-09-02 | 1498 |  |
| 1507 | Cotas gerais; | 1d | 2026-09-02 | 2026-09-02 | 1498 |  |
| 1508 | Cotas de nível principal; | 1d | 2026-09-02 | 2026-09-02 | 1498 |  |
| 1509 | Eixos do projeto; | 1d | 2026-09-02 | 2026-09-02 | 1498 |  |
| 1510 | Relevo construído; | 1d | 2026-09-02 | 2026-09-02 | 1498 |  |
| 1511 | Projeção da topografia natural. | 1d | 2026-09-02 | 2026-09-02 | 1498 |  |
| 1512 | **Cortes transversais** | 1d | 2026-09-03 | 2026-09-03 |  |  |
| 1513 | Indicar simbologias de representação gráfica, conforme NBR 6492:2021; | 1d | 2026-09-03 | 2026-09-03 | 1511 |  |
| 1514 | Indicação de Escala; | 1d | 2026-09-03 | 2026-09-03 | 1511 |  |
| 1515 | Elementos estruturais principais; | 1d | 2026-09-03 | 2026-09-03 | 1511 |  |
| 1516 | Elementos de vedação internos e externos; | 1d | 2026-09-03 | 2026-09-03 | 1511 |  |
| 1517 | Esquadrias; | 1d | 2026-09-03 | 2026-09-03 | 1511 |  |
| 1518 | Identificação dos ambientes; | 1d | 2026-09-03 | 2026-09-03 | 1511 |  |
| 1519 | Cobertura com indicação da respectiva inclinação; | 1d | 2026-09-03 | 2026-09-03 | 1511 |  |
| 1520 | Cotas gerais; | 1d | 2026-09-03 | 2026-09-03 | 1511 |  |
| 1521 | Cotas de nível principal; | 1d | 2026-09-03 | 2026-09-03 | 1511 |  |
| 1522 | Eixos do projeto; | 1d | 2026-09-03 | 2026-09-03 | 1511 |  |
| 1523 | Relevo construído; | 1d | 2026-09-03 | 2026-09-03 | 1511 |  |
| 1524 | Projeção da topografia natural | 1d | 2026-09-03 | 2026-09-03 | 1511 |  |
| 1525 | **Elevações** | 1d | 2026-09-04 | 2026-09-04 |  |  |
| 1526 | Indicar simbologias de representação gráfica, conforme NBR 6492:2021; | 1d | 2026-09-04 | 2026-09-04 | 1524 |  |
| 1527 | Indicação de Escala; | 1d | 2026-09-04 | 2026-09-04 | 1524 |  |
| 1528 | Elementos estruturais principais; | 1d | 2026-09-04 | 2026-09-04 | 1524 |  |
| 1529 | Elementos de vedação internos e externos; | 1d | 2026-09-04 | 2026-09-04 | 1524 |  |
| 1530 | Esquadrias (sem código e sem quadro); | 1d | 2026-09-04 | 2026-09-04 | 1524 |  |
| 1531 | Relevo construído; | 1d | 2026-09-04 | 2026-09-04 | 1524 |  |
| 1532 | Cotas gerais; | 1d | 2026-09-04 | 2026-09-04 | 1524 |  |
| 1533 | Cotas de nível principais; | 1d | 2026-09-04 | 2026-09-04 | 1524 |  |
| 1534 | Cobertura (quando aparente). | 1d | 2026-09-04 | 2026-09-04 | 1524 |  |
| 1535 | Memorial Descritivo | 4d | 2026-09-08 | 2026-09-11 | 1525 |  |
| 1536 | Aprovação de Conformidade | 3d | 2026-09-09 | 2026-09-11 | 1535FF |  |
| 1537 | Material para entrega ao contrato | 3d | 2026-09-09 | 2026-09-11 | 1535FF |  |
| 1538 | **Engenharia** | 34d | 2026-07-27 A | 2026-09-11 |  |  |
| 1539 | **Estrutura** | 34d | 2026-07-27 A | 2026-09-11 |  |  |
| 1540 | **LOD 100 — Premissas, diretrizes e interfaces** | 7d | 2026-07-27 A | 2026-08-04 |  |  |
| 1541 | Levantamento de tipos de cargas globais estimadas (permanentes, acidentais, vento e especiais). | 2d | 2026-07-27 A | 2026-07-28 | 1437SS-9d |  |
| 1542 | Estudo volumétrico com modulação inicial de pilares, vigas e lajes. Entendendo vãos e desafios | 5d | 2026-07-27 A | 2026-07-31 | 1437SS-9d |  |
| 1543 | Localização aproximada de elementos estruturais principais. Avaliando vãos e estudando posições | 2d | 2026-07-27 A | 2026-07-28 | 1437SS-9d |  |
| 1544 | Estudo de viabilidade técnica e construtiva. | 3d | 2026-07-29 | 2026-07-31 | 1543 |  |
| 1545 | Definição preliminar do sistema estrutural (concreto armado, metálica ou mista). | 3d | 2026-07-29 | 2026-07-31 | 1543 |  |
| 1546 | Estimativa preliminar de tipologias de fundações (sapatas, blocos, estacas). | 2d | 2026-08-03 | 2026-08-04 | 1544 |  |
| 1547 | Previsão de áreas técnicas, casas de máquinas, reservatórios elevados e estrutura de cobertura. | 2d | 2026-08-03 | 2026-08-04 | 1544 |  |
| 1548 | **LOD 200 — Validação interdisciplinar e solução preliminar** | 20d | 2026-08-05 | 2026-09-01 |  |  |
| 1549 | Lista preliminar de cargas e ações para dimensionamento. | 5d | 2026-08-05 | 2026-08-11 | 1547 |  |
| 1550 | Definição preliminar de alturas de pavimentos e níveis de fundação. | 5d | 2026-08-05 | 2026-08-11 | 1547 |  |
| 1551 | Indicação aproximada do sistema de cobertura (tesouras, treliças, vigamento metálico ou concreto). | 5d | 2026-08-05 | 2026-08-11 | 1547 |  |
| 1552 | Modelagem genérica de pilares, vigas, lajes e fundações. | 5d | 2026-08-12 | 2026-08-18 | 1549 |  |
| 1553 | Traçado preliminar de elementos especiais (escadas, rampas estruturais, reservatórios). | 5d | 2026-08-12 | 2026-08-18 | 1549 |  |
| 1554 | Arquivo IFC, plantas de forma e planta de locação | 5d | 2026-08-12 | 2026-08-18 | 1549 |  |
| 1555 | Inserção de fundações com tipologia e dimensões preliminares. | 5d | 2026-08-19 | 2026-08-25 | 1553 |  |
| 1556 | Compatibilização inicial com arquitetura e demais disciplinas. | 5d | 2026-08-19 | 2026-08-25 | 1554 |  |
| 1557 | Indicação de passagens de infraestrutura (shafts, aberturas em lajes e vigas). | 5d | 2026-08-19 | 2026-08-25 | 1554 |  |
| 1558 | Modelagem assertiva de elementos principais com dimensões aproximadas (largura, altura, espessura). | 10d | 2026-08-19 | 2026-09-01 | 1554 |  |
| 1559 | Modelagem estimada de armaduras principais (em nível de concepção). | 5d | 2026-08-26 | 2026-09-01 | 1558FF |  |
| 1560 | **LOD 300 - Consolidação e documentação de entrega** | 7d | 2026-09-02 | 2026-09-11 |  |  |
| 1561 | Indicação de níveis e cotas exatas. | 7d | 2026-09-02 | 2026-09-11 | 1558, 1559 |  |
| 1562 | Quadro de cargas atualizado. | 7d | 2026-09-02 | 2026-09-11 | 1558, 1559 |  |
| 1563 | Dimensionamento final de fundações conforme sondagem e cálculo estrutural. | 7d | 2026-09-02 | 2026-09-11 | 1558, 1559 |  |
| 1564 | Definição final dos elementos da cobertura (treliças, vigas, chapas, purlins). | 7d | 2026-09-02 | 2026-09-11 | 1558, 1559 |  |
| 1565 | Compatibilização final com arquitetura e instalações (aberturas, embutidos e passagens). | 7d | 2026-09-02 | 2026-09-11 | 1558, 1559 |  |
| 1566 | Modelagem definitiva de pilares, vigas, lajes, blocos, sapatas e estacas. | 7d | 2026-09-02 | 2026-09-11 | 1558, 1559 |  |
| 1567 | Planta estrutural com todos os elementos identificados. | 7d | 2026-09-02 | 2026-09-11 | 1558, 1559 |  |
| 1568 | Memorial descritivo contendo: objetivos, justificativa, descrição do sistema, concepção de fundações/cobertura, especificações e quadro de cargas. | 7d | 2026-09-02 | 2026-09-11 | 1558, 1559 |  |
| 1569 | Normas técnicas utilizadas (NBR 6118, 6120, 6122, 8800, etc.). | 7d | 2026-09-02 | 2026-09-11 | 1558, 1559 |  |
| 1570 | Consolidar documentação de entrega e emissão formal da disciplina | 7d | 2026-09-02 | 2026-09-11 | 1558, 1559 |  |
| 1571 | Aprovação de Conformidade | 3d | 2026-09-09 | 2026-09-11 | 1560FF |  |
| 1572 | Material para entrega ao contrato | 3d | 2026-09-09 | 2026-09-11 | 1560FF |  |
| 1573 | **Hidrossanitário** | 34d | 2026-07-27 A | 2026-09-11 |  |  |
| 1574 | **LOD 100 — Premissas, diretrizes e interfaces** | 8d | 2026-07-27 A | 2026-08-05 |  |  |
| 1575 | Memorial preliminar | 8d | 2026-07-27 A | 2026-08-05 | 1437SS-9d |  |
| 1576 | Indicação de áreas técnicas | 6d | 2026-07-27 A | 2026-08-03 | 1437SS-9d |  |
| 1577 | Planta baixa com traçado conceitual | 6d | 2026-07-27 A | 2026-08-03 | 1437SS-9d |  |
| 1578 | Pontos de consumo principais e coletas sanitárias | 6d | 2026-07-27 A | 2026-08-03 | 1437SS-9d |  |
| 1579 | Classificação de uso | 8d | 2026-07-27 A | 2026-08-05 | 1437SS-9d |  |
| 1580 | Diretrizes de espaço | 8d | 2026-07-27 A | 2026-08-05 | 1437SS-9d |  |
| 1581 | Estimativa de demanda ou população de uso | 8d | 2026-07-27 A | 2026-08-05 | 1437SS-9d |  |
| 1582 | Levantamento de elementos especiais dentre outras disciplinas de Engenharia e Arquitetura | 8d | 2026-07-27 A | 2026-08-05 | 1437SS-9d |  |
| 1583 | **LOD 200 — Validação interdisciplinar e solução preliminar** | 20d | 2026-08-06 | 2026-09-02 |  |  |
| 1584 | Critérios normativos adotados (ABNT, concessionárias, etc.) | 20d | 2026-08-06 | 2026-09-02 | 1582 |  |
| 1585 | Informações de demanda na concessionária (DPE ou AVT Aviso de Viabilidade Técnica) | 20d | 2026-08-06 | 2026-09-02 | 1584SS |  |
| 1586 | Recebimento e Análise de Sondagem (permeabilidade ou percolação) | 20d | 2026-08-06 | 2026-09-02 | 1584SS |  |
| 1587 | Recebimento e Análise de Topografia | 20d | 2026-08-06 | 2026-09-02 | 1584SS |  |
| 1588 | Estudo de viabilidade técnica, econômica e ambiental | 20d | 2026-08-06 | 2026-09-02 | 1584SS |  |
| 1589 | Lista preliminar de sistemas envolvidos. | 20d | 2026-08-06 | 2026-09-02 | 1582 |  |
| 1590 | Planta baixa e cortes estimada contendo: - Traçado preliminar de barrilete, ramais, colunas - Diâmetros estimados - Localização aproximada das bombas e unidades de tratamento e reúso - Localização do ramal predial de água e esgoto - Localização aproximada | 20d | 2026-08-06 | 2026-09-02 | 1582 |  |
| 1591 | **LOD 300 - Consolidação e documentação de entrega** | 6d | 2026-09-03 | 2026-09-11 |  |  |
| 1592 | Planta, corte e detalhe isométrico contendo: - Modelagem detalhada com diâmetros, cotas e inclinações definitivas (barriletes, colunas, ramais) - Quantitativos e especificação técnica dos materiais (tubos, conexões, reservatórios, registros e válvulas com | 6d | 2026-09-03 | 2026-09-11 | 1590 |  |
| 1593 | Memorial descritivo | 3d | 2026-09-09 | 2026-09-11 | 1592FF |  |
| 1594 | Memória de cálculo (pressão, vazão, diâmetros, perda de carga). | 3d | 2026-09-09 | 2026-09-11 | 1590, 1592FF |  |
| 1595 | Aprovação de Conformidade | 3d | 2026-09-09 | 2026-09-11 | 1591FF |  |
| 1596 | Material para entrega ao contrato | 3d | 2026-09-09 | 2026-09-11 | 1591FF |  |
| 1597 | **AVAC** | 34d | 2026-07-27 A | 2026-09-11 |  |  |
| 1598 | **LOD 100 — Premissas, diretrizes e interfaces** | 20d | 2026-07-27 A | 2026-08-21 |  |  |
| 1599 | Estimativa de carga térmica por ambiente. | 10d | 2026-07-27 A | 2026-08-07 | 1437SS-9d |  |
| 1600 | Localização preliminar de unidades de tratamento de ar, condensadoras e exaustores. | 10d | 2026-07-27 A | 2026-08-07 | 1437SS-9d |  |
| 1601 | Pontos locação para seus elementos no projeto arquitetônico. | 10d | 2026-07-27 A | 2026-08-07 | 1437SS-9d |  |
| 1602 | Estudo de viabilidade e rotas principais de distribuição de ar. | 10d | 2026-07-27 A | 2026-08-07 | 1437SS-9d |  |
| 1603 | Reserva de espaços técnicos e shafts. | 10d | 2026-07-27 A | 2026-08-07 | 1437SS-9d |  |
| 1604 | Levantamento de cargas especiais provenientes de outras disciplinas. | 10d | 2026-08-10 | 2026-08-21 | 1626, 1638 |  |
| 1605 | **LOD 200 — Validação interdisciplinar e solução preliminar** | 24d | 2026-08-10 | 2026-09-11 |  |  |
| 1606 | Lista preliminar de sistemas HVAC envolvidos (expansão direta, VRF, chillers, ventilação, exaustão). | 24d | 2026-08-10 | 2026-09-11 | 1603 |  |
| 1607 | Planta baixa estimada contendo: pontos de insuflamento e retorno. | 24d | 2026-08-10 | 2026-09-11 | 1603 |  |
| 1608 | Rotas iniciais de dutos, tubulações e drenos. | 24d | 2026-08-10 | 2026-09-11 | 1603 |  |
| 1609 | Planta baixa estimada contendo: unidades internas e externas com posição preliminar. | 24d | 2026-08-10 | 2026-09-11 | 1603 |  |
| 1610 | Aprovação de Conformidade | 3d | 2026-09-09 | 2026-09-11 | 1605FF |  |
| 1611 | Material para entrega ao contrato | 3d | 2026-09-09 | 2026-09-11 | 1605FF |  |
| 1612 | **PCI (Incêndio)** | 34d | 2026-07-27 A | 2026-09-11 |  |  |
| 1613 | **LOD 100 — Premissas, diretrizes e interfaces** | 10d | 2026-07-27 A | 2026-08-07 |  |  |
| 1614 | Estudo e avaliação da arquitetura atendendo as normas competentes de PCI | 10d | 2026-07-27 A | 2026-08-07 | 1437SS-9d |  |
| 1615 | Avaliação do espaço para CMI e Central de Gás. | 10d | 2026-07-27 A | 2026-08-07 | 1437SS-9d |  |
| 1616 | Pontos locação para seus elementos no projeto arquitetônico | 10d | 2026-07-27 A | 2026-08-07 | 1437SS-9d |  |
| 1617 | **LOD 200 — Validação interdisciplinar e solução preliminar** | 24d | 2026-08-10 | 2026-09-11 |  |  |
| 1618 | Definição da classificação da edificação e o risco de incêndio | 24d | 2026-08-10 | 2026-09-11 | 1616 |  |
| 1619 | Cálculos pré-dimensionados dos extintores, hidrantes e bomba. | 24d | 2026-08-10 | 2026-09-11 | 1616 |  |
| 1620 | Avaliação das rotas de fuga, ventilação de CMI e outros elementos de importância para as normas de PCI | 24d | 2026-08-10 | 2026-09-11 | 1616 |  |
| 1621 | Aprovação de Conformidade | 3d | 2026-09-09 | 2026-09-11 | 1617FF |  |
| 1622 | Material para entrega ao contrato | 3d | 2026-09-09 | 2026-09-11 | 1617FF |  |
| 1623 | **Elétrica Baixa Tensão** | 34d | 2026-07-27 A | 2026-09-11 |  |  |
| 1624 | **LOD 100 — Concepção** | 14d | 2026-07-27 A | 2026-08-13 |  |  |
| 1625 | Avaliação e Diretrizes Técnicas para Arquitetura | 4d | 2026-07-27 A | 2026-07-30 | 1437SS-9d |  |
| 1626 | Estimativa de Cargas e Demanda | 7d | 2026-07-27 A | 2026-08-04 | 1437SS-9d |  |
| 1627 | Levantamento de Equipamentos de Outras Disciplinas | 4d | 2026-08-10 | 2026-08-13 | 1601, 1616 |  |
| 1628 | **LOD 200 — Anteprojeto** | 16d | 2026-08-14 | 2026-09-04 |  |  |
| 1629 | TUGs Estimados | 16d | 2026-08-14 | 2026-09-04 | 1626, 1627 |  |
| 1630 | Pontos de Luz Estimados | 16d | 2026-08-14 | 2026-09-04 | 1626, 1627 |  |
| 1631 | TUEs e Quadros Estimados | 16d | 2026-08-14 | 2026-09-04 | 1626, 1627 |  |
| 1632 | LOD 300 - Consolidação e documentação de entrega | 4d | 2026-09-08 | 2026-09-11 | 1628 |  |
| 1633 | Aprovação de Conformidade | 3d | 2026-09-09 | 2026-09-11 | 1632FF |  |
| 1634 | Material para entrega ao contrato | 3d | 2026-09-09 | 2026-09-11 | 1632FF |  |
| 1635 | **Telecom** | 34d | 2026-07-27 A | 2026-09-11 |  |  |
| 1636 | **LOD 100 — Concepção** | 10d | 2026-07-27 A | 2026-08-07 |  |  |
| 1637 | Avaliação e Diretrizes Técnicas para Arquitetura | 10d | 2026-07-27 A | 2026-08-07 | 1437SS-9d |  |
| 1638 | Estimativa de Demanda de Telecomunicações | 10d | 2026-07-27 A | 2026-08-07 | 1437SS-9d |  |
| 1639 | Levantamento de Equipamentos e Interfaces com Outras Disciplinas | 10d | 2026-07-27 A | 2026-08-07 | 1437SS-9d |  |
| 1640 | **LOD 200 — Anteprojeto** | 20d | 2026-08-10 | 2026-09-04 |  |  |
| 1641 | Pontos de Telecomunicações Estimados (Rede, Voz, CFTV e Demais Sistemas) | 10d | 2026-08-10 | 2026-08-21 | 1639 |  |
| 1642 | Racks Estimados | 10d | 2026-08-10 | 2026-08-21 | 1639 |  |
| 1643 | Infraestrutura de Telecomunicações Preliminar | 10d | 2026-08-24 | 2026-09-04 | 1641, 1642 |  |
| 1644 | LOD 300 - Consolidação e documentação de entrega | 4d | 2026-09-08 | 2026-09-11 | 1640 |  |
| 1645 | Aprovação de Conformidade | 3d | 2026-09-09 | 2026-09-11 | 1644FF |  |
| 1646 | Material para entrega ao contrato | 3d | 2026-09-09 | 2026-09-11 | 1644FF |  |
| 1647 | **SPDA** | 34d | 2026-07-27 A | 2026-09-11 |  |  |
| 1648 | **LOD 100 — Concepção** | 10d | 2026-07-27 A | 2026-08-07 |  |  |
| 1649 | Avaliação e Diretrizes Técnicas para Arquitetura | 10d | 2026-07-27 A | 2026-08-07 | 1437SS-9d |  |
| 1650 | Coleta de Informações da Edificação e Análise de Risco (ABNT NBR 5419-2) | 10d | 2026-07-27 A | 2026-08-07 | 1437SS-9d |  |
| 1651 | Estudo Preliminar de Necessidade e Nível de Proteção do SPDA | 10d | 2026-07-27 A | 2026-08-07 | 1437SS-9d |  |
| 1652 | **LOD 200 — Anteprojeto** | 20d | 2026-08-10 | 2026-09-04 |  |  |
| 1653 | Definição da Estratégia de Proteção e Soluções Técnicas | 10d | 2026-08-10 | 2026-08-21 | 1651 |  |
| 1654 | Zoneamento de Captação, Descida e Traçados Preliminares | 10d | 2026-08-24 | 2026-09-04 | 1653 |  |
| 1655 | Estudo de Interferências, Compatibilização e Métodos Construtivos | 10d | 2026-08-24 | 2026-09-04 | 1653 |  |
| 1656 | LOD 300 - Consolidação e documentação de entrega | 4d | 2026-09-08 | 2026-09-11 | 1655 |  |
| 1657 | Aprovação de Conformidade | 3d | 2026-09-09 | 2026-09-11 | 1656FF |  |
| 1658 | Material para entrega ao contrato | 3d | 2026-09-09 | 2026-09-11 | 1656FF |  |
| 1659 | **Energia Renovável** | 34d | 2026-07-27 A | 2026-09-11 |  |  |
| 1660 | **LOD 100 — Concepção** | 10d | 2026-07-27 A | 2026-08-07 |  |  |
| 1661 | Viabilidade e Premissas de Geração | 10d | 2026-07-27 A | 2026-08-07 | 1437SS-9d |  |
| 1662 | Levantamento Preliminar de Áreas e Sombreamento | 10d | 2026-07-27 A | 2026-08-07 | 1437SS-9d |  |
| 1663 | Avaliação e Diretrizes Técnicas para Arquitetônico | 10d | 2026-07-27 A | 2026-08-07 | 1437SS-9d |  |
| 1664 | **LOD 200 — Anteprojeto** | 20d | 2026-08-10 | 2026-09-04 |  |  |
| 1665 | Layout Preliminar de Módulos, Inversores e String Boxes | 20d | 2026-08-10 | 2026-09-04 | 1662 |  |
| 1666 | Infraestrutura e Rotas Técnicas Preliminares (DC/AC e Aterramento) | 20d | 2026-08-10 | 2026-09-04 | 1662 |  |
| 1667 | Critérios Preliminares de Proteção e Estimativa de Quantitativos | 20d | 2026-08-10 | 2026-09-04 | 1662 |  |
| 1668 | LOD 300 - Consolidação e documentação de entrega | 4d | 2026-09-08 | 2026-09-11 | 1664 |  |
| 1669 | Aprovação de Conformidade | 3d | 2026-09-09 | 2026-09-11 | 1668FF |  |
| 1670 | Material para entrega ao contrato | 3d | 2026-09-09 | 2026-09-11 | 1668FF |  |

Removed: 28 Levantamento de Dados e Visita de Campo (arquitetônico, scanner, legislação, entrevistas...); 52 Relatório; 107 Recebimento da Topografia; 108 Recebimento da Sondagem; 109 Levantamento de Dados (ambientais locais, urbanísticos, legislativos, plantas cadastrais da vizinhança etc.); 111 Analisar topografia; 112 Criação e georreferenciamento e ajuste de norte nos arquivos federado, arquitetura, implantação, layout; 113 Analise geral do projeto; 128 Recebimento da Sondagem; 129 Levantamento de Dados (ambientais locais, urbanísticos, legislativos, plantas cadastrais da vizinhança etc.); 155 Ajuste topografia (platos e taludes principais); 162 Indicação de Norte; 167 Perímetro do terreno; 176 Plantas baixas (igual ou superior a 1:100); 186 Projeção de níveis superiores e da cobertura; 190 Cortes gerais (longitudinais e transversais); 212 Memorial Justificativo (opcional - pactuar com o gestor)

Changed:

| ID | Task | Start | Finish | Duration | Complete | Total float | Predecessors | Other |
| --- | --- | --- | --- | --- | --- | --- | --- | --- |
| 1 | **P0 - Estudos Iniciais/Plano de Trabalho** | 2026-05-07 → 2026-05-04 A (-3d) | 2026-06-29 → 2026-07-31 A (+32d) | 37d → 64d | 0% → 100% | 24d → none |  | baseline start none → 2026-05-04; baseline finish none → 2026-07-31 |
| 2 | Marco de Abertura de OS | 2026-05-07 → 2026-05-04 A (-3d) | 2026-05-07 → 2026-05-04 A (-3d) |  | 0% → 100% | 24d → none |  | constraint none → start no earlier than 2026-05-04; baseline start none → 2026-05-04; baseline finish none → 2026-05-04 |
| 3 | Recebimento de dados da contratante | 2026-05-07 → 2026-05-04 A (-3d) | 2026-05-07 → 2026-05-04 A (-3d) |  | 0% → 100% | 60d → none |  | constraint none → start no earlier than 2026-05-04; baseline start none → 2026-05-04; baseline finish none → 2026-05-04 |
| 4 | Recebimento de dados do projeto | 2026-05-07 → 2026-06-09 A (+33d) | 2026-05-07 → 2026-06-16 A (+40d) | 1d → 6d | 0% → 100% | 60d → none |  | constraint none → start no earlier than 2026-06-09; baseline start none → 2026-06-09; baseline finish none → 2026-06-16 |
| 5 | **Definições do projeto** | 2026-05-07 → 2026-06-09 A (+33d) | 2026-05-07 → 2026-06-09 A (+33d) |  | 0% → 100% | 61d → none |  | baseline start none → 2026-06-09; baseline finish none → 2026-06-09 |
| 6 | Definição de escopo | 2026-05-07 → 2026-06-09 A (+33d) | 2026-05-07 → 2026-06-09 A (+33d) |  | 0% → 100% | 61d → none |  | constraint none → start no earlier than 2026-06-09; baseline start none → 2026-06-09; baseline finish none → 2026-06-09 |
| 7 | Aprovação do escopo (contrato) | 2026-05-07 → 2026-06-09 A (+33d) | 2026-05-07 → 2026-06-09 A (+33d) |  | 0% → 100% | 61d → none |  | constraint none → start no earlier than 2026-06-09; baseline start none → 2026-06-09; baseline finish none → 2026-06-09 |
| 8 | Definição de responsabilidades | 2026-05-07 → 2026-06-09 A (+33d) | 2026-05-07 → 2026-06-09 A (+33d) |  | 0% → 100% | 61d → none |  | constraint none → start no earlier than 2026-06-09; baseline start none → 2026-06-09; baseline finish none → 2026-06-09 |
| 9 | Definição de comunicação | 2026-05-07 → 2026-06-09 A (+33d) | 2026-05-07 → 2026-06-09 A (+33d) |  | 0% → 100% | 61d → none |  | constraint none → start no earlier than 2026-06-09; baseline start none → 2026-06-09; baseline finish none → 2026-06-09 |
| 10 | Forma de gerenciamento do escopo | 2026-05-07 → 2026-06-09 A (+33d) | 2026-05-07 → 2026-06-09 A (+33d) |  | 0% → 100% | 61d → none |  | constraint none → start no earlier than 2026-06-09; baseline start none → 2026-06-09; baseline finish none → 2026-06-09 |
| 11 | Requisitos de qualidade | 2026-05-07 → 2026-06-09 A (+33d) | 2026-05-07 → 2026-06-09 A (+33d) |  | 0% → 100% | 61d → none |  | constraint none → start no earlier than 2026-06-09; baseline start none → 2026-06-09; baseline finish none → 2026-06-09 |
| 12 | Forma de gerenciamento da qualidade | 2026-05-07 → 2026-06-09 A (+33d) | 2026-05-07 → 2026-06-09 A (+33d) |  | 0% → 100% | 61d → none |  | constraint none → start no earlier than 2026-06-09; baseline start none → 2026-06-09; baseline finish none → 2026-06-09 |
| 13 | **Definição de Subcontratadas necessárias** | 2026-05-07 → 2026-07-06 A (+60d) | 2026-05-18 → 2026-07-21 A (+64d) | 8d → 12d | 0% → 100% | 53d → none |  | baseline start none → 2026-07-06; baseline finish none → 2026-07-21 |
| 14 | Definir quais diciplinas e edificações devem ser cotadas externamente | 2026-05-07 → 2026-07-06 A (+60d) | 2026-05-08 → 2026-07-08 A (+61d) | 2d → 3d | 0% → 100% | 53d → none |  | constraint none → start no earlier than 2026-07-06; baseline start none → 2026-07-06; baseline finish none → 2026-07-08 |
| 15 | Envio e Resposta dos fornecedores | 2026-05-11 → 2026-07-09 A (+59d) | 2026-05-12 → 2026-07-13 A (+62d) | 2d → 3d | 0% → 100% | 53d → none |  | baseline start none → 2026-07-09; baseline finish none → 2026-07-13 |
| 16 | Seleção das subcontratações | 2026-05-13 → 2026-07-14 A (+62d) | 2026-05-14 → 2026-07-16 A (+63d) | 2d → 3d | 0% → 100% | 53d → none |  | baseline start none → 2026-07-14; baseline finish none → 2026-07-16 |
| 17 | Reunião Kickoff - Subcontratadas | 2026-05-15 → 2026-07-17 A (+63d) | 2026-05-18 → 2026-07-21 A (+64d) | 2d → 3d | 0% → 100% | 53d → none |  | baseline start none → 2026-07-17; baseline finish none → 2026-07-21 |
| 18 | **Elaborar/Ajustar Cronograma - compatível com o escopo do projeto** | 2026-06-10 → 2026-06-29 A (+19d) | 2026-06-29 → 2026-07-31 A (+32d) | 14d → 25d | 0% → 100% | 24d → none |  | baseline start none → 2026-06-29; baseline finish none → 2026-07-31 |
| 19 | Estruturação da EAP | 2026-06-10 → 2026-06-29 A (+19d) | 2026-06-15 → 2026-07-03 A (+18d) | 4d → 5d | 0% → 100% | 24d → none | 2SS+23d → none | constraint none → start no earlier than 2026-06-29; baseline start none → 2026-06-29; baseline finish none → 2026-07-03 |
| 20 | Ajuste de prazos | 2026-06-16 → 2026-07-06 A (+20d) | 2026-06-22 → 2026-07-10 A (+18d) |  | 0% → 100% | 24d → none |  | baseline start none → 2026-07-06; baseline finish none → 2026-07-10 |
| 21 | Inclusão de recursos | 2026-06-23 → 2026-07-27 A (+34d) | 2026-06-29 → 2026-07-31 A (+32d) |  | 0% → 100% | 24d → none | 20 → 20FS+10d | baseline start none → 2026-07-27; baseline finish none → 2026-07-31 |
| 22 | **P0 - Serviços de campo** | 2026-05-07 → 2026-06-09 A (+33d) | 2026-06-03 → 2026-08-03 (+61d) | 20d → 40d | 0% → 96% | 41d → 38d |  | baseline start none → 2026-06-09; baseline finish none → 2026-07-06 |
| 23 | Sondagem | 2026-05-07 → 2026-06-09 A (+33d) | 2026-06-03 → 2026-07-06 A (+33d) |  | 0% → 100% | 41d → none |  | constraint none → start no earlier than 2026-06-09; baseline start none → 2026-06-09; baseline finish none → 2026-07-06 |
| 24 | **Topografia** | 2026-05-07 → 2026-06-29 A (+53d) | 2026-05-29 → 2026-07-02 A (+34d) | 17d → 4d | 0% → 100% | 44d → none |  | baseline start none → 2026-06-29; baseline finish none → 2026-07-02 |
| 25 | Levantamento topográfico | 2026-05-07 → 2026-06-29 A (+53d) | 2026-05-08 → 2026-06-29 A (+52d) | 2d → 1d | 0% → 100% | 44d → none |  | constraint none → start no earlier than 2026-06-29; baseline start none → 2026-06-29; baseline finish none → 2026-06-29 |
| 26 | Processamento | 2026-05-11 → 2026-06-30 A (+50d) | 2026-05-15 → 2026-06-30 A (+46d) | 5d → 1d | 0% → 100% | 44d → none |  | baseline start none → 2026-06-30; baseline finish none → 2026-06-30 |
| 27 | Finalização do projeto topográfico | 2026-05-18 → 2026-07-01 A (+44d) | 2026-05-22 → 2026-07-02 A (+41d) | 5d → 2d | 0% → 100% | 44d → none |  | baseline start none → 2026-07-01; baseline finish none → 2026-07-02 |
| 28 | Estudos iniciais | 2026-05-07 → 2026-06-09 A (+33d) | 2026-05-07 → 2026-07-06 A (+60d) | 0d → 20d | 0% → 100% | 61d → none |  | was named Estudos/Laudo Ambiental; constraint none → start no earlier than 2026-06-09; baseline start none → 2026-06-09; baseline finish none → 2026-07-06 |
| 30 | **P2 - Anteprojeto** | 2026-05-07 → 2026-07-10 A (+64d) | 2026-07-03 → 2026-09-11 (+70d) | 41d? → 45d | 0% → 18% |  |  | was named P1 - Anteprojeto; baseline start none → 2026-07-10; baseline finish none → 2026-09-11 |
| 31 | **001 - Implantação** | 2026-05-07 → 2026-07-20 A (+74d) | 2026-07-02 → 2026-09-11 (+71d) | 40d → 39d | 0% → 3% | 1d → 0d |  | was named Implantação; baseline start none → 2026-07-20; baseline finish none → 2026-09-11 |
| 32 | **LOD 300 - ANTEPROJETO** | 2026-05-07 → 2026-07-20 (+74d) | 2026-06-03 → 2026-09-04 (+93d) | 20d → 35d |  | 21d → 4d |  | baseline start none → 2026-07-20; baseline finish none → 2026-09-04 |
| 33 | Indicar simbologias de representação gráfica, conforme NBR 6492:2021; | 2026-05-07 → 2026-07-20 (+74d) | 2026-06-03 → 2026-09-04 (+93d) | 20d → 35d |  | 21d → 4d | none → 55SS | constraint none → start no earlier than 2026-06-01; baseline start none → 2026-07-20; baseline finish none → 2026-09-04 |
| 34 | Compatibilização (verificar se está tudo conforme as normas e alinhar com o restante das disciplinas de engenharia) | 2026-05-07 → 2026-07-20 (+74d) | 2026-06-03 → 2026-09-04 (+93d) | 20d → 35d |  | 21d → 4d | none → 55SS | constraint none → start no earlier than 2026-06-01; baseline start none → 2026-07-20; baseline finish none → 2026-09-04 |
| 35 | Compatibilização (deixar tudo conforme padrão Quanta) | 2026-05-07 → 2026-07-20 (+74d) | 2026-06-03 → 2026-09-04 (+93d) | 20d → 35d |  | 21d → 4d | none → 55SS | constraint none → start no earlier than 2026-06-01; baseline start none → 2026-07-20; baseline finish none → 2026-09-04 |
| 36 | Indicação de Norte; | 2026-05-07 → 2026-07-20 (+74d) | 2026-06-03 → 2026-09-04 (+93d) | 20d → 35d |  | 21d → 4d | none → 55SS | constraint none → start no earlier than 2026-06-01; baseline start none → 2026-07-20; baseline finish none → 2026-09-04 |
| 37 | Indicação de Escala; | 2026-05-07 → 2026-07-20 (+74d) | 2026-06-03 → 2026-09-04 (+93d) | 20d → 35d |  | 21d → 4d | none → 55SS | constraint none → start no earlier than 2026-06-01; baseline start none → 2026-07-20; baseline finish none → 2026-09-04 |
| 38 | Vias de acesso e calçadas; | 2026-05-07 → 2026-07-20 (+74d) | 2026-06-03 → 2026-09-04 (+93d) | 20d → 35d |  | 21d → 4d | none → 55SS | constraint none → start no earlier than 2026-06-01; baseline start none → 2026-07-20; baseline finish none → 2026-09-04 |
| 39 | Definição dos Percursos e caminhos | 2026-05-07 → 2026-07-20 (+74d) | 2026-06-03 → 2026-09-04 (+93d) | 20d → 35d |  | 21d → 4d | none → 55SS | constraint none → start no earlier than 2026-06-01; baseline start none → 2026-07-20; baseline finish none → 2026-09-04 |
| 40 | Definição de desenhos de canteiros | 2026-05-07 → 2026-07-20 (+74d) | 2026-06-03 → 2026-09-04 (+93d) | 20d → 35d |  | 21d → 4d | none → 55SS | constraint none → start no earlier than 2026-06-01; baseline start none → 2026-07-20; baseline finish none → 2026-09-04 |
| 41 | Localização de Mobiliário | 2026-05-07 → 2026-07-20 (+74d) | 2026-06-03 → 2026-09-04 (+93d) | 20d → 35d |  | 21d → 4d | none → 55SS | constraint none → start no earlier than 2026-06-01; baseline start none → 2026-07-20; baseline finish none → 2026-09-04 |
| 42 | Acesso principal do objeto arquitetônico; | 2026-05-07 → 2026-07-20 (+74d) | 2026-06-03 → 2026-09-04 (+93d) | 20d → 35d |  | 21d → 4d | none → 55SS | constraint none → start no earlier than 2026-06-01; baseline start none → 2026-07-20; baseline finish none → 2026-09-04 |
| 43 | Definição de localização de rampas e escadarias | 2026-05-07 → 2026-07-20 (+74d) | 2026-06-03 → 2026-09-04 (+93d) | 20d → 35d |  | 21d → 4d | none → 55SS | constraint none → start no earlier than 2026-06-01; baseline start none → 2026-07-20; baseline finish none → 2026-09-04 |
| 44 | Platôs e taludes; | 2026-05-07 → 2026-07-20 (+74d) | 2026-06-03 → 2026-09-04 (+93d) | 20d → 35d |  | 21d → 4d | none → 55SS | constraint none → start no earlier than 2026-06-01; baseline start none → 2026-07-20; baseline finish none → 2026-09-04 |
| 45 | Perímetro do terreno, recuos e afastamentos; | 2026-05-07 → 2026-07-20 (+74d) | 2026-06-03 → 2026-09-04 (+93d) | 20d → 35d |  | 21d → 4d | none → 55SS | constraint none → start no earlier than 2026-06-01; baseline start none → 2026-07-20; baseline finish none → 2026-09-04 |
| 46 | Eixos do projeto com respectivo ponto de referência; | 2026-05-07 → 2026-07-20 (+74d) | 2026-06-03 → 2026-09-04 (+93d) | 20d → 35d |  | 21d → 4d | none → 55SS | constraint none → start no earlier than 2026-06-01; baseline start none → 2026-07-20; baseline finish none → 2026-09-04 |
| 47 | Denominação das edificações, blocos ou espaços; | 2026-05-07 → 2026-07-20 (+74d) | 2026-06-03 → 2026-09-04 (+93d) | 20d → 35d |  | 21d → 4d | none → 55SS | constraint none → start no earlier than 2026-06-01; baseline start none → 2026-07-20; baseline finish none → 2026-09-04 |
| 48 | Indicação de áreas cobertas e estacionamentos; | 2026-05-07 → 2026-07-20 (+74d) | 2026-06-03 → 2026-09-04 (+93d) | 20d → 35d |  | 21d → 4d | none → 55SS | constraint none → start no earlier than 2026-06-01; baseline start none → 2026-07-20; baseline finish none → 2026-09-04 |
| 49 | Cotas gerais | 2026-05-07 → 2026-07-20 (+74d) | 2026-06-03 → 2026-09-04 (+93d) | 20d → 35d |  | 21d → 4d | none → 55SS | constraint none → start no earlier than 2026-06-01; baseline start none → 2026-07-20; baseline finish none → 2026-09-04 |
| 50 | Cotas de nível principais | 2026-05-07 → 2026-07-20 (+74d) | 2026-06-03 → 2026-09-04 (+93d) | 20d → 35d |  | 21d → 4d | none → 55SS | constraint none → start no earlier than 2026-06-01; baseline start none → 2026-07-20; baseline finish none → 2026-09-04 |
| 51 | Quadro de áreas | 2026-05-07 → 2026-07-20 (+74d) | 2026-06-03 → 2026-09-04 (+93d) | 20d → 35d |  | 21d → 4d | none → 55SS | constraint none → start no earlier than 2026-06-01; baseline start none → 2026-07-20; baseline finish none → 2026-09-04 |
| 52 | Aprovação de Conformidade | 2026-06-01 → 2026-09-02 (+93d) | 2026-06-03 → 2026-09-04 (+93d) |  |  | 21d → 4d | RelatórioFF → 51FF | baseline start none → 2026-09-02; baseline finish none → 2026-09-04 |
| 53 | Material para entrega ao contrato | 2026-06-01 → 2026-09-02 (+93d) | 2026-06-03 → 2026-09-04 (+93d) |  |  | 21d → 4d | RelatórioFF → 51FF | baseline start none → 2026-09-02; baseline finish none → 2026-09-04 |
| 54 | **Terraplanagem / Pavimentação** | 2026-05-07 → 2026-07-20 A (+74d) | 2026-07-02 → 2026-09-11 (+71d) | 40d → 39d | 0% → 5% | 1d → 0d |  | baseline start none → 2026-07-20; baseline finish none → 2026-09-11 |
| 55 | **LOD 100 — Premissas, diretrizes e interfaces** | 2026-05-07 → 2026-07-20 A (+74d) | 2026-05-20 → 2026-07-31 (+72d) |  | 0% → 26% | 1d → 29d |  | baseline start none → 2026-07-20; baseline finish none → 2026-07-31 |
| 56 | Avaliação geral de interferências e topografia local. | 2026-05-07 → 2026-07-20 A (+74d) | 2026-05-13 → 2026-07-24 (+72d) |  | 0% → 62% | 1d → 34d |  | constraint none → start no earlier than 2026-07-20; baseline start none → 2026-07-20; baseline finish none → 2026-07-24 |
| 57 | Curvas de nível preliminares (quando disponíveis). | 2026-05-07 → 2026-07-20 A (+74d) | 2026-05-13 → 2026-07-24 (+72d) |  | 0% → 62% | 31d → 29d |  | baseline start none → 2026-07-20; baseline finish none → 2026-07-24 |
| 58 | Levantamento topográfico inicial com representação genérica da área. | 2026-05-07 → 2026-07-20 A (+74d) | 2026-05-13 → 2026-07-24 (+72d) |  | 0% → 62% | 1d → 0d |  | baseline start none → 2026-07-20; baseline finish none → 2026-07-24 |
| 59 | Análise estimativa de movimentação de terra. | 2026-05-14 → 2026-07-27 (+74d) | 2026-05-20 → 2026-07-31 (+72d) |  |  | 31d → 29d |  | baseline start none → 2026-07-27; baseline finish none → 2026-07-31 |
| 60 | Estudos de viabilidade | 2026-05-14 → 2026-07-27 (+74d) | 2026-05-20 → 2026-07-31 (+72d) |  |  | 31d → 29d |  | baseline start none → 2026-07-27; baseline finish none → 2026-07-31 |
| 61 | Elementos representados de forma simbólica sem georreferenciamento preciso. | 2026-05-14 → 2026-07-27 (+74d) | 2026-05-20 → 2026-07-31 (+72d) |  |  | 31d → 29d |  | baseline start none → 2026-07-27; baseline finish none → 2026-07-31 |
| 62 | Superfície genérica do terreno. | 2026-05-14 → 2026-07-27 (+74d) | 2026-05-20 → 2026-07-31 (+72d) |  |  | 1d → 0d |  | baseline start none → 2026-07-27; baseline finish none → 2026-07-31 |
| 63 | **LOD 200 — Validação interdisciplinar e solução preliminar** | 2026-05-21 → 2026-08-03 (+74d) | 2026-06-18 → 2026-08-27 (+70d) | 20d → 19d |  | 1d → 0d |  | baseline start none → 2026-08-03; baseline finish none → 2026-08-27 |
| 64 | Avaliação técnica detalhada. | 2026-05-21 → 2026-08-03 (+74d) | 2026-06-18 → 2026-08-27 (+70d) | 20d → 19d |  | 11d → 10d |  | baseline start none → 2026-08-03; baseline finish none → 2026-08-27 |
| 65 | Compatibilização inicial com drenagem, fundações e geometria. | 2026-05-21 → 2026-08-03 (+74d) | 2026-06-18 → 2026-08-27 (+70d) | 20d → 19d |  | 11d → 10d |  | baseline start none → 2026-08-03; baseline finish none → 2026-08-27 |
| 66 | Indicação dos pontos de sondagem em planta georreferenciada. | 2026-05-21 → 2026-08-03 (+74d) | 2026-06-18 → 2026-08-27 (+70d) | 20d → 19d |  | 11d → 10d |  | baseline start none → 2026-08-03; baseline finish none → 2026-08-27 |
| 67 | Sondagens geotécnicas: Cronograma de execução com áreas e quantidade de perfurações; Boletins informativos com planta de localização dos furos, profundidades e descrição estratigráfica (solo). | 2026-05-21 → 2026-08-03 (+74d) | 2026-06-18 → 2026-08-27 (+70d) | 20d → 19d |  | 11d → 10d |  | baseline start none → 2026-08-03; baseline finish none → 2026-08-27 |
| 68 | Levantamento topográfico: Arquivo em formato.dwg, com coordenadas georreferenciadas (latitude/longitude), curvas de nível, ortofoto e base planimétrica. | 2026-05-21 → 2026-08-03 (+74d) | 2026-06-18 → 2026-08-27 (+70d) | 20d → 19d |  | 11d → 10d |  | baseline start none → 2026-08-03; baseline finish none → 2026-08-27 |
| 69 | Planta topográfica com triangulação real (MDT). | 2026-05-21 → 2026-08-03 (+74d) | 2026-06-18 → 2026-08-27 (+70d) | 20d → 19d |  | 1d → 0d |  | baseline start none → 2026-08-03; baseline finish none → 2026-08-27 |
| 70 | **LOD 300 - Consolidação e documentação de entrega** | 2026-06-19 → 2026-08-28 (+70d) | 2026-07-02 → 2026-09-11 (+71d) |  |  | 1d → 0d |  | baseline start none → 2026-08-28; baseline finish none → 2026-09-11 |
| 71 | Alinhamentos de estaqueamento longitudinal e transversal. | 2026-06-19 → 2026-08-28 (+70d) | 2026-06-25 → 2026-09-03 (+70d) |  |  | 6d → 5d |  | baseline start none → 2026-08-28; baseline finish none → 2026-09-03 |

| ID | Task | Start | Finish | Duration | Complete | Total float | Predecessors | Other |
| --- | --- | --- | --- | --- | --- | --- | --- | --- |
| 72 | Análise integrada dos dados topográficos e de sondagem. | 2026-06-19 → 2026-08-28 (+70d) | 2026-06-25 → 2026-09-03 (+70d) |  |  | 6d → 5d |  | baseline start none → 2026-08-28; baseline finish none → 2026-09-03 |
| 73 | Planta baixa georreferenciada com projeção de cortes e aterros. | 2026-06-19 → 2026-08-28 (+70d) | 2026-07-02 → 2026-09-11 (+71d) |  |  | 1d → 0d |  | baseline start none → 2026-08-28; baseline finish none → 2026-09-11 |
| 74 | Perfis longitudinais e transversais do terreno na situação atual e projetada. | 2026-06-19 → 2026-08-28 (+70d) | 2026-06-25 → 2026-09-03 (+70d) |  |  | 6d → 5d |  | baseline start none → 2026-08-28; baseline finish none → 2026-09-03 |
| 75 | Tabelas com variações altimétricas de corte e aterro. | 2026-06-26 → 2026-09-04 (+70d) | 2026-07-02 → 2026-09-11 (+71d) |  |  | 1d → 0d |  | baseline start none → 2026-09-04; baseline finish none → 2026-09-11 |
| 76 | Aprovação de Conformidade | 2026-06-30 → 2026-09-09 (+71d) | 2026-07-02 → 2026-09-11 (+71d) |  |  | 1d → 0d |  | baseline start none → 2026-09-09; baseline finish none → 2026-09-11 |
| 77 | Material para entrega ao contrato | 2026-06-30 → 2026-09-09 (+71d) | 2026-07-02 → 2026-09-11 (+71d) |  |  | 1d → 0d |  | baseline start none → 2026-09-09; baseline finish none → 2026-09-11 |
| 78 | **Drenagem** | 2026-05-21 → 2026-08-03 A (+74d) | 2026-07-02 → 2026-09-11 (+71d) | 30d → 29d | 0% → 5% | 1d → 0d |  | baseline start none → 2026-08-03; baseline finish none → 2026-09-11 |
| 79 | **LOD 100 — Premissas, diretrizes e interfaces** | 2026-05-21 → 2026-08-03 A (+74d) | 2026-05-27 → 2026-08-07 (+72d) |  | 0% → 12% | 1d → 24d |  | baseline start none → 2026-08-03; baseline finish none → 2026-08-07 |
| 80 | Diretrizes de espaço | 2026-05-21 → 2026-08-03 A (+74d) | 2026-05-27 → 2026-08-07 (+72d) |  | 0% → 12% | 26d → 24d |  | baseline start none → 2026-08-03; baseline finish none → 2026-08-07 |
| 81 | Memorial preliminar | 2026-05-21 → 2026-08-03 A (+74d) | 2026-05-27 → 2026-08-07 (+72d) |  | 0% → 12% | 26d → 24d |  | baseline start none → 2026-08-03; baseline finish none → 2026-08-07 |
| 82 | Análise climatológica | 2026-05-21 → 2026-08-03 A (+74d) | 2026-05-27 → 2026-08-07 (+72d) |  | 0% → 12% | 26d → 24d |  | baseline start none → 2026-08-03; baseline finish none → 2026-08-07 |
| 83 | Delimitação de área de contribuição | 2026-05-21 → 2026-08-03 A (+74d) | 2026-05-27 → 2026-08-07 (+72d) |  | 0% → 12% | 26d → 24d |  | baseline start none → 2026-08-03; baseline finish none → 2026-08-07 |
| 84 | Levantamento de elementos especiais dentre outras disciplinas de Engenharia e Arquitetura | 2026-05-21 → 2026-08-03 A (+74d) | 2026-05-27 → 2026-08-07 (+72d) |  | 0% → 12% | 26d → 24d |  | baseline start none → 2026-08-03; baseline finish none → 2026-08-07 |
| 85 | Indicação de áreas técnicas | 2026-05-21 → 2026-08-03 A (+74d) | 2026-05-27 → 2026-08-07 (+72d) |  | 0% → 12% | 26d → 24d |  | baseline start none → 2026-08-03; baseline finish none → 2026-08-07 |
| 86 | Planta baixa com traçado conceitual | 2026-05-21 → 2026-08-03 A (+74d) | 2026-05-27 → 2026-08-07 (+72d) |  | 0% → 12% | 26d → 24d |  | baseline start none → 2026-08-03; baseline finish none → 2026-08-07 |
| 87 | Traçado geral de descidas pluviais | 2026-05-21 → 2026-08-03 A (+74d) | 2026-05-27 → 2026-08-07 (+72d) |  | 0% → 12% | 1d → 0d |  | baseline start none → 2026-08-03; baseline finish none → 2026-08-07 |
| 88 | **LOD 200 — Validação interdisciplinar e solução preliminar** | 2026-05-28 → 2026-08-10 (+74d) | 2026-06-15 → 2026-08-25 (+71d) |  |  | 1d → 0d |  | baseline start none → 2026-08-10; baseline finish none → 2026-08-25 |
| 89 | Critérios normativos adotados (ABNT, concessionárias, etc.) | 2026-05-28 → 2026-08-10 (+74d) | 2026-06-05 → 2026-08-17 (+73d) |  |  | 1d → 0d |  | baseline start none → 2026-08-10; baseline finish none → 2026-08-17 |
| 90 | Lista preliminar de sistemas e interfaces envolvidos | 2026-05-28 → 2026-08-10 (+74d) | 2026-06-05 → 2026-08-17 (+73d) |  |  | 1d → 0d |  | baseline start none → 2026-08-10; baseline finish none → 2026-08-17 |
| 91 | Planta baixa e cortes estimada contendo: - Traçado preliminar de condutores verticais e horizontais - Dimensionamento inicial de calhas e condutores - Localização de elementos ou redes de drenagem existente - Indicação de áreas técnicas | 2026-05-28 → 2026-08-10 (+74d) | 2026-06-05 → 2026-08-17 (+73d) |  |  | 20d → 18d |  | baseline start none → 2026-08-10; baseline finish none → 2026-08-17 |
| 92 | Estudo de viabilidade técnica, econômica e ambiental | 2026-06-08 → 2026-08-18 (+71d) | 2026-06-15 → 2026-08-25 (+71d) |  |  | 1d → 0d |  | baseline start none → 2026-08-18; baseline finish none → 2026-08-25 |
| 93 | Levantamento topográfico da área de contribuição e elementos existentes | 2026-06-08 → 2026-08-18 (+71d) | 2026-06-15 → 2026-08-25 (+71d) |  |  | 1d → 0d |  | baseline start none → 2026-08-18; baseline finish none → 2026-08-25 |
| 94 | Sondagem (permeabilidade ou percolação) | 2026-06-08 → 2026-08-18 (+71d) | 2026-06-15 → 2026-08-25 (+71d) |  |  | 14d → 12d |  | baseline start none → 2026-08-18; baseline finish none → 2026-08-25 |
| 95 | **LOD 300 - Consolidação e documentação de entrega** | 2026-06-16 → 2026-08-26 (+71d) | 2026-07-02 → 2026-09-11 (+71d) | 13d → 12d |  | 1d → 0d |  | baseline start none → 2026-08-26; baseline finish none → 2026-09-11 |
| 96 | Memorial descritivo | 2026-06-16 → 2026-08-26 (+71d) | 2026-06-18 → 2026-08-28 (+71d) |  |  | 3d → 1d |  | baseline start none → 2026-08-26; baseline finish none → 2026-08-28 |
| 97 | Memória de cálculo | 2026-06-16 → 2026-08-26 (+71d) | 2026-06-22 → 2026-08-31 (+70d) | 5d → 4d |  | 1d → 0d |  | baseline start none → 2026-08-26; baseline finish none → 2026-08-31 |
| 98 | Planta, corte e detalhe isométrico contendo: - Detalhamento dos condutores com diâmetros, cotas e inclinações definitivas (condutores pluviais) - Calhas, bocas de lobo, dissipadores de energia e demais elementos/equipamentos definitivos | 2026-06-23 → 2026-09-01 (+70d) | 2026-06-29 → 2026-09-08 (+71d) |  |  | 1d → 0d |  | baseline start none → 2026-09-01; baseline finish none → 2026-09-08 |
| 99 | Quantitativos e especificação técnica dos materiais | 2026-06-30 → 2026-09-09 (+71d) | 2026-07-02 → 2026-09-11 (+71d) |  |  | 1d → 0d |  | baseline start none → 2026-09-09; baseline finish none → 2026-09-11 |
| 100 | Aprovação de Conformidade | 2026-06-30 → 2026-09-09 (+71d) | 2026-07-02 → 2026-09-11 (+71d) |  |  | 1d → 0d |  | baseline start none → 2026-09-09; baseline finish none → 2026-09-11 |
| 101 | Material para entrega ao contrato | 2026-06-30 → 2026-09-09 (+71d) | 2026-07-02 → 2026-09-11 (+71d) |  |  | 1d → 0d |  | baseline start none → 2026-09-09; baseline finish none → 2026-09-11 |
| 103 | **LOD 100 — Premissas, diretrizes e interfaces** | 2026-05-07 → 2026-08-03 A (+88d) | 2026-05-07 → 2026-08-10 (+95d) | 1d? → 6d | 0% → 19% | 40d → 23d |  | baseline start none → 2026-08-03; baseline finish none → 2026-08-10 |
| 112 | **LOD 200 — Validação interdisciplinar e solução preliminar** | 2026-05-07 → 2026-08-11 (+96d) | 2026-06-25 → 2026-09-02 (+69d) | 35d? → 17d |  | 6d → 0d |  | baseline start none → 2026-08-11; baseline finish none → 2026-09-02 |
| 124 | Aprovação de Conformidade | 2026-06-23 → 2026-09-09 (+78d) | 2026-06-25 → 2026-09-11 (+78d) |  |  | 6d → 0d | 159FF → 120FF | baseline start none → 2026-09-09; baseline finish none → 2026-09-11 |
| 125 | Material para entrega ao contrato | 2026-06-23 → 2026-09-09 (+78d) | 2026-06-25 → 2026-09-11 (+78d) |  |  | 6d → 0d | 159FF → 120FF | baseline start none → 2026-09-09; baseline finish none → 2026-09-11 |
| 150 | **Subestação** | 2026-05-08 → 2026-08-03 A (+87d) | 2026-06-25 → 2026-09-11 (+78d) | 34d → 29d | 0% → 5% | 6d → 0d |  | baseline start none → 2026-08-03; baseline finish none → 2026-09-11 |
| 151 | **LOD 100 — Concepção** | 2026-05-08 → 2026-08-03 A (+87d) | 2026-05-21 → 2026-08-10 (+81d) | 10d → 6d | 0% → 23% | 6d → 23d |  | baseline start none → 2026-08-03; baseline finish none → 2026-08-10 |
| 152 | Avaliação e Diretrizes Técnicas para Arquitetura | 2026-05-08 → 2026-08-03 A (+87d) | 2026-05-21 → 2026-08-10 (+81d) | 10d → 6d | 0% → 23% | 30d → 23d | 202SS → 78SS | baseline start none → 2026-08-03; baseline finish none → 2026-08-10 |
| 153 | Levantamento de Demanda, Perfil de Consumo e Ponto de Entrega | 2026-05-08 → 2026-08-03 A (+87d) | 2026-05-21 → 2026-08-10 (+81d) | 10d → 6d | 0% → 23% | 30d → 23d | 202SS → 78SS | baseline start none → 2026-08-03; baseline finish none → 2026-08-10 |
| 154 | Estudo de Viabilidade Técnica e Atendimento ao Padrão da Concessionária | 2026-05-08 → 2026-08-03 A (+87d) | 2026-05-21 → 2026-08-10 (+81d) | 10d → 6d | 0% → 23% | 6d → 0d | 202SS → 78SS | baseline start none → 2026-08-03; baseline finish none → 2026-08-10 |
| 155 | **LOD 200 — Anteprojeto** | 2026-05-22 → 2026-08-11 (+81d) | 2026-06-19 → 2026-09-02 (+75d) | 20d → 17d |  | 6d → 0d |  | baseline start none → 2026-08-11; baseline finish none → 2026-09-02 |
| 156 | Definição do Tipo de Subestação e Arranjo Físico Preliminar | 2026-05-22 → 2026-08-11 (+81d) | 2026-06-05 → 2026-09-02 (+89d) | 10d → 17d |  |  |  | baseline start none → 2026-08-11; baseline finish none → 2026-09-02 |
| 157 | Dimensionamento Preliminar do Transformador e Equipamentos Principais | 2026-06-08 → 2026-08-11 (+64d) | 2026-06-19 → 2026-09-02 (+75d) | 10d → 17d |  |  | 156 → 154 | baseline start none → 2026-08-11; baseline finish none → 2026-09-02 |
| 158 | Diretrizes Preliminares de Aterramento | 2026-06-08 → 2026-08-11 (+64d) | 2026-06-19 → 2026-09-02 (+75d) | 10d → 17d |  | 6d → 0d | 156 → 154 | baseline start none → 2026-08-11; baseline finish none → 2026-09-02 |
| 159 | LOD 300 - Consolidação e documentação de entrega | 2026-06-22 → 2026-09-03 (+73d) | 2026-06-25 → 2026-09-11 (+78d) | 4d → 6d |  | 6d → 0d | 155 → 158 | baseline start none → 2026-09-03; baseline finish none → 2026-09-11 |
| 186 | **002 - Edificação principal** | 2026-05-07 → 2026-07-10 A (+64d) | 2026-07-03 → 2026-09-11 (+70d) | 41d? → 45d | 0% → 18% |  |  | was named 001 - Edificação principal; baseline start none → 2026-07-10; baseline finish none → 2026-09-11 |
| 187 | **Arquitetura** | 2026-05-07 → 2026-07-10 A (+64d) | 2026-06-08 → 2026-09-11 (+95d) | 22d? → 45d | 0% → 38% | 19d → 0d |  | baseline start none → 2026-07-10; baseline finish none → 2026-09-11 |
| 188 | **Análise e Compatibilização (caso a gente receba o projeto e precise adequar)** | 2026-05-07 → 2026-07-10 A (+64d) | 2026-05-08 → 2026-08-21 (+105d) | 2d? → 31d | 0% → 74% | 19d → 14d |  | was named LOD 200 - ESTUDO PRELIMINAR; baseline start none → 2026-07-10; baseline finish none → 2026-08-21 |
| 201 | Conferir normas técnicas para auditórios (se tiver) | 2026-05-07 → 2026-07-10 A (+64d) | 2026-05-07 → 2026-08-06 A (+91d) | 1d? → 20d | 0% → 100% | 19d → none | none → 24FS+5d | was named Modelagem; constraint none → start no earlier than 2026-06-16; baseline start none → 2026-07-10; baseline finish none → 2026-08-06 |
| 202 | Compatibilização (pedir relatório de análise de projeto para disciplinas de engenharia) | 2026-05-08 → 2026-08-07 (+91d) | 2026-05-08 → 2026-08-13 (+97d) | 1d? → 5d |  | 19d → 0d |  | was named Implantação; baseline start none → 2026-08-07; baseline finish none → 2026-08-13 |
| 206 | **LOD 300 - ANTEPROJETO** | 2026-05-11 → 2026-08-14 A (+95d) | 2026-06-08 → 2026-09-11 (+95d) |  | 0% → 6% | 19d → 0d |  | baseline start none → 2026-08-14; baseline finish none → 2026-09-11 |
| 207 | **Modelagem e compatibilização** | 2026-05-11 → 2026-08-14 A (+95d) | 2026-05-22 → 2026-08-27 (+97d) |  | 0% → 7% | 19d → 10d |  | baseline start none → 2026-08-14; baseline finish none → 2026-08-27 |
| 208 | Ajustar o navegador de projeto conforme o padrão da Quanta - verificar se todas as vistas estão dentro da disciplina correta - alinahr com o líder da OS | 2026-05-11 → 2026-08-14 A (+95d) | 2026-05-22 → 2026-08-27 A (+97d) |  | 0% → 100% | 29d → none |  | baseline start none → 2026-08-14; baseline finish none → 2026-08-27 |
| 209 | Limpar o arquivo e transferir os padões de projeto da Quanta | 2026-05-11 → 2026-08-14 (+95d) | 2026-05-22 → 2026-08-27 (+97d) |  |  | 29d → 10d |  | baseline start none → 2026-08-14; baseline finish none → 2026-08-27 |
| 210 | Criar Worksets (em caso de arquivos colaborados) | 2026-05-11 → 2026-08-14 (+95d) | 2026-05-22 → 2026-08-27 (+97d) |  |  | 29d → 10d |  | baseline start none → 2026-08-14; baseline finish none → 2026-08-27 |
| 211 | Colocar todas as elementos em seus devidos Worksets | 2026-05-11 → 2026-08-14 (+95d) | 2026-05-22 → 2026-08-27 (+97d) |  |  | 29d → 10d |  | baseline start none → 2026-08-14; baseline finish none → 2026-08-27 |
| 212 | Fazer ajustes dos modelos para Colaboração | 2026-05-11 → 2026-08-14 (+95d) | 2026-05-22 → 2026-08-27 (+97d) |  |  | 29d → 10d |  | baseline start none → 2026-08-14; baseline finish none → 2026-08-27 |
| 213 | Mudar os pisos para o padrão da quanta (1º pavimento) | 2026-05-11 → 2026-08-14 A (+95d) | 2026-05-22 → 2026-08-27 A (+97d) |  | 0% → 100% | 29d → none |  | baseline start none → 2026-08-14; baseline finish none → 2026-08-27 |
| 214 | Mudar as parades para o padão da quanta (1º pavimento) | 2026-05-11 → 2026-08-14 (+95d) | 2026-05-22 → 2026-08-27 (+97d) |  |  | 29d → 10d |  | baseline start none → 2026-08-14; baseline finish none → 2026-08-27 |
| 215 | Mudar as portas para o padão da quanta (1º pavimento) | 2026-05-11 → 2026-08-14 (+95d) | 2026-05-22 → 2026-08-27 (+97d) |  |  | 29d → 10d |  | baseline start none → 2026-08-14; baseline finish none → 2026-08-27 |
| 216 | Mudar as soleiras para o padão da quanta | 2026-05-11 → 2026-08-14 (+95d) | 2026-05-22 → 2026-08-27 (+97d) |  |  | 29d → 10d |  | baseline start none → 2026-08-14; baseline finish none → 2026-08-27 |
| 217 | Mudar as bancadas para o padão da Quanta (1º pavimento) | 2026-05-11 → 2026-08-14 (+95d) | 2026-05-22 → 2026-08-27 (+97d) |  |  | 29d → 10d |  | baseline start none → 2026-08-14; baseline finish none → 2026-08-27 |
| 218 | Mudar metais para padrão da Quanta (1º pavimento) | 2026-05-11 → 2026-08-14 (+95d) | 2026-05-22 → 2026-08-27 (+97d) |  |  | 29d → 10d |  | baseline start none → 2026-08-14; baseline finish none → 2026-08-27 |
| 219 | Mudar demais acabamentos para padrão o padrão da Quanta | 2026-05-11 → 2026-08-14 (+95d) | 2026-05-22 → 2026-08-27 (+97d) |  |  | 29d → 10d |  | baseline start none → 2026-08-14; baseline finish none → 2026-08-27 |
| 220 | Ajustar ralos das áreas molhadas (1º pavimento) | 2026-05-11 → 2026-08-14 (+95d) | 2026-05-22 → 2026-08-27 (+97d) |  |  | 29d → 10d |  | baseline start none → 2026-08-14; baseline finish none → 2026-08-27 |
| 221 | Se vier as tomadas - excluir (1º Pavimento) | 2026-05-11 → 2026-08-14 (+95d) | 2026-05-22 → 2026-08-27 (+97d) |  |  | 29d → 10d |  | baseline start none → 2026-08-14; baseline finish none → 2026-08-27 |
| 222 | Se vier as luminárias - excluir (1° pavimento) | 2026-05-11 → 2026-08-14 (+95d) | 2026-05-22 → 2026-08-27 (+97d) |  |  | 29d → 10d |  | baseline start none → 2026-08-14; baseline finish none → 2026-08-27 |
| 223 | Inserir caixa d'água - Conferir pré dimensionamento com a engenharia | 2026-05-11 → 2026-08-14 (+95d) | 2026-05-22 → 2026-08-27 (+97d) |  |  | 29d → 10d |  | baseline start none → 2026-08-14; baseline finish none → 2026-08-27 |
| 224 | Separar camadas dos pisos - leje 10cm (1° camada), contrapiso 3cm+argamassa 2cm+rev 1cm, (2°camada) | 2026-05-11 → 2026-08-14 (+95d) | 2026-05-22 → 2026-08-27 (+97d) |  |  | 29d → 10d |  | baseline start none → 2026-08-14; baseline finish none → 2026-08-27 |
| 225 | Descrição dos elementos da edificação | 2026-05-11 → 2026-08-14 (+95d) | 2026-05-22 → 2026-08-27 (+97d) |  |  | 29d → 10d |  | baseline start none → 2026-08-14; baseline finish none → 2026-08-27 |
| 226 | Descrição dos componentes construtivos e materiais de construção | 2026-05-11 → 2026-08-14 (+95d) | 2026-05-22 → 2026-08-27 (+97d) |  |  | 29d → 10d |  | baseline start none → 2026-08-14; baseline finish none → 2026-08-27 |

| ID | Task | Start | Finish | Total float | Other |
| --- | --- | --- | --- | --- | --- |
| 227 | Lista de pranchas anexas e documentos | 2026-05-11 → 2026-08-14 (+95d) | 2026-05-22 → 2026-08-27 (+97d) | 29d → 10d | baseline start none → 2026-08-14; baseline finish none → 2026-08-27 |
| 228 | Vias de acesso ao conjunto, arruamento, logradouros adjacentes e calçadas com os respectivos equipamentos urbanos; | 2026-05-11 → 2026-08-14 (+95d) | 2026-05-22 → 2026-08-27 (+97d) | 29d → 10d | baseline start none → 2026-08-14; baseline finish none → 2026-08-27 |
| 229 | Platôs e taludes principais; | 2026-05-11 → 2026-08-14 (+95d) | 2026-05-22 → 2026-08-27 (+97d) | 29d → 10d | baseline start none → 2026-08-14; baseline finish none → 2026-08-27 |
| 230 | Perímetro do terreno, recuos e afastamentos; | 2026-05-11 → 2026-08-14 (+95d) | 2026-05-22 → 2026-08-27 (+97d) | 29d → 10d | baseline start none → 2026-08-14; baseline finish none → 2026-08-27 |
| 231 | Indicação das áreas a serem edificadas com o contorno da cobertura das edificações, estacionamentos e áreas permeáveis/impermeáveis; | 2026-05-11 → 2026-08-14 (+95d) | 2026-05-22 → 2026-08-27 (+97d) | 29d → 10d | baseline start none → 2026-08-14; baseline finish none → 2026-08-27 |
| 232 | Denominação das edificações, blocos ou espaços; | 2026-05-11 → 2026-08-14 (+95d) | 2026-05-22 → 2026-08-27 (+97d) | 29d → 10d | baseline start none → 2026-08-14; baseline finish none → 2026-08-27 |
| 233 | Cotas gerais | 2026-05-11 → 2026-08-14 (+95d) | 2026-05-22 → 2026-08-27 (+97d) | 29d → 10d | baseline start none → 2026-08-14; baseline finish none → 2026-08-27 |
| 234 | Cotas de nível principal. | 2026-05-11 → 2026-08-14 (+95d) | 2026-05-22 → 2026-08-27 (+97d) | 29d → 10d | baseline start none → 2026-08-14; baseline finish none → 2026-08-27 |
| 235 | Quadros de áreas | 2026-05-11 → 2026-08-14 (+95d) | 2026-05-22 → 2026-08-27 (+97d) | 19d → 0d | baseline start none → 2026-08-14; baseline finish none → 2026-08-27 |
| 236 | Planta com as cotas de nível projetadas e existentes | 2026-05-25 → 2026-08-28 (+95d) | 2026-05-25 → 2026-08-28 (+95d) | 19d → 0d | baseline start none → 2026-08-28; baseline finish none → 2026-08-28 |
| 237 | **Plantas baixas (se tiver mais de um pavimento, duplicar bloco)** | 2026-05-26 → 2026-08-31 (+97d) | 2026-05-26 → 2026-08-31 (+97d) | 19d → 0d | baseline start none → 2026-08-31; baseline finish none → 2026-08-31 |
| 238 | Indicar simbologias de representação gráfica, conforme NBR 6492:2021; | 2026-05-26 → 2026-08-31 (+97d) | 2026-05-26 → 2026-08-31 (+97d) | 27d → 8d | baseline start none → 2026-08-31; baseline finish none → 2026-08-31 |
| 239 | Compatibilização (verificar se está tudo conforme as normas e alinhar com o restante das disciplinas de engenharia) | 2026-05-26 → 2026-08-31 (+97d) | 2026-05-26 → 2026-08-31 (+97d) | 27d → 8d | baseline start none → 2026-08-31; baseline finish none → 2026-08-31 |
| 240 | Compatibilização (deixar tudo conforme padrão Quanta) | 2026-05-26 → 2026-08-31 (+97d) | 2026-05-26 → 2026-08-31 (+97d) | 27d → 8d | baseline start none → 2026-08-31; baseline finish none → 2026-08-31 |
| 241 | Indicação de Norte; | 2026-05-26 → 2026-08-31 (+97d) | 2026-05-26 → 2026-08-31 (+97d) | 27d → 8d | baseline start none → 2026-08-31; baseline finish none → 2026-08-31 |
| 242 | Indicação de Escala; | 2026-05-26 → 2026-08-31 (+97d) | 2026-05-26 → 2026-08-31 (+97d) | 27d → 8d | baseline start none → 2026-08-31; baseline finish none → 2026-08-31 |
| 243 | Indicação de Acessos; | 2026-05-26 → 2026-08-31 (+97d) | 2026-05-26 → 2026-08-31 (+97d) | 27d → 8d | baseline start none → 2026-08-31; baseline finish none → 2026-08-31 |
| 244 | Elementos de vedação internos e externos; | 2026-05-26 → 2026-08-31 (+97d) | 2026-05-26 → 2026-08-31 (+97d) | 27d → 8d | baseline start none → 2026-08-31; baseline finish none → 2026-08-31 |
| 245 | Esquadrias (sem código e sem quadro); | 2026-05-26 → 2026-08-31 (+97d) | 2026-05-26 → 2026-08-31 (+97d) | 27d → 8d | baseline start none → 2026-08-31; baseline finish none → 2026-08-31 |
| 246 | Elementos estruturais principais; | 2026-05-26 → 2026-08-31 (+97d) | 2026-05-26 → 2026-08-31 (+97d) | 27d → 8d | baseline start none → 2026-08-31; baseline finish none → 2026-08-31 |
| 247 | Identificação dos ambientes e espaços (internos e externos); | 2026-05-26 → 2026-08-31 (+97d) | 2026-05-26 → 2026-08-31 (+97d) | 27d → 8d | baseline start none → 2026-08-31; baseline finish none → 2026-08-31 |
| 248 | Espaços de circulação internos e externos; | 2026-05-26 → 2026-08-31 (+97d) | 2026-05-26 → 2026-08-31 (+97d) | 27d → 8d | baseline start none → 2026-08-31; baseline finish none → 2026-08-31 |
| 249 | Áreas de serviço, funcionais e técnicas (internos e externos); | 2026-05-26 → 2026-08-31 (+97d) | 2026-05-26 → 2026-08-31 (+97d) | 27d → 8d | baseline start none → 2026-08-31; baseline finish none → 2026-08-31 |
| 250 | Projeções de níveis superiores; | 2026-05-26 → 2026-08-31 (+97d) | 2026-05-26 → 2026-08-31 (+97d) | 27d → 8d | baseline start none → 2026-08-31; baseline finish none → 2026-08-31 |
| 251 | Cotas gerais | 2026-05-26 → 2026-08-31 (+97d) | 2026-05-26 → 2026-08-31 (+97d) | 27d → 8d | baseline start none → 2026-08-31; baseline finish none → 2026-08-31 |
| 252 | Cotas de nível principal. | 2026-05-26 → 2026-08-31 (+97d) | 2026-05-26 → 2026-08-31 (+97d) | 27d → 8d | baseline start none → 2026-08-31; baseline finish none → 2026-08-31 |
| 253 | Quadro de áreas | 2026-05-26 → 2026-08-31 (+97d) | 2026-05-26 → 2026-08-31 (+97d) | 19d → 0d | baseline start none → 2026-08-31; baseline finish none → 2026-08-31 |
| 254 | **Planta das coberturas** | 2026-05-27 → 2026-09-01 (+97d) | 2026-05-27 → 2026-09-01 (+97d) | 19d → 0d | baseline start none → 2026-09-01; baseline finish none → 2026-09-01 |
| 255 | Indicação do Norte | 2026-05-27 → 2026-09-01 (+97d) | 2026-05-27 → 2026-09-01 (+97d) | 26d → 7d | baseline start none → 2026-09-01; baseline finish none → 2026-09-01 |
| 256 | Indicação de escala | 2026-05-27 → 2026-09-01 (+97d) | 2026-05-27 → 2026-09-01 (+97d) | 26d → 7d | baseline start none → 2026-09-01; baseline finish none → 2026-09-01 |
| 257 | Curvas de nível | 2026-05-27 → 2026-09-01 (+97d) | 2026-05-27 → 2026-09-01 (+97d) | 26d → 7d | baseline start none → 2026-09-01; baseline finish none → 2026-09-01 |
| 258 | Indicação de Acessos; | 2026-05-27 → 2026-09-01 (+97d) | 2026-05-27 → 2026-09-01 (+97d) | 26d → 7d | baseline start none → 2026-09-01; baseline finish none → 2026-09-01 |
| 259 | Estacionamento e áreas cobertas | 2026-05-27 → 2026-09-01 (+97d) | 2026-05-27 → 2026-09-01 (+97d) | 26d → 7d | baseline start none → 2026-09-01; baseline finish none → 2026-09-01 |
| 260 | Cobertura das edificações | 2026-05-27 → 2026-09-01 (+97d) | 2026-05-27 → 2026-09-01 (+97d) | 26d → 7d | baseline start none → 2026-09-01; baseline finish none → 2026-09-01 |
| 261 | Sentido de escoamento das águas pluviais e inclinação | 2026-05-27 → 2026-09-01 (+97d) | 2026-05-27 → 2026-09-01 (+97d) | 26d → 7d | baseline start none → 2026-09-01; baseline finish none → 2026-09-01 |
| 262 | Cotas gerais | 2026-05-27 → 2026-09-01 (+97d) | 2026-05-27 → 2026-09-01 (+97d) | 26d → 7d | baseline start none → 2026-09-01; baseline finish none → 2026-09-01 |
| 263 | Cotas de nível principal | 2026-05-27 → 2026-09-01 (+97d) | 2026-05-27 → 2026-09-01 (+97d) | 19d → 0d | baseline start none → 2026-09-01; baseline finish none → 2026-09-01 |
| 264 | **Cortes longitudinais** | 2026-05-28 → 2026-09-02 (+97d) | 2026-05-28 → 2026-09-02 (+97d) | 19d → 0d | baseline start none → 2026-09-02; baseline finish none → 2026-09-02 |
| 265 | Indicar simbologias de representação gráfica, conforme NBR 6492:2021; | 2026-05-28 → 2026-09-02 (+97d) | 2026-05-28 → 2026-09-02 (+97d) | 25d → 6d | baseline start none → 2026-09-02; baseline finish none → 2026-09-02 |
| 266 | Indicação de Escala; | 2026-05-28 → 2026-09-02 (+97d) | 2026-05-28 → 2026-09-02 (+97d) | 25d → 6d | baseline start none → 2026-09-02; baseline finish none → 2026-09-02 |
| 267 | Elementos estruturais principais; | 2026-05-28 → 2026-09-02 (+97d) | 2026-05-28 → 2026-09-02 (+97d) | 25d → 6d | baseline start none → 2026-09-02; baseline finish none → 2026-09-02 |
| 268 | Elementos de vedação internos e externos; | 2026-05-28 → 2026-09-02 (+97d) | 2026-05-28 → 2026-09-02 (+97d) | 25d → 6d | baseline start none → 2026-09-02; baseline finish none → 2026-09-02 |
| 269 | Esquadrias; | 2026-05-28 → 2026-09-02 (+97d) | 2026-05-28 → 2026-09-02 (+97d) | 25d → 6d | baseline start none → 2026-09-02; baseline finish none → 2026-09-02 |
| 270 | Identificação dos ambientes; | 2026-05-28 → 2026-09-02 (+97d) | 2026-05-28 → 2026-09-02 (+97d) | 25d → 6d | baseline start none → 2026-09-02; baseline finish none → 2026-09-02 |
| 271 | Cobertura com indicação da respectiva inclinação; | 2026-05-28 → 2026-09-02 (+97d) | 2026-05-28 → 2026-09-02 (+97d) | 25d → 6d | baseline start none → 2026-09-02; baseline finish none → 2026-09-02 |
| 272 | Cotas gerais; | 2026-05-28 → 2026-09-02 (+97d) | 2026-05-28 → 2026-09-02 (+97d) | 25d → 6d | baseline start none → 2026-09-02; baseline finish none → 2026-09-02 |
| 273 | Cotas de nível principal; | 2026-05-28 → 2026-09-02 (+97d) | 2026-05-28 → 2026-09-02 (+97d) | 25d → 6d | baseline start none → 2026-09-02; baseline finish none → 2026-09-02 |
| 274 | Eixos do projeto; | 2026-05-28 → 2026-09-02 (+97d) | 2026-05-28 → 2026-09-02 (+97d) | 25d → 6d | baseline start none → 2026-09-02; baseline finish none → 2026-09-02 |
| 275 | Relevo construído; | 2026-05-28 → 2026-09-02 (+97d) | 2026-05-28 → 2026-09-02 (+97d) | 25d → 6d | baseline start none → 2026-09-02; baseline finish none → 2026-09-02 |
| 276 | Projeção da topografia natural. | 2026-05-28 → 2026-09-02 (+97d) | 2026-05-28 → 2026-09-02 (+97d) | 19d → 0d | baseline start none → 2026-09-02; baseline finish none → 2026-09-02 |
| 277 | **Cortes transversais** | 2026-05-29 → 2026-09-03 (+97d) | 2026-05-29 → 2026-09-03 (+97d) | 19d → 0d | baseline start none → 2026-09-03; baseline finish none → 2026-09-03 |
| 278 | Indicar simbologias de representação gráfica, conforme NBR 6492:2021; | 2026-05-29 → 2026-09-03 (+97d) | 2026-05-29 → 2026-09-03 (+97d) | 24d → 5d | baseline start none → 2026-09-03; baseline finish none → 2026-09-03 |
| 279 | Indicação de Escala; | 2026-05-29 → 2026-09-03 (+97d) | 2026-05-29 → 2026-09-03 (+97d) | 24d → 5d | baseline start none → 2026-09-03; baseline finish none → 2026-09-03 |
| 280 | Elementos estruturais principais; | 2026-05-29 → 2026-09-03 (+97d) | 2026-05-29 → 2026-09-03 (+97d) | 24d → 5d | baseline start none → 2026-09-03; baseline finish none → 2026-09-03 |
| 281 | Elementos de vedação internos e externos; | 2026-05-29 → 2026-09-03 (+97d) | 2026-05-29 → 2026-09-03 (+97d) | 24d → 5d | baseline start none → 2026-09-03; baseline finish none → 2026-09-03 |
| 282 | Esquadrias; | 2026-05-29 → 2026-09-03 (+97d) | 2026-05-29 → 2026-09-03 (+97d) | 24d → 5d | baseline start none → 2026-09-03; baseline finish none → 2026-09-03 |
| 283 | Identificação dos ambientes; | 2026-05-29 → 2026-09-03 (+97d) | 2026-05-29 → 2026-09-03 (+97d) | 24d → 5d | baseline start none → 2026-09-03; baseline finish none → 2026-09-03 |
| 284 | Cobertura com indicação da respectiva inclinação; | 2026-05-29 → 2026-09-03 (+97d) | 2026-05-29 → 2026-09-03 (+97d) | 24d → 5d | baseline start none → 2026-09-03; baseline finish none → 2026-09-03 |
| 285 | Cotas gerais; | 2026-05-29 → 2026-09-03 (+97d) | 2026-05-29 → 2026-09-03 (+97d) | 24d → 5d | baseline start none → 2026-09-03; baseline finish none → 2026-09-03 |
| 286 | Cotas de nível principal; | 2026-05-29 → 2026-09-03 (+97d) | 2026-05-29 → 2026-09-03 (+97d) | 24d → 5d | baseline start none → 2026-09-03; baseline finish none → 2026-09-03 |
| 287 | Eixos do projeto; | 2026-05-29 → 2026-09-03 (+97d) | 2026-05-29 → 2026-09-03 (+97d) | 24d → 5d | baseline start none → 2026-09-03; baseline finish none → 2026-09-03 |
| 288 | Relevo construído; | 2026-05-29 → 2026-09-03 (+97d) | 2026-05-29 → 2026-09-03 (+97d) | 24d → 5d | baseline start none → 2026-09-03; baseline finish none → 2026-09-03 |
| 289 | Projeção da topografia natural | 2026-05-29 → 2026-09-03 (+97d) | 2026-05-29 → 2026-09-03 (+97d) | 19d → 0d | baseline start none → 2026-09-03; baseline finish none → 2026-09-03 |
| 290 | **Elevações** | 2026-06-01 → 2026-09-04 (+95d) | 2026-06-01 → 2026-09-04 (+95d) | 19d → 0d | baseline start none → 2026-09-04; baseline finish none → 2026-09-04 |
| 291 | Indicar simbologias de representação gráfica, conforme NBR 6492:2021; | 2026-06-01 → 2026-09-04 (+95d) | 2026-06-01 → 2026-09-04 (+95d) | 19d → 0d | baseline start none → 2026-09-04; baseline finish none → 2026-09-04 |
| 292 | Indicação de Escala; | 2026-06-01 → 2026-09-04 (+95d) | 2026-06-01 → 2026-09-04 (+95d) | 19d → 0d | baseline start none → 2026-09-04; baseline finish none → 2026-09-04 |
| 293 | Elementos estruturais principais; | 2026-06-01 → 2026-09-04 (+95d) | 2026-06-01 → 2026-09-04 (+95d) | 19d → 0d | baseline start none → 2026-09-04; baseline finish none → 2026-09-04 |
| 294 | Elementos de vedação internos e externos; | 2026-06-01 → 2026-09-04 (+95d) | 2026-06-01 → 2026-09-04 (+95d) | 19d → 0d | baseline start none → 2026-09-04; baseline finish none → 2026-09-04 |
| 295 | Esquadrias (sem código e sem quadro); | 2026-06-01 → 2026-09-04 (+95d) | 2026-06-01 → 2026-09-04 (+95d) | 19d → 0d | baseline start none → 2026-09-04; baseline finish none → 2026-09-04 |
| 296 | Relevo construído; | 2026-06-01 → 2026-09-04 (+95d) | 2026-06-01 → 2026-09-04 (+95d) | 19d → 0d | baseline start none → 2026-09-04; baseline finish none → 2026-09-04 |

| ID | Task | Start | Finish | Duration | Complete | Total float | Predecessors | Other |
| --- | --- | --- | --- | --- | --- | --- | --- | --- |
| 297 | Cotas gerais; | 2026-06-01 → 2026-09-04 (+95d) | 2026-06-01 → 2026-09-04 (+95d) |  |  | 19d → 0d |  | baseline start none → 2026-09-04; baseline finish none → 2026-09-04 |
| 298 | Cotas de nível principais; | 2026-06-01 → 2026-09-04 (+95d) | 2026-06-01 → 2026-09-04 (+95d) |  |  | 19d → 0d |  | baseline start none → 2026-09-04; baseline finish none → 2026-09-04 |
| 299 | Cobertura (quando aparente). | 2026-06-01 → 2026-09-04 (+95d) | 2026-06-01 → 2026-09-04 (+95d) |  |  | 19d → 0d |  | baseline start none → 2026-09-04; baseline finish none → 2026-09-04 |
| 300 | Memorial Descritivo | 2026-06-02 → 2026-09-08 (+98d) | 2026-06-08 → 2026-09-11 (+95d) |  |  | 19d → 0d |  | baseline start none → 2026-09-08; baseline finish none → 2026-09-11 |
| 301 | Aprovação de Conformidade | 2026-06-03 → 2026-09-09 (+98d) | 2026-06-08 → 2026-09-11 (+95d) |  |  | 19d → 0d |  | baseline start none → 2026-09-09; baseline finish none → 2026-09-11 |
| 302 | Material para entrega ao contrato | 2026-06-03 → 2026-09-09 (+98d) | 2026-06-08 → 2026-09-11 (+95d) |  |  | 19d → 0d |  | baseline start none → 2026-09-09; baseline finish none → 2026-09-11 |
| 303 | **Engenharia** | 2026-05-07 → 2026-07-27 A (+81d) | 2026-07-03 → 2026-09-11 (+70d) | 41d? → 34d | 0% → 5% |  |  | baseline start none → 2026-07-27; baseline finish none → 2026-09-11 |
| 304 | **Estrutura** | 2026-05-08 → 2026-07-27 A (+80d) | 2026-06-25 → 2026-09-11 (+78d) |  | 0% → 3% | 6d → 0d |  | baseline start none → 2026-07-27; baseline finish none → 2026-09-11 |
| 305 | **LOD 100 — Premissas, diretrizes e interfaces** | 2026-05-08 → 2026-07-27 A (+80d) | 2026-05-18 → 2026-08-04 (+78d) |  | 0% → 25% | 6d → 27d |  | baseline start none → 2026-07-27; baseline finish none → 2026-08-04 |
| 306 | Levantamento de tipos de cargas globais estimadas (permanentes, acidentais, vento e especiais). | 2026-05-08 → 2026-07-27 A (+80d) | 2026-05-11 → 2026-07-28 (+78d) |  | 0% → 80% | 38d → 32d | 202SS → 202SS-9d | baseline start none → 2026-07-27; baseline finish none → 2026-07-28 |
| 307 | Estudo volumétrico com modulação inicial de pilares, vigas e lajes. Entendendo vãos e desafios | 2026-05-08 → 2026-07-27 A (+80d) | 2026-05-14 → 2026-07-31 (+78d) |  | 0% → 32% | 35d → 29d | 202SS → 202SS-9d | baseline start none → 2026-07-27; baseline finish none → 2026-07-31 |
| 308 | Localização aproximada de elementos estruturais principais. Avaliando vãos e estudando posições | 2026-05-08 → 2026-07-27 A (+80d) | 2026-05-11 → 2026-07-28 (+78d) |  | 0% → 80% | 6d → 0d | 202SS → 202SS-9d | baseline start none → 2026-07-27; baseline finish none → 2026-07-28 |
| 309 | Estudo de viabilidade técnica e construtiva. | 2026-05-12 → 2026-07-29 (+78d) | 2026-05-14 → 2026-07-31 (+78d) |  |  | 6d → 0d |  | baseline start none → 2026-07-29; baseline finish none → 2026-07-31 |
| 310 | Definição preliminar do sistema estrutural (concreto armado, metálica ou mista). | 2026-05-12 → 2026-07-29 (+78d) | 2026-05-14 → 2026-07-31 (+78d) |  |  | 35d → 29d |  | baseline start none → 2026-07-29; baseline finish none → 2026-07-31 |
| 311 | Estimativa preliminar de tipologias de fundações (sapatas, blocos, estacas). | 2026-05-15 → 2026-08-03 (+80d) | 2026-05-18 → 2026-08-04 (+78d) |  |  | 33d → 27d |  | baseline start none → 2026-08-03; baseline finish none → 2026-08-04 |
| 312 | Previsão de áreas técnicas, casas de máquinas, reservatórios elevados e estrutura de cobertura. | 2026-05-15 → 2026-08-03 (+80d) | 2026-05-18 → 2026-08-04 (+78d) |  |  | 6d → 0d |  | baseline start none → 2026-08-03; baseline finish none → 2026-08-04 |
| 313 | **LOD 200 — Validação interdisciplinar e solução preliminar** | 2026-05-19 → 2026-08-05 (+78d) | 2026-06-16 → 2026-09-01 (+77d) |  |  | 6d → 0d |  | baseline start none → 2026-08-05; baseline finish none → 2026-09-01 |
| 314 | Lista preliminar de cargas e ações para dimensionamento. | 2026-05-19 → 2026-08-05 (+78d) | 2026-05-25 → 2026-08-11 (+78d) |  |  | 6d → 0d |  | baseline start none → 2026-08-05; baseline finish none → 2026-08-11 |
| 315 | Definição preliminar de alturas de pavimentos e níveis de fundação. | 2026-05-19 → 2026-08-05 (+78d) | 2026-05-25 → 2026-08-11 (+78d) |  |  | 28d → 22d |  | baseline start none → 2026-08-05; baseline finish none → 2026-08-11 |
| 316 | Indicação aproximada do sistema de cobertura (tesouras, treliças, vigamento metálico ou concreto). | 2026-05-19 → 2026-08-05 (+78d) | 2026-05-25 → 2026-08-11 (+78d) |  |  | 28d → 22d |  | baseline start none → 2026-08-05; baseline finish none → 2026-08-11 |
| 317 | Modelagem genérica de pilares, vigas, lajes e fundações. | 2026-05-26 → 2026-08-12 (+78d) | 2026-06-01 → 2026-08-18 (+78d) |  |  | 23d → 17d |  | baseline start none → 2026-08-12; baseline finish none → 2026-08-18 |
| 318 | Traçado preliminar de elementos especiais (escadas, rampas estruturais, reservatórios). | 2026-05-26 → 2026-08-12 (+78d) | 2026-06-01 → 2026-08-18 (+78d) |  |  | 18d → 12d |  | baseline start none → 2026-08-12; baseline finish none → 2026-08-18 |
| 319 | Arquivo IFC, plantas de forma e planta de locação | 2026-05-26 → 2026-08-12 (+78d) | 2026-06-01 → 2026-08-18 (+78d) |  |  | 6d → 0d |  | baseline start none → 2026-08-12; baseline finish none → 2026-08-18 |
| 320 | Inserção de fundações com tipologia e dimensões preliminares. | 2026-06-02 → 2026-08-19 (+78d) | 2026-06-09 → 2026-08-25 (+77d) |  |  | 18d → 12d |  | baseline start none → 2026-08-19; baseline finish none → 2026-08-25 |
| 321 | Compatibilização inicial com arquitetura e demais disciplinas. | 2026-06-02 → 2026-08-19 (+78d) | 2026-06-09 → 2026-08-25 (+77d) |  |  | 18d → 12d |  | baseline start none → 2026-08-19; baseline finish none → 2026-08-25 |
| 322 | Indicação de passagens de infraestrutura (shafts, aberturas em lajes e vigas). | 2026-06-02 → 2026-08-19 (+78d) | 2026-06-09 → 2026-08-25 (+77d) |  |  | 18d → 12d |  | baseline start none → 2026-08-19; baseline finish none → 2026-08-25 |
| 323 | Modelagem assertiva de elementos principais com dimensões aproximadas (largura, altura, espessura). | 2026-06-02 → 2026-08-19 (+78d) | 2026-06-16 → 2026-09-01 (+77d) |  |  | 6d → 0d |  | baseline start none → 2026-08-19; baseline finish none → 2026-09-01 |
| 324 | Modelagem estimada de armaduras principais (em nível de concepção). | 2026-06-10 → 2026-08-26 (+77d) | 2026-06-16 → 2026-09-01 (+77d) |  |  | 6d → 0d |  | baseline start none → 2026-08-26; baseline finish none → 2026-09-01 |
| 325 | **LOD 300 - Consolidação e documentação de entrega** | 2026-06-17 → 2026-09-02 (+77d) | 2026-06-25 → 2026-09-11 (+78d) |  |  | 6d → 0d |  | baseline start none → 2026-09-02; baseline finish none → 2026-09-11 |
| 326 | Indicação de níveis e cotas exatas. | 2026-06-17 → 2026-09-02 (+77d) | 2026-06-25 → 2026-09-11 (+78d) |  |  | 6d → 0d |  | baseline start none → 2026-09-02; baseline finish none → 2026-09-11 |
| 327 | Quadro de cargas atualizado. | 2026-06-17 → 2026-09-02 (+77d) | 2026-06-25 → 2026-09-11 (+78d) |  |  | 6d → 0d |  | baseline start none → 2026-09-02; baseline finish none → 2026-09-11 |
| 328 | Dimensionamento final de fundações conforme sondagem e cálculo estrutural. | 2026-06-17 → 2026-09-02 (+77d) | 2026-06-25 → 2026-09-11 (+78d) |  |  | 6d → 0d |  | baseline start none → 2026-09-02; baseline finish none → 2026-09-11 |
| 329 | Definição final dos elementos da cobertura (treliças, vigas, chapas, purlins). | 2026-06-17 → 2026-09-02 (+77d) | 2026-06-25 → 2026-09-11 (+78d) |  |  | 6d → 0d |  | baseline start none → 2026-09-02; baseline finish none → 2026-09-11 |
| 330 | Compatibilização final com arquitetura e instalações (aberturas, embutidos e passagens). | 2026-06-17 → 2026-09-02 (+77d) | 2026-06-25 → 2026-09-11 (+78d) |  |  | 6d → 0d |  | baseline start none → 2026-09-02; baseline finish none → 2026-09-11 |
| 331 | Modelagem definitiva de pilares, vigas, lajes, blocos, sapatas e estacas. | 2026-06-17 → 2026-09-02 (+77d) | 2026-06-25 → 2026-09-11 (+78d) |  |  | 6d → 0d |  | baseline start none → 2026-09-02; baseline finish none → 2026-09-11 |
| 332 | Planta estrutural com todos os elementos identificados. | 2026-06-17 → 2026-09-02 (+77d) | 2026-06-25 → 2026-09-11 (+78d) |  |  | 6d → 0d |  | baseline start none → 2026-09-02; baseline finish none → 2026-09-11 |
| 333 | Memorial descritivo contendo: objetivos, justificativa, descrição do sistema, concepção de fundações/cobertura, especificações e quadro de cargas. | 2026-06-17 → 2026-09-02 (+77d) | 2026-06-25 → 2026-09-11 (+78d) |  |  | 6d → 0d |  | baseline start none → 2026-09-02; baseline finish none → 2026-09-11 |
| 334 | Normas técnicas utilizadas (NBR 6118, 6120, 6122, 8800, etc.). | 2026-06-17 → 2026-09-02 (+77d) | 2026-06-25 → 2026-09-11 (+78d) |  |  | 6d → 0d |  | baseline start none → 2026-09-02; baseline finish none → 2026-09-11 |
| 335 | Consolidar documentação de entrega e emissão formal da disciplina | 2026-06-17 → 2026-09-02 (+77d) | 2026-06-25 → 2026-09-11 (+78d) |  |  | 6d → 0d |  | baseline start none → 2026-09-02; baseline finish none → 2026-09-11 |
| 336 | Aprovação de Conformidade | 2026-06-23 → 2026-09-09 (+78d) | 2026-06-25 → 2026-09-11 (+78d) |  |  | 6d → 0d |  | baseline start none → 2026-09-09; baseline finish none → 2026-09-11 |
| 337 | Material para entrega ao contrato | 2026-06-23 → 2026-09-09 (+78d) | 2026-06-25 → 2026-09-11 (+78d) |  |  | 6d → 0d |  | baseline start none → 2026-09-09; baseline finish none → 2026-09-11 |
| 338 | **Hidrossanitário** | 2026-05-07 → 2026-07-27 A (+81d) | 2026-06-30 → 2026-09-11 (+73d) | 38d → 34d | 0% → 6% | 3d → 0d |  | baseline start none → 2026-07-27; baseline finish none → 2026-09-11 |
| 339 | **LOD 100 — Premissas, diretrizes e interfaces** | 2026-05-07 → 2026-07-27 A (+81d) | 2026-05-21 → 2026-08-05 (+76d) | 11d → 8d | 0% → 22% | 3d → 26d |  | baseline start none → 2026-07-27; baseline finish none → 2026-08-05 |
| 340 | Memorial preliminar | 2026-05-08 → 2026-07-27 A (+80d) | 2026-05-21 → 2026-08-05 (+76d) | 10d → 8d | 0% → 20% | 30d → 26d | 202SS → 202SS-9d | baseline start none → 2026-07-27; baseline finish none → 2026-08-05 |
| 341 | Indicação de áreas técnicas | 2026-05-08 → 2026-07-27 A (+80d) | 2026-05-15 → 2026-08-03 (+80d) |  | 0% → 27% | 34d → 28d | 202SS → 202SS-9d | baseline start none → 2026-07-27; baseline finish none → 2026-08-03 |
| 342 | Planta baixa com traçado conceitual | 2026-05-08 → 2026-07-27 A (+80d) | 2026-05-15 → 2026-08-03 (+80d) |  | 0% → 27% | 34d → 28d | 202SS → 202SS-9d | baseline start none → 2026-07-27; baseline finish none → 2026-08-03 |
| 343 | Pontos de consumo principais e coletas sanitárias | 2026-05-08 → 2026-07-27 A (+80d) | 2026-05-15 → 2026-08-03 (+80d) |  | 0% → 27% | 6d → 28d | 202SS → 202SS-9d | baseline start none → 2026-07-27; baseline finish none → 2026-08-03 |
| 344 | Classificação de uso | 2026-05-07 → 2026-07-27 A (+81d) | 2026-05-20 → 2026-08-05 (+77d) | 10d → 8d | 0% → 20% | 31d → 26d | 343FF → 202SS-9d | baseline start none → 2026-07-27; baseline finish none → 2026-08-05 |
| 345 | Diretrizes de espaço | 2026-05-07 → 2026-07-27 A (+81d) | 2026-05-20 → 2026-08-05 (+77d) | 10d → 8d | 0% → 20% | 31d → 26d | 343FF → 202SS-9d | baseline start none → 2026-07-27; baseline finish none → 2026-08-05 |
| 346 | Estimativa de demanda ou população de uso | 2026-05-07 → 2026-07-27 A (+81d) | 2026-05-20 → 2026-08-05 (+77d) | 10d → 8d | 0% → 20% | 31d → 26d | 343FF → 202SS-9d | baseline start none → 2026-07-27; baseline finish none → 2026-08-05 |
| 347 | Levantamento de elementos especiais dentre outras disciplinas de Engenharia e Arquitetura | 2026-05-07 → 2026-07-27 A (+81d) | 2026-05-20 → 2026-08-05 (+77d) | 10d → 8d | 0% → 20% | 3d → 0d | 343FF → 202SS-9d | baseline start none → 2026-07-27; baseline finish none → 2026-08-05 |
| 348 | **LOD 200 — Validação interdisciplinar e solução preliminar** | 2026-05-21 → 2026-08-06 (+77d) | 2026-06-18 → 2026-09-02 (+76d) |  |  | 3d → 0d |  | baseline start none → 2026-08-06; baseline finish none → 2026-09-02 |
| 349 | Critérios normativos adotados (ABNT, concessionárias, etc.) | 2026-05-21 → 2026-08-06 (+77d) | 2026-06-18 → 2026-09-02 (+76d) |  |  | 11d → 6d |  | baseline start none → 2026-08-06; baseline finish none → 2026-09-02 |
| 350 | Informações de demanda na concessionária (DPE ou AVT Aviso de Viabilidade Técnica) | 2026-05-21 → 2026-08-06 (+77d) | 2026-06-18 → 2026-09-02 (+76d) |  |  | 11d → 6d |  | baseline start none → 2026-08-06; baseline finish none → 2026-09-02 |
| 351 | Recebimento e Análise de Sondagem (permeabilidade ou percolação) | 2026-05-21 → 2026-08-06 (+77d) | 2026-06-18 → 2026-09-02 (+76d) |  |  | 11d → 6d |  | baseline start none → 2026-08-06; baseline finish none → 2026-09-02 |
| 352 | Recebimento e Análise de Topografia | 2026-05-21 → 2026-08-06 (+77d) | 2026-06-18 → 2026-09-02 (+76d) |  |  | 11d → 6d |  | baseline start none → 2026-08-06; baseline finish none → 2026-09-02 |
| 353 | Estudo de viabilidade técnica, econômica e ambiental | 2026-05-21 → 2026-08-06 (+77d) | 2026-06-18 → 2026-09-02 (+76d) |  |  | 11d → 6d |  | baseline start none → 2026-08-06; baseline finish none → 2026-09-02 |
| 354 | Lista preliminar de sistemas envolvidos. | 2026-05-21 → 2026-08-06 (+77d) | 2026-06-18 → 2026-09-02 (+76d) |  |  | 11d → 6d |  | baseline start none → 2026-08-06; baseline finish none → 2026-09-02 |
| 355 | Planta baixa e cortes estimada contendo: - Traçado preliminar de barrilete, ramais, colunas - Diâmetros estimados - Localização aproximada das bombas e unidades de tratamento e reúso - Localização do ramal predial de água e esgoto - Localização aproximada | 2026-05-21 → 2026-08-06 (+77d) | 2026-06-18 → 2026-09-02 (+76d) |  |  | 3d → 0d |  | baseline start none → 2026-08-06; baseline finish none → 2026-09-02 |
| 356 | **LOD 300 - Consolidação e documentação de entrega** | 2026-06-19 → 2026-09-03 (+76d) | 2026-06-30 → 2026-09-11 (+73d) | 8d → 6d |  | 3d → 0d |  | baseline start none → 2026-09-03; baseline finish none → 2026-09-11 |
| 357 | Planta, corte e detalhe isométrico contendo: - Modelagem detalhada com diâmetros, cotas e inclinações definitivas (barriletes, colunas, ramais) - Quantitativos e especificação técnica dos materiais (tubos, conexões, reservatórios, registros e válvulas com | 2026-06-19 → 2026-09-03 (+76d) | 2026-06-30 → 2026-09-11 (+73d) | 8d → 6d |  | 3d → 0d |  | baseline start none → 2026-09-03; baseline finish none → 2026-09-11 |
| 358 | Memorial descritivo | 2026-06-26 → 2026-09-09 (+75d) | 2026-06-30 → 2026-09-11 (+73d) |  |  | 3d → 0d |  | baseline start none → 2026-09-09; baseline finish none → 2026-09-11 |
| 359 | Memória de cálculo (pressão, vazão, diâmetros, perda de carga). | 2026-06-26 → 2026-09-09 (+75d) | 2026-06-30 → 2026-09-11 (+73d) |  |  | 3d → 0d |  | baseline start none → 2026-09-09; baseline finish none → 2026-09-11 |
| 360 | Aprovação de Conformidade | 2026-06-26 → 2026-09-09 (+75d) | 2026-06-30 → 2026-09-11 (+73d) |  |  | 3d → 0d |  | baseline start none → 2026-09-09; baseline finish none → 2026-09-11 |
| 361 | Material para entrega ao contrato | 2026-06-26 → 2026-09-09 (+75d) | 2026-06-30 → 2026-09-11 (+73d) |  |  | 3d → 0d |  | baseline start none → 2026-09-09; baseline finish none → 2026-09-11 |
| 362 | **AVAC** | 2026-05-08 → 2026-07-27 A (+80d) | 2026-06-25 → 2026-09-11 (+78d) |  | 0% → 5% |  |  | baseline start none → 2026-07-27; baseline finish none → 2026-09-11 |
| 363 | **LOD 100 — Premissas, diretrizes e interfaces** | 2026-05-08 → 2026-07-27 A (+80d) | 2026-06-05 → 2026-08-24 (+80d) | 20d → 21d | 0% → 13% | 0d → 13d |  | baseline start none → 2026-07-27; baseline finish none → 2026-08-24 |
| 364 | Estimativa de carga térmica por ambiente. | 2026-05-08 → 2026-07-27 A (+80d) | 2026-05-21 → 2026-08-07 (+78d) |  | 0% → 16% | 30d → 24d | 202SS → 202SS-9d | baseline start none → 2026-07-27; baseline finish none → 2026-08-07 |
| 365 | Localização preliminar de unidades de tratamento de ar, condensadoras e exaustores. | 2026-05-08 → 2026-07-27 A (+80d) | 2026-05-21 → 2026-08-07 (+78d) |  | 0% → 16% | 30d → 24d | 202SS → 202SS-9d | baseline start none → 2026-07-27; baseline finish none → 2026-08-07 |
| 366 | Pontos locação para seus elementos no projeto arquitetônico. | 2026-05-08 → 2026-07-27 A (+80d) | 2026-05-21 → 2026-08-07 (+78d) |  | 0% → 16% |  | 202SS → 202SS-9d | baseline start none → 2026-07-27; baseline finish none → 2026-08-07 |

| ID | Task | Start | Finish | Duration | Complete | Total float | Predecessors | Other |
| --- | --- | --- | --- | --- | --- | --- | --- | --- |
| 367 | Estudo de viabilidade e rotas principais de distribuição de ar. | 2026-05-08 → 2026-07-27 A (+80d) | 2026-05-21 → 2026-08-07 (+78d) |  | 0% → 16% | 30d → 24d | 202SS → 202SS-9d | baseline start none → 2026-07-27; baseline finish none → 2026-08-07 |
| 368 | Reserva de espaços técnicos e shafts. | 2026-05-08 → 2026-07-27 A (+80d) | 2026-05-21 → 2026-08-07 (+78d) |  | 0% → 16% | 6d → 0d | 202SS → 202SS-9d | baseline start none → 2026-07-27; baseline finish none → 2026-08-07 |
| 369 | Levantamento de cargas especiais provenientes de outras disciplinas. | 2026-05-22 → 2026-08-11 (+81d) | 2026-06-05 → 2026-08-24 (+80d) |  |  | 20d → 13d | 391, 403 → 391, 403, 165, 177 | baseline start none → 2026-08-11; baseline finish none → 2026-08-24 |
| 370 | **LOD 200 — Validação interdisciplinar e solução preliminar** | 2026-05-22 → 2026-08-10 (+80d) | 2026-06-25 → 2026-09-11 (+78d) |  |  | 6d → 0d |  | baseline start none → 2026-08-10; baseline finish none → 2026-09-11 |
| 371 | Lista preliminar de sistemas HVAC envolvidos (expansão direta, VRF, chillers, ventilação, exaustão). | 2026-05-22 → 2026-08-10 (+80d) | 2026-06-25 → 2026-09-11 (+78d) |  |  | 6d → 0d |  | baseline start none → 2026-08-10; baseline finish none → 2026-09-11 |
| 372 | Planta baixa estimada contendo: pontos de insuflamento e retorno. | 2026-05-22 → 2026-08-10 (+80d) | 2026-06-25 → 2026-09-11 (+78d) |  |  | 6d → 0d |  | baseline start none → 2026-08-10; baseline finish none → 2026-09-11 |
| 373 | Rotas iniciais de dutos, tubulações e drenos. | 2026-05-22 → 2026-08-10 (+80d) | 2026-06-25 → 2026-09-11 (+78d) |  |  | 6d → 0d |  | baseline start none → 2026-08-10; baseline finish none → 2026-09-11 |
| 374 | Planta baixa estimada contendo: unidades internas e externas com posição preliminar. | 2026-05-22 → 2026-08-10 (+80d) | 2026-06-25 → 2026-09-11 (+78d) |  |  | 6d → 0d |  | baseline start none → 2026-08-10; baseline finish none → 2026-09-11 |
| 375 | Aprovação de Conformidade | 2026-06-23 → 2026-09-09 (+78d) | 2026-06-25 → 2026-09-11 (+78d) |  |  | 6d → 0d |  | baseline start none → 2026-09-09; baseline finish none → 2026-09-11 |
| 376 | Material para entrega ao contrato | 2026-06-23 → 2026-09-09 (+78d) | 2026-06-25 → 2026-09-11 (+78d) |  |  | 6d → 0d |  | baseline start none → 2026-09-09; baseline finish none → 2026-09-11 |
| 377 | **PCI (Incêndio)** | 2026-05-08 → 2026-07-27 A (+80d) | 2026-06-25 → 2026-09-11 (+78d) |  | 0% → 4% |  |  | baseline start none → 2026-07-27; baseline finish none → 2026-09-11 |
| 378 | **LOD 100 — Premissas, diretrizes e interfaces** | 2026-05-08 → 2026-07-27 A (+80d) | 2026-05-21 → 2026-08-07 (+78d) |  | 0% → 16% | 0d → 24d |  | baseline start none → 2026-07-27; baseline finish none → 2026-08-07 |
| 379 | Estudo e avaliação da arquitetura atendendo as normas competentes de PCI | 2026-05-08 → 2026-07-27 A (+80d) | 2026-05-21 → 2026-08-07 (+78d) |  | 0% → 16% | 30d → 24d | 202SS → 202SS-9d | baseline start none → 2026-07-27; baseline finish none → 2026-08-07 |
| 380 | Avaliação do espaço para CMI e Central de Gás. | 2026-05-08 → 2026-07-27 A (+80d) | 2026-05-21 → 2026-08-07 (+78d) |  | 0% → 16% | 30d → 24d | 202SS → 202SS-9d | baseline start none → 2026-07-27; baseline finish none → 2026-08-07 |
| 381 | Pontos locação para seus elementos no projeto arquitetônico | 2026-05-08 → 2026-07-27 A (+80d) | 2026-05-21 → 2026-08-07 (+78d) |  | 0% → 16% |  | 202SS → 202SS-9d | baseline start none → 2026-07-27; baseline finish none → 2026-08-07 |
| 382 | **LOD 200 — Validação interdisciplinar e solução preliminar** | 2026-05-22 → 2026-08-10 (+80d) | 2026-06-25 → 2026-09-11 (+78d) |  |  | 6d → 0d |  | baseline start none → 2026-08-10; baseline finish none → 2026-09-11 |
| 383 | Definição da classificação da edificação e o risco de incêndio | 2026-05-22 → 2026-08-10 (+80d) | 2026-06-25 → 2026-09-11 (+78d) |  |  | 6d → 0d |  | baseline start none → 2026-08-10; baseline finish none → 2026-09-11 |
| 384 | Cálculos pré-dimensionados dos extintores, hidrantes e bomba. | 2026-05-22 → 2026-08-10 (+80d) | 2026-06-25 → 2026-09-11 (+78d) |  |  | 6d → 0d |  | baseline start none → 2026-08-10; baseline finish none → 2026-09-11 |
| 385 | Avaliação das rotas de fuga, ventilação de CMI e outros elementos de importância para as normas de PCI | 2026-05-22 → 2026-08-10 (+80d) | 2026-06-25 → 2026-09-11 (+78d) |  |  | 6d → 0d |  | baseline start none → 2026-08-10; baseline finish none → 2026-09-11 |
| 386 | Aprovação de Conformidade | 2026-06-23 → 2026-09-09 (+78d) | 2026-06-25 → 2026-09-11 (+78d) |  |  | 6d → 0d |  | baseline start none → 2026-09-09; baseline finish none → 2026-09-11 |
| 387 | Material para entrega ao contrato | 2026-06-23 → 2026-09-09 (+78d) | 2026-06-25 → 2026-09-11 (+78d) |  |  | 6d → 0d |  | baseline start none → 2026-09-09; baseline finish none → 2026-09-11 |
| 388 | **Elétrica Baixa Tensão** | 2026-05-08 → 2026-07-27 A (+80d) | 2026-07-03 → 2026-09-11 (+70d) | 40d → 34d | 0% → 4% |  |  | baseline start none → 2026-07-27; baseline finish none → 2026-09-11 |
| 389 | **LOD 100 — Concepção** | 2026-05-08 → 2026-07-27 A (+80d) | 2026-05-29 → 2026-08-13 (+76d) | 16d → 14d | 0% → 21% | 6d → 20d |  | baseline start none → 2026-07-27; baseline finish none → 2026-08-13 |
| 390 | Avaliação e Diretrizes Técnicas para Arquitetura | 2026-05-08 → 2026-07-27 A (+80d) | 2026-05-15 → 2026-07-30 (+76d) | 6d → 4d | 0% → 40% | 34d → 30d | 202SS → 202SS-9d | baseline start none → 2026-07-27; baseline finish none → 2026-07-30 |
| 391 | Estimativa de Cargas e Demanda | 2026-05-08 → 2026-07-27 A (+80d) | 2026-05-21 → 2026-08-04 (+75d) | 10d → 7d | 0% → 23% | 6d → 7d | 202SS → 202SS-9d | baseline start none → 2026-07-27; baseline finish none → 2026-08-04 |
| 392 | Levantamento de Equipamentos de Outras Disciplinas | 2026-05-22 → 2026-08-10 (+80d) | 2026-05-29 → 2026-08-13 (+76d) | 6d → 4d |  |  |  | baseline start none → 2026-08-10; baseline finish none → 2026-08-13 |
| 393 | **LOD 200 — Anteprojeto** | 2026-06-01 → 2026-08-14 (+74d) | 2026-06-26 → 2026-09-04 (+70d) | 19d → 16d |  |  |  | baseline start none → 2026-08-14; baseline finish none → 2026-09-04 |
| 394 | TUGs Estimados | 2026-06-01 → 2026-08-14 (+74d) | 2026-06-26 → 2026-09-04 (+70d) | 19d → 16d |  |  |  | baseline start none → 2026-08-14; baseline finish none → 2026-09-04 |
| 395 | Pontos de Luz Estimados | 2026-06-01 → 2026-08-14 (+74d) | 2026-06-26 → 2026-09-04 (+70d) | 19d → 16d |  |  |  | baseline start none → 2026-08-14; baseline finish none → 2026-09-04 |
| 396 | TUEs e Quadros Estimados | 2026-06-01 → 2026-08-14 (+74d) | 2026-06-26 → 2026-09-04 (+70d) | 19d → 16d |  |  |  | baseline start none → 2026-08-14; baseline finish none → 2026-09-04 |
| 397 | LOD 300 - Consolidação e documentação de entrega | 2026-06-29 → 2026-09-08 (+71d) | 2026-07-03 → 2026-09-11 (+70d) | 5d → 4d |  |  |  | baseline start none → 2026-09-08; baseline finish none → 2026-09-11 |
| 398 | Aprovação de Conformidade | 2026-07-01 → 2026-09-09 (+70d) | 2026-07-03 → 2026-09-11 (+70d) |  |  |  |  | baseline start none → 2026-09-09; baseline finish none → 2026-09-11 |
| 399 | Material para entrega ao contrato | 2026-07-01 → 2026-09-09 (+70d) | 2026-07-03 → 2026-09-11 (+70d) |  |  |  |  | baseline start none → 2026-09-09; baseline finish none → 2026-09-11 |
| 400 | **Telecom** | 2026-05-08 → 2026-07-27 A (+80d) | 2026-06-25 → 2026-09-11 (+78d) |  | 0% → 7% | 6d → 0d |  | baseline start none → 2026-07-27; baseline finish none → 2026-09-11 |
| 401 | **LOD 100 — Concepção** | 2026-05-08 → 2026-07-27 A (+80d) | 2026-05-21 → 2026-08-07 (+78d) |  | 0% → 16% | 6d → 24d |  | baseline start none → 2026-07-27; baseline finish none → 2026-08-07 |
| 402 | Avaliação e Diretrizes Técnicas para Arquitetura | 2026-05-08 → 2026-07-27 A (+80d) | 2026-05-21 → 2026-08-07 (+78d) |  | 0% → 16% | 30d → 24d | 202SS → 202SS-9d | baseline start none → 2026-07-27; baseline finish none → 2026-08-07 |
| 403 | Estimativa de Demanda de Telecomunicações | 2026-05-08 → 2026-07-27 A (+80d) | 2026-05-21 → 2026-08-07 (+78d) |  | 0% → 16% | 20d → 14d | 202SS → 202SS-9d | baseline start none → 2026-07-27; baseline finish none → 2026-08-07 |
| 404 | Levantamento de Equipamentos e Interfaces com Outras Disciplinas | 2026-05-08 → 2026-07-27 A (+80d) | 2026-05-21 → 2026-08-07 (+78d) |  | 0% → 16% | 6d → 0d | 202SS → 202SS-9d | baseline start none → 2026-07-27; baseline finish none → 2026-08-07 |
| 405 | **LOD 200 — Anteprojeto** | 2026-05-22 → 2026-08-10 (+80d) | 2026-06-19 → 2026-09-04 (+77d) |  |  | 6d → 0d |  | baseline start none → 2026-08-10; baseline finish none → 2026-09-04 |
| 406 | Pontos de Telecomunicações Estimados (Rede, Voz, CFTV e Demais Sistemas) | 2026-05-22 → 2026-08-10 (+80d) | 2026-06-05 → 2026-08-21 (+77d) |  |  | 6d → 0d |  | baseline start none → 2026-08-10; baseline finish none → 2026-08-21 |
| 407 | Racks Estimados | 2026-05-22 → 2026-08-10 (+80d) | 2026-06-05 → 2026-08-21 (+77d) |  |  | 6d → 0d |  | baseline start none → 2026-08-10; baseline finish none → 2026-08-21 |
| 408 | Infraestrutura de Telecomunicações Preliminar | 2026-06-08 → 2026-08-24 (+77d) | 2026-06-19 → 2026-09-04 (+77d) |  |  | 6d → 0d |  | baseline start none → 2026-08-24; baseline finish none → 2026-09-04 |
| 409 | LOD 300 - Consolidação e documentação de entrega | 2026-06-22 → 2026-09-08 (+78d) | 2026-06-25 → 2026-09-11 (+78d) |  |  | 6d → 0d |  | baseline start none → 2026-09-08; baseline finish none → 2026-09-11 |
| 410 | Aprovação de Conformidade | 2026-06-23 → 2026-09-09 (+78d) | 2026-06-25 → 2026-09-11 (+78d) |  |  | 6d → 0d |  | baseline start none → 2026-09-09; baseline finish none → 2026-09-11 |
| 411 | Material para entrega ao contrato | 2026-06-23 → 2026-09-09 (+78d) | 2026-06-25 → 2026-09-11 (+78d) |  |  | 6d → 0d |  | baseline start none → 2026-09-09; baseline finish none → 2026-09-11 |
| 412 | **SPDA** | 2026-05-08 → 2026-07-27 A (+80d) | 2026-06-25 → 2026-09-11 (+78d) |  | 0% → 7% | 6d → 0d |  | baseline start none → 2026-07-27; baseline finish none → 2026-09-11 |
| 413 | **LOD 100 — Concepção** | 2026-05-08 → 2026-07-27 A (+80d) | 2026-05-21 → 2026-08-07 (+78d) |  | 0% → 16% | 6d → 24d |  | baseline start none → 2026-07-27; baseline finish none → 2026-08-07 |
| 414 | Avaliação e Diretrizes Técnicas para Arquitetura | 2026-05-08 → 2026-07-27 A (+80d) | 2026-05-21 → 2026-08-07 (+78d) |  | 0% → 16% | 30d → 24d | 202SS → 202SS-9d | baseline start none → 2026-07-27; baseline finish none → 2026-08-07 |
| 415 | Coleta de Informações da Edificação e Análise de Risco (ABNT NBR 5419-2) | 2026-05-08 → 2026-07-27 A (+80d) | 2026-05-21 → 2026-08-07 (+78d) |  | 0% → 16% | 30d → 24d | 202SS → 202SS-9d | baseline start none → 2026-07-27; baseline finish none → 2026-08-07 |
| 416 | Estudo Preliminar de Necessidade e Nível de Proteção do SPDA | 2026-05-08 → 2026-07-27 A (+80d) | 2026-05-21 → 2026-08-07 (+78d) |  | 0% → 16% | 6d → 0d | 202SS → 202SS-9d | baseline start none → 2026-07-27; baseline finish none → 2026-08-07 |
| 417 | **LOD 200 — Anteprojeto** | 2026-05-22 → 2026-08-10 (+80d) | 2026-06-19 → 2026-09-04 (+77d) |  |  | 6d → 0d |  | baseline start none → 2026-08-10; baseline finish none → 2026-09-04 |
| 418 | Definição da Estratégia de Proteção e Soluções Técnicas | 2026-05-22 → 2026-08-10 (+80d) | 2026-06-05 → 2026-08-21 (+77d) |  |  | 6d → 0d |  | baseline start none → 2026-08-10; baseline finish none → 2026-08-21 |
| 419 | Zoneamento de Captação, Descida e Traçados Preliminares | 2026-06-08 → 2026-08-24 (+77d) | 2026-06-19 → 2026-09-04 (+77d) |  |  | 10d → 4d |  | baseline start none → 2026-08-24; baseline finish none → 2026-09-04 |
| 420 | Estudo de Interferências, Compatibilização e Métodos Construtivos | 2026-06-08 → 2026-08-24 (+77d) | 2026-06-19 → 2026-09-04 (+77d) |  |  | 6d → 0d |  | baseline start none → 2026-08-24; baseline finish none → 2026-09-04 |
| 421 | LOD 300 - Consolidação e documentação de entrega | 2026-06-22 → 2026-09-08 (+78d) | 2026-06-25 → 2026-09-11 (+78d) |  |  | 6d → 0d |  | baseline start none → 2026-09-08; baseline finish none → 2026-09-11 |
| 422 | Aprovação de Conformidade | 2026-06-23 → 2026-09-09 (+78d) | 2026-06-25 → 2026-09-11 (+78d) |  |  | 6d → 0d |  | baseline start none → 2026-09-09; baseline finish none → 2026-09-11 |
| 423 | Material para entrega ao contrato | 2026-06-23 → 2026-09-09 (+78d) | 2026-06-25 → 2026-09-11 (+78d) |  |  | 6d → 0d |  | baseline start none → 2026-09-09; baseline finish none → 2026-09-11 |
| 424 | **Energia Renovável** | 2026-05-08 → 2026-07-27 A (+80d) | 2026-06-25 → 2026-09-11 (+78d) |  | 0% → 5% | 6d → 0d |  | baseline start none → 2026-07-27; baseline finish none → 2026-09-11 |
| 425 | **LOD 100 — Concepção** | 2026-05-08 → 2026-07-27 A (+80d) | 2026-05-21 → 2026-08-07 (+78d) |  | 0% → 16% | 6d → 24d |  | baseline start none → 2026-07-27; baseline finish none → 2026-08-07 |
| 426 | Viabilidade e Premissas de Geração | 2026-05-08 → 2026-07-27 A (+80d) | 2026-05-21 → 2026-08-07 (+78d) |  | 0% → 16% | 30d → 24d | 202SS → 202SS-9d | baseline start none → 2026-07-27; baseline finish none → 2026-08-07 |
| 427 | Levantamento Preliminar de Áreas e Sombreamento | 2026-05-08 → 2026-07-27 A (+80d) | 2026-05-21 → 2026-08-07 (+78d) |  | 0% → 16% | 6d → 0d | 202SS → 202SS-9d | baseline start none → 2026-07-27; baseline finish none → 2026-08-07 |
| 428 | Avaliação e Diretrizes Técnicas para Arquitetônico | 2026-05-08 → 2026-07-27 A (+80d) | 2026-05-21 → 2026-08-07 (+78d) |  | 0% → 16% | 30d → 24d | 202SS → 202SS-9d | baseline start none → 2026-07-27; baseline finish none → 2026-08-07 |
| 429 | **LOD 200 — Anteprojeto** | 2026-05-22 → 2026-08-10 (+80d) | 2026-06-19 → 2026-09-04 (+77d) |  |  | 6d → 0d |  | baseline start none → 2026-08-10; baseline finish none → 2026-09-04 |
| 430 | Layout Preliminar de Módulos, Inversores e String Boxes | 2026-05-22 → 2026-08-10 (+80d) | 2026-06-19 → 2026-09-04 (+77d) |  |  | 6d → 0d |  | baseline start none → 2026-08-10; baseline finish none → 2026-09-04 |
| 431 | Infraestrutura e Rotas Técnicas Preliminares (DC/AC e Aterramento) | 2026-05-22 → 2026-08-10 (+80d) | 2026-06-19 → 2026-09-04 (+77d) |  |  | 6d → 0d |  | baseline start none → 2026-08-10; baseline finish none → 2026-09-04 |
| 432 | Critérios Preliminares de Proteção e Estimativa de Quantitativos | 2026-05-22 → 2026-08-10 (+80d) | 2026-06-19 → 2026-09-04 (+77d) |  |  | 6d → 0d |  | baseline start none → 2026-08-10; baseline finish none → 2026-09-04 |
| 433 | LOD 300 - Consolidação e documentação de entrega | 2026-06-22 → 2026-09-08 (+78d) | 2026-06-25 → 2026-09-11 (+78d) |  |  | 6d → 0d |  | baseline start none → 2026-09-08; baseline finish none → 2026-09-11 |
| 434 | Aprovação de Conformidade | 2026-06-23 → 2026-09-09 (+78d) | 2026-06-25 → 2026-09-11 (+78d) |  |  | 6d → 0d |  | baseline start none → 2026-09-09; baseline finish none → 2026-09-11 |
| 435 | Material para entrega ao contrato | 2026-06-23 → 2026-09-09 (+78d) | 2026-06-25 → 2026-09-11 (+78d) |  |  | 6d → 0d |  | baseline start none → 2026-09-09; baseline finish none → 2026-09-11 |
| 436 | **003 - Teatro** | 2026-05-07 → 2026-07-10 A (+64d) | 2026-06-25 → 2026-09-11 (+78d) | 35d? → 45d | 0% → 26% | 6d → 0d |  | was named Gás; baseline start none → 2026-07-10; baseline finish none → 2026-09-11 |

| ID | Task | Start | Finish | Duration | Complete | Total float | Predecessors | Other |
| --- | --- | --- | --- | --- | --- | --- | --- | --- |
| 441 | Revisão de perímetro do terreno, recuos, taxa de ocupação e afastamentos | 2026-05-07 → 2026-07-10 A (+64d) | 2026-05-07 → 2026-08-06 A (+91d) | 1d? → 20d | 0% → 100% | 40d → none | none → 24FS+5d | constraint none → start no earlier than 2026-06-01; baseline start none → 2026-07-10; baseline finish none → 2026-08-06 |
| 449 | Compatibilização (pedir relatório de análise de projeto para disciplinas de engenharia) | 2026-05-07 → 2026-08-07 A (+92d) | 2026-05-07 → 2026-08-13 A (+98d) | 1d? → 5d | 0% → 100% | 40d → none | none → 448 | was named LOD 100 - PROJETO CONCEITUAL; baseline start none → 2026-08-07; baseline finish none → 2026-08-13 |
| 450 | Compatibilizar as rotas de fulga de acordo com as solicitações de PCI | 2026-05-07 → 2026-08-07 A (+92d) | 2026-05-07 → 2026-08-21 A (+106d) | 1d? → 11d | 0% → 100% | 40d → none | none → 448 | was named Fase de Preparação; baseline start none → 2026-08-07; baseline finish none → 2026-08-21 |
| 451 | Comatibilizar as prumadas com as equipes de engenharia | 2026-05-07 → 2026-08-07 A (+92d) | 2026-05-07 → 2026-08-21 A (+106d) | 1d? → 11d | 0% → 100% | 40d → none | none → 448 | was named Fase de Preparação; baseline start none → 2026-08-07; baseline finish none → 2026-08-21 |
| 454 | **Modelagem e compatibilização** | 2026-05-08 → 2026-08-14 A (+98d) | 2026-05-08 → 2026-08-27 (+111d) | 1d? → 10d | 0% → 39% | 39d → 10d |  | was named Decisões de projeto tomadas e suas respectivas justificativas; baseline start none → 2026-08-14; baseline finish none → 2026-08-27 |
| 455 | Ajustar o navegador de projeto conforme o padrão da Quanta - verificar se todas as vistas estão dentro da disciplina correta - alinahr com o líder da OS | 2026-05-08 → 2026-08-14 (+98d) | 2026-05-08 → 2026-08-27 (+111d) | 1d? → 10d |  | 39d → 10d | none → 449 | was named Elaboração/Geração de imagens para relatório (se necessário); baseline start none → 2026-08-14; baseline finish none → 2026-08-27 |
| 456 | Limpar o arquivo e transferir os padões de projeto da Quanta | 2026-05-08 → 2026-08-14 (+98d) | 2026-05-08 → 2026-08-27 (+111d) | 1d? → 10d |  | 39d → 10d | none → 449 | was named Partido Arquitetônico para o projeto; baseline start none → 2026-08-14; baseline finish none → 2026-08-27 |
| 457 | Criar Worksets (em caso de arquivos colaborados) | 2026-05-07 → 2026-08-14 (+99d) | 2026-05-07 → 2026-08-27 (+112d) | 1d? → 10d |  | 40d → 10d | none → 449 | was named Relatório/Memorial de Projeto Preliminar; baseline start none → 2026-08-14; baseline finish none → 2026-08-27 |
| 458 | Colocar todas as elementos em seus devidos Worksets | 2026-05-07 → 2026-08-14 (+99d) | 2026-05-07 → 2026-08-27 (+112d) | 1d? → 10d |  | 40d → 10d | none → 449 | was named Cobertura (quando aparente); baseline start none → 2026-08-14; baseline finish none → 2026-08-27 |
| 459 | Fazer ajustes dos modelos para Colaboração | 2026-05-07 → 2026-08-14 (+99d) | 2026-05-07 → 2026-08-27 (+112d) | 1d? → 10d |  | 40d → 10d | none → 449 | was named Cotas de nível principais; baseline start none → 2026-08-14; baseline finish none → 2026-08-27 |
| 460 | Mudar os pisos para o padrão da quanta (1º pavimento) | 2026-05-07 → 2026-08-14 A (+99d) | 2026-05-07 → 2026-08-27 A (+112d) | 1d? → 10d | 0% → 100% | 40d → none | none → 449 | was named Relevo; baseline start none → 2026-08-14; baseline finish none → 2026-08-27 |
| 461 | Mudar as parades para o padão da quanta (1º pavimento) | 2026-05-07 → 2026-08-14 A (+99d) | 2026-05-07 → 2026-08-27 A (+112d) | 1d? → 10d | 0% → 100% | 40d → none | none → 449 | was named Esquadrias (portas e janelas); baseline start none → 2026-08-14; baseline finish none → 2026-08-27 |
| 462 | Mudar as portas para o padão da quanta (1º pavimento) | 2026-05-07 → 2026-08-14 A (+99d) | 2026-05-07 → 2026-08-27 A (+112d) | 1d? → 10d | 0% → 100% | 40d → none | none → 449 | was named Vedações internas e externas; baseline start none → 2026-08-14; baseline finish none → 2026-08-27 |
| 463 | Mudar as soleiras para o padão da quanta | 2026-05-07 → 2026-08-14 A (+99d) | 2026-05-07 → 2026-08-27 A (+112d) | 1d? → 10d | 0% → 100% | 40d → none | none → 449 | was named Elementos estruturais principais (quando aparentes); baseline start none → 2026-08-14; baseline finish none → 2026-08-27 |
| 465 | Mudar metais para padrão da Quanta (1º pavimento) | 2026-05-08 → 2026-08-14 A (+98d) | 2026-05-08 → 2026-08-27 A (+111d) | 1d? → 10d | 0% → 100% | 39d → none | none → 449 | was named Relatório/Memorial de Projeto Preliminar; baseline start none → 2026-08-14; baseline finish none → 2026-08-27 |
| 467 | Ajustar ralos das áreas molhadas (1º pavimento) | 2026-05-08 → 2026-08-14 A (+98d) | 2026-05-08 → 2026-08-27 A (+111d) | 1d? → 10d | 0% → 100% | 39d → none | none → 449 | was named Relevo construído; baseline start none → 2026-08-14; baseline finish none → 2026-08-27 |
| 468 | Se vier as tomadas - excluir (1º Pavimento) | 2026-05-08 → 2026-08-14 (+98d) | 2026-05-08 → 2026-08-27 (+111d) | 1d? → 10d |  | 39d → 10d | none → 449 | was named Eixos do projeto; baseline start none → 2026-08-14; baseline finish none → 2026-08-27 |
| 469 | Se vier as luminárias - excluir (1° pavimento) | 2026-05-08 → 2026-08-14 (+98d) | 2026-05-08 → 2026-08-27 (+111d) | 1d? → 10d |  | 39d → 10d | none → 449 | was named Cotas de nível principais; baseline start none → 2026-08-14; baseline finish none → 2026-08-27 |
| 471 | Separar camadas dos pisos - leje 10cm (1° camada), contrapiso 3cm+argamassa 2cm+rev 1cm, (2°camada) | 2026-05-08 → 2026-08-14 A (+98d) | 2026-05-08 → 2026-08-27 A (+111d) | 1d? → 10d | 0% → 100% | 39d → none | none → 449 | was named Cobertura(s) com indicação da(s) respectiva(s) inclinação(ões); baseline start none → 2026-08-14; baseline finish none → 2026-08-27 |
| 472 | Descrição dos elementos da edificação | 2026-05-08 → 2026-08-14 (+98d) | 2026-05-08 → 2026-08-27 (+111d) | 1d? → 10d |  | 39d → 10d | none → 449 | was named Identificação dos ambientes; baseline start none → 2026-08-14; baseline finish none → 2026-08-27 |
| 473 | Descrição dos componentes construtivos e materiais de construção | 2026-05-08 → 2026-08-14 (+98d) | 2026-05-08 → 2026-08-27 (+111d) | 1d? → 10d |  | 39d → 10d | none → 449 | was named Esquadrias (portas e janelas); baseline start none → 2026-08-14; baseline finish none → 2026-08-27 |
| 474 | Lista de pranchas anexas e documentos | 2026-05-08 → 2026-08-14 (+98d) | 2026-05-08 → 2026-08-27 (+111d) | 1d? → 10d |  | 39d → 10d | none → 449 | was named Vedações internas e externas; baseline start none → 2026-08-14; baseline finish none → 2026-08-27 |
| 475 | Vias de acesso ao conjunto, arruamento, logradouros adjacentes e calçadas com os respectivos equipamentos urbanos; | 2026-05-08 → 2026-08-14 (+98d) | 2026-05-08 → 2026-08-27 (+111d) | 1d? → 10d |  | 39d → 10d | none → 449 | was named Elementos estruturais principais; baseline start none → 2026-08-14; baseline finish none → 2026-08-27 |
| 477 | Perímetro do terreno, recuos e afastamentos; | 2026-05-08 → 2026-08-14 (+98d) | 2026-05-08 → 2026-08-27 (+111d) | 1d? → 10d |  | 39d → 10d | none → 449 | was named Relatório/Memorial de Projeto Preliminar; baseline start none → 2026-08-14; baseline finish none → 2026-08-27 |
| 478 | Indicação das áreas a serem edificadas com o contorno da cobertura das edificações, estacionamentos e áreas permeáveis/impermeáveis; | 2026-05-08 → 2026-08-14 (+98d) | 2026-05-08 → 2026-08-27 (+111d) | 1d? → 10d |  | 39d → 10d | none → 449 | was named Cotas de nível principais; baseline start none → 2026-08-14; baseline finish none → 2026-08-27 |
| 480 | Cotas gerais | 2026-05-08 → 2026-08-14 A (+98d) | 2026-05-08 → 2026-08-27 A (+111d) | 1d? → 10d | 0% → 100% | 19d → none | none → 449 | baseline start none → 2026-08-14; baseline finish none → 2026-08-27 |
| 481 | Cotas de nível principal. | 2026-05-08 → 2026-08-14 (+98d) | 2026-05-08 → 2026-08-27 (+111d) | 1d? → 10d |  | 39d → 10d | none → 449 | was named Áreas de serviços, funcionais e técnicas; baseline start none → 2026-08-14; baseline finish none → 2026-08-27 |
| 482 | Quadros de áreas | 2026-05-08 → 2026-08-14 A (+98d) | 2026-05-08 → 2026-08-27 A (+111d) | 1d? → 10d | 0% → 100% | 39d → none | none → 449 | was named Espaços de circulação; baseline start none → 2026-08-14; baseline finish none → 2026-08-27 |
| 483 | Planta com as cotas de nível projetadas e existentes | 2026-05-08 → 2026-08-28 (+112d) | 2026-05-08 → 2026-08-28 (+112d) | 1d? → 1d |  | 39d → 0d | none → 482 | was named Identificação dos ambientes; baseline start none → 2026-08-28; baseline finish none → 2026-08-28 |
| 484 | **Plantas baixas (se tiver mais de um pavimento, duplicar bloco)** | 2026-05-08 → 2026-08-31 (+115d) | 2026-05-08 → 2026-08-31 (+115d) | 1d? → 1d |  | 39d → 0d |  | was named Elementos estruturais principais; baseline start none → 2026-08-31; baseline finish none → 2026-08-31 |
| 485 | Indicar simbologias de representação gráfica, conforme NBR 6492:2021; | 2026-05-08 → 2026-08-31 (+115d) | 2026-05-08 → 2026-08-31 (+115d) | 1d? → 1d |  | 39d → 8d | none → 483 | was named Esquadrias (portas e janelas); baseline start none → 2026-08-31; baseline finish none → 2026-08-31 |
| 486 | Compatibilização (verificar se está tudo conforme as normas e alinhar com o restante das disciplinas de engenharia) | 2026-05-08 → 2026-08-31 (+115d) | 2026-05-08 → 2026-08-31 (+115d) | 1d? → 1d |  | 39d → 8d | none → 483 | was named Vedações internas e externas; baseline start none → 2026-08-31; baseline finish none → 2026-08-31 |
| 487 | Compatibilização (deixar tudo conforme padrão Quanta) | 2026-05-08 → 2026-08-31 (+115d) | 2026-05-08 → 2026-08-31 (+115d) | 1d? → 1d |  | 39d → 8d | none → 483 | was named Indicação dos acessos; baseline start none → 2026-08-31; baseline finish none → 2026-08-31 |
| 489 | Indicação de Escala; | 2026-05-08 → 2026-08-31 (+115d) | 2026-05-08 → 2026-08-31 (+115d) | 1d? → 1d |  | 39d → 8d | none → 483 | was named Indicação de Norte; baseline start none → 2026-08-31; baseline finish none → 2026-08-31 |
| 490 | Indicação de Acessos; | 2026-05-08 → 2026-08-31 (+115d) | 2026-05-08 → 2026-08-31 (+115d) | 1d? → 1d |  | 19d → 8d | none → 483 | was named Relatório/Memorial Justificativo de Projeto Preliminar; baseline start none → 2026-08-31; baseline finish none → 2026-08-31 |
| 491 | Elementos de vedação internos e externos; | 2026-05-08 → 2026-08-31 (+115d) | 2026-05-08 → 2026-08-31 (+115d) | 1d? → 1d |  | 19d → 8d | none → 483 | was named Áreas permeáveis e impermeáveis; baseline start none → 2026-08-31; baseline finish none → 2026-08-31 |
| 492 | Esquadrias (sem código e sem quadro); | 2026-05-08 → 2026-08-31 (+115d) | 2026-05-08 → 2026-08-31 (+115d) | 1d? → 1d |  | 19d → 8d | none → 483 | was named Projeção das coberturas; baseline start none → 2026-08-31; baseline finish none → 2026-08-31 |
| 493 | Elementos estruturais principais; | 2026-05-08 → 2026-08-31 (+115d) | 2026-05-08 → 2026-08-31 (+115d) | 1d? → 1d |  | 19d → 8d | none → 483 | was named Cotas de nível principais; baseline start none → 2026-08-31; baseline finish none → 2026-08-31 |
| 495 | Espaços de circulação internos e externos; | 2026-05-08 → 2026-08-31 (+115d) | 2026-05-08 → 2026-08-31 (+115d) | 1d? → 1d |  | 19d → 8d | none → 483 | was named Indicação de áreas cobertas e estacionamentos; baseline start none → 2026-08-31; baseline finish none → 2026-08-31 |
| 496 | Áreas de serviço, funcionais e técnicas (internos e externos); | 2026-05-08 → 2026-08-31 (+115d) | 2026-05-08 → 2026-08-31 (+115d) | 1d? → 1d |  | 19d → 8d | none → 483 | was named Denominação das edificações; baseline start none → 2026-08-31; baseline finish none → 2026-08-31 |
| 497 | Projeções de níveis superiores; | 2026-05-08 → 2026-08-31 (+115d) | 2026-05-08 → 2026-08-31 (+115d) | 1d? → 1d |  | 19d → 8d | none → 483 | was named Recuos e afastamentos; baseline start none → 2026-08-31; baseline finish none → 2026-08-31 |
| 498 | Cotas gerais | 2026-05-08 → 2026-08-31 (+115d) | 2026-05-08 → 2026-08-31 (+115d) | 1d? → 1d |  | 39d → 8d | none → 483 | baseline start none → 2026-08-31; baseline finish none → 2026-08-31 |
| 499 | Cotas de nível principal. | 2026-05-08 → 2026-08-31 (+115d) | 2026-05-08 → 2026-08-31 (+115d) | 1d? → 1d |  | 19d → 8d | none → 483 | was named Platôs e taludes principais; baseline start none → 2026-08-31; baseline finish none → 2026-08-31 |
| 500 | Quadro de áreas | 2026-05-08 → 2026-08-31 (+115d) | 2026-05-08 → 2026-08-31 (+115d) | 1d? → 1d |  | 19d → 0d | none → 483 | was named Acesso principal ao objeto arquitetônico; baseline start none → 2026-08-31; baseline finish none → 2026-08-31 |
| 501 | **Planta das coberturas** | 2026-05-08 → 2026-09-01 (+116d) | 2026-05-08 → 2026-09-01 (+116d) | 1d? → 1d |  | 19d → 0d |  | was named Vias de acesso; baseline start none → 2026-09-01; baseline finish none → 2026-09-01 |
| 503 | Indicação de escala | 2026-05-08 → 2026-09-01 (+116d) | 2026-05-08 → 2026-09-01 (+116d) | 1d? → 1d |  | 19d → 7d | none → 500 | baseline start none → 2026-09-01; baseline finish none → 2026-09-01 |
| 504 | Curvas de nível | 2026-05-07 → 2026-09-01 (+117d) | 2026-05-07 → 2026-09-01 (+117d) | 1d? → 1d |  | 19d → 7d | none → 500 | was named Inserir ambientes; baseline start none → 2026-09-01; baseline finish none → 2026-09-01 |
| 505 | Indicação de Acessos; | 2026-05-07 → 2026-09-01 (+117d) | 2026-05-07 → 2026-09-01 (+117d) | 1d? → 1d |  | 19d → 7d | none → 500 | was named Modelagem acessos, estacionamentos e canteiros; baseline start none → 2026-09-01; baseline finish none → 2026-09-01 |
| 506 | Estacionamento e áreas cobertas | 2026-05-07 → 2026-09-01 (+117d) | 2026-05-07 → 2026-09-01 (+117d) | 1d? → 1d |  | 19d → 7d | none → 500 | was named Modelagem circulação vertical (escadas, rampas, elevadores); baseline start none → 2026-09-01; baseline finish none → 2026-09-01 |
| 507 | Cobertura das edificações | 2026-05-07 → 2026-09-01 (+117d) | 2026-05-07 → 2026-09-01 (+117d) | 1d? → 1d |  | 19d → 7d | none → 500 | was named Inserir Esquadrias; baseline start none → 2026-09-01; baseline finish none → 2026-09-01 |
| 508 | Sentido de escoamento das águas pluviais e inclinação | 2026-05-07 → 2026-09-01 (+117d) | 2026-05-07 → 2026-09-01 (+117d) | 1d? → 1d |  | 19d → 7d | none → 500 | was named Ajuste e setagem materiais pisos e paredes a partir do padrão Quanta; baseline start none → 2026-09-01; baseline finish none → 2026-09-01 |
| 509 | Cotas gerais | 2026-05-08 → 2026-09-01 (+116d) | 2026-05-08 → 2026-09-01 (+116d) | 1d? → 1d |  | 39d → 7d | none → 500 | baseline start none → 2026-09-01; baseline finish none → 2026-09-01 |
| 510 | Cotas de nível principal | 2026-05-07 → 2026-09-01 (+117d) | 2026-05-07 → 2026-09-01 (+117d) | 1d? → 1d |  | 19d → 0d | none → 500 | was named Compabilização com disciplina de engenharia sobre terraplanagem; baseline start none → 2026-09-01; baseline finish none → 2026-09-01 |
| 511 | **Cortes longitudinais** | 2026-05-07 → 2026-09-02 (+118d) | 2026-05-07 → 2026-09-02 (+118d) | 1d? → 1d |  | 19d → 0d |  | was named Modelagem simples cobertura; baseline start none → 2026-09-02; baseline finish none → 2026-09-02 |
| 512 | Indicar simbologias de representação gráfica, conforme NBR 6492:2021; | 2026-05-07 → 2026-09-02 (+118d) | 2026-05-07 → 2026-09-02 (+118d) | 1d? → 1d |  | 19d → 6d | none → 510 | was named Modelagem paredes - duplicar linha por ambiente ou pavimento; baseline start none → 2026-09-02; baseline finish none → 2026-09-02 |
| 513 | Indicação de Escala; | 2026-05-07 → 2026-09-02 (+118d) | 2026-05-07 → 2026-09-02 (+118d) | 1d? → 1d |  | 19d → 6d | none → 510 | was named Modelagem pisos - duplicar linha por ambiente ou pavimento; baseline start none → 2026-09-02; baseline finish none → 2026-09-02 |
| 514 | Elementos estruturais principais; | 2026-05-07 → 2026-09-02 (+118d) | 2026-05-07 → 2026-09-02 (+118d) | 1d? → 1d |  | 19d → 6d | none → 510 | was named Definição e setagem níveis da edificação; baseline start none → 2026-09-02; baseline finish none → 2026-09-02 |
| 515 | Elementos de vedação internos e externos; | 2026-05-07 → 2026-09-02 (+118d) | 2026-05-07 → 2026-09-02 (+118d) | 1d? → 1d |  | 19d → 6d | none → 510 | was named Criação e georreferenciamento e ajuste de norte nos arquivos federado, arquitetura, implantação, layout; baseline start none → 2026-09-02; baseline finish none → 2026-09-02 |
| 516 | Esquadrias; | 2026-05-07 → 2026-09-02 (+118d) | 2026-05-07 → 2026-09-02 (+118d) | 1d? → 1d |  | 40d → 6d | none → 510 | was named Relatório/Memorial Justificativo de Projeto Conceitual; baseline start none → 2026-09-02; baseline finish none → 2026-09-02 |
| 517 | Identificação dos ambientes; | 2026-05-07 → 2026-09-02 (+118d) | 2026-05-07 → 2026-09-02 (+118d) | 1d? → 1d |  | 40d → 6d | none → 510 | was named Compatibilização (verificar se está tudo conforme as normas urbanísticas e com as disciplinas de engenharia); baseline start none → 2026-09-02; baseline finish none → 2026-09-02 |
| 518 | Cobertura com indicação da respectiva inclinação; | 2026-05-07 → 2026-09-02 (+118d) | 2026-05-07 → 2026-09-02 (+118d) | 1d? → 1d |  | 40d → 6d | none → 510 | was named Perspectivas; baseline start none → 2026-09-02; baseline finish none → 2026-09-02 |
| 519 | Cotas gerais; | 2026-05-07 → 2026-09-02 (+118d) | 2026-05-07 → 2026-09-02 (+118d) | 1d? → 1d |  | 40d → 6d | none → 510 | was named Estudo da Forma; baseline start none → 2026-09-02; baseline finish none → 2026-09-02 |
| 520 | Cotas de nível principal; | 2026-05-07 → 2026-09-02 (+118d) | 2026-05-07 → 2026-09-02 (+118d) | 1d? → 1d |  | 40d → 6d | none → 510 | was named Setorização e Fluxogramas; baseline start none → 2026-09-02; baseline finish none → 2026-09-02 |
| 521 | Eixos do projeto; | 2026-05-07 → 2026-09-02 (+118d) | 2026-05-07 → 2026-09-02 (+118d) | 1d? → 1d |  | 40d → 6d | none → 510 | was named Plano de Massas (situação/implantação/zoneamento); baseline start none → 2026-09-02; baseline finish none → 2026-09-02 |
| 522 | Relevo construído; | 2026-05-07 → 2026-09-02 (+118d) | 2026-05-07 → 2026-09-02 (+118d) | 1d? → 1d |  | 40d → 6d | none → 510 | was named Processo de Criação e início modelagem (atelier, discussão, início de plantas, ideias de fachada); baseline start none → 2026-09-02; baseline finish none → 2026-09-02 |
| 523 | Projeção da topografia natural. | 2026-05-07 → 2026-09-02 (+118d) | 2026-05-07 → 2026-09-02 (+118d) | 1d? → 1d |  | 40d → 0d | none → 510 | was named Benchmarking (pesquisa e relatório de referências de tipologias semelhantes para entendimento de fluxos, implantação etc. e de outras tipologias para buscar referências estéticas e de materialidade); baseline start none → 2026-09-02; baseline finish none → 2026-09-02 |
| 524 | **Cortes transversais** | 2026-05-07 → 2026-09-03 (+119d) | 2026-05-07 → 2026-09-03 (+119d) | 1d? → 1d |  | 40d → 0d |  | was named Análise, Verificação e Revisão (adequação do projeto recebido); baseline start none → 2026-09-03; baseline finish none → 2026-09-03 |
| 525 | Indicar simbologias de representação gráfica, conforme NBR 6492:2021; | 2026-05-07 → 2026-09-03 (+119d) | 2026-05-07 → 2026-09-03 (+119d) | 1d? → 1d |  | 40d → 5d | none → 523 | was named Serviços de Campo; baseline start none → 2026-09-03; baseline finish none → 2026-09-03 |
| 526 | Indicação de Escala; | 2026-05-07 → 2026-09-03 (+119d) | 2026-05-07 → 2026-09-03 (+119d) | 1d? → 1d |  | 40d → 5d | none → 523 | was named Produção de Subsídios ao Projeto; baseline start none → 2026-09-03; baseline finish none → 2026-09-03 |
| 527 | Elementos estruturais principais; | 2026-05-07 → 2026-09-03 (+119d) | 2026-05-07 → 2026-09-03 (+119d) | 1d? → 1d |  | 40d → 5d | none → 523 | was named Serviços de Campo; baseline start none → 2026-09-03; baseline finish none → 2026-09-03 |

| ID | Task | Start | Finish | Duration | Complete | Total float | Predecessors | Other |
| --- | --- | --- | --- | --- | --- | --- | --- | --- |
| 529 | Esquadrias; | 2026-05-07 → 2026-09-03 (+119d) | 2026-05-07 → 2026-09-03 (+119d) | 1d? → 1d |  | 40d → 5d | none → 523 | was named Estudo de Viabilidade (metodologia empregada, soluções alternativas - físicas e jurídico-legais -, conclusões e recomendações); baseline start none → 2026-09-03; baseline finish none → 2026-09-03 |
| 530 | Identificação dos ambientes; | 2026-05-07 → 2026-09-03 (+119d) | 2026-05-07 → 2026-09-03 (+119d) | 1d? → 1d |  | 40d → 5d | none → 523 | was named Elaboração do Programa de Necessidades (relação dos ambientes, áreas, mobiliários, fluxos pretendidos, organograma funcional, descrição dos usuários e atividades etc.); baseline start none → 2026-09-03; baseline finish none → 2026-09-03 |
| 531 | Cobertura com indicação da respectiva inclinação; | 2026-05-07 → 2026-09-03 (+119d) | 2026-05-07 → 2026-09-03 (+119d) | 1d? → 1d |  | 40d → 5d | none → 523 | was named Relatório de Entrevistas; baseline start none → 2026-09-03; baseline finish none → 2026-09-03 |
| 532 | Cotas gerais; | 2026-05-07 → 2026-09-03 (+119d) | 2026-05-07 → 2026-09-03 (+119d) | 1d? → 1d |  | 40d → 5d | none → 523 | was named Relatório de Visita de Campo; baseline start none → 2026-09-03; baseline finish none → 2026-09-03 |
| 533 | Cotas de nível principal; | 2026-05-07 → 2026-09-03 (+119d) | 2026-05-07 → 2026-09-03 (+119d) | 1d? → 1d |  | 40d → 5d | none → 523 | was named Levantamento Arquitetônico; baseline start none → 2026-09-03; baseline finish none → 2026-09-03 |
| 534 | Eixos do projeto; | 2026-05-07 → 2026-09-03 (+119d) | 2026-05-07 → 2026-09-03 (+119d) | 1d? → 1d |  | 40d → 5d | none → 523 | was named Entrevistas; baseline start none → 2026-09-03; baseline finish none → 2026-09-03 |
| 535 | Relevo construído; | 2026-05-07 → 2026-09-03 (+119d) | 2026-05-07 → 2026-09-03 (+119d) | 1d? → 1d |  | 40d → 5d | none → 523 | was named Visita de Campo; baseline start none → 2026-09-03; baseline finish none → 2026-09-03 |
| 536 | Projeção da topografia natural | 2026-05-08 → 2026-09-03 (+118d) | 2026-05-08 → 2026-09-03 (+118d) | 1d? → 1d |  | 39d → 0d | none → 523 | baseline start none → 2026-09-03; baseline finish none → 2026-09-03 |
| 537 | **Elevações** | 2026-05-07 → 2026-09-04 (+120d) | 2026-05-07 → 2026-09-04 (+120d) | 1d? → 1d |  | 40d → 0d |  | baseline start none → 2026-09-04; baseline finish none → 2026-09-04 |
| 538 | Indicar simbologias de representação gráfica, conforme NBR 6492:2021; | 2026-05-07 → 2026-09-04 (+120d) | 2026-05-07 → 2026-09-04 (+120d) | 1d? → 1d |  | 40d → 0d | none → 536 | was named Recebimento da Topografia; baseline start none → 2026-09-04; baseline finish none → 2026-09-04 |
| 539 | Indicação de Escala; | 2026-05-07 → 2026-09-04 (+120d) | 2026-05-07 → 2026-09-04 (+120d) | 1d? → 1d |  | 40d → 0d | none → 536 | was named Relatório/Memorial de Compatibilização; baseline start none → 2026-09-04; baseline finish none → 2026-09-04 |
| 541 | Elementos de vedação internos e externos; | 2026-05-07 → 2026-09-04 (+120d) | 2026-05-07 → 2026-09-04 (+120d) | 1d? → 1d |  | 40d → 0d | none → 536 | was named Verficar se elementos estão associados aos níveis corretos e sistematizar ajustes; baseline start none → 2026-09-04; baseline finish none → 2026-09-04 |
| 542 | Esquadrias (sem código e sem quadro); | 2026-05-07 → 2026-09-04 (+120d) | 2026-05-07 → 2026-09-04 (+120d) | 1d? → 1d |  | 40d → 0d | none → 536 | was named Compatibilização padrão Quanta; baseline start none → 2026-09-04; baseline finish none → 2026-09-04 |
| 543 | Relevo construído; | 2026-05-07 → 2026-09-04 (+120d) | 2026-05-07 → 2026-09-04 (+120d) | 1d? → 1d |  | 40d → 0d | none → 536 | was named Compatibilização com normas técnicas; baseline start none → 2026-09-04; baseline finish none → 2026-09-04 |
| 544 | Cotas gerais; | 2026-05-07 → 2026-09-04 (+120d) | 2026-05-07 → 2026-09-04 (+120d) | 1d? → 1d |  | 40d → 0d | none → 536 | was named Compatibilização disciplinas engenharia e sistematização incrementos e ajustes; baseline start none → 2026-09-04; baseline finish none → 2026-09-04 |
| 545 | Cotas de nível principais; | 2026-05-07 → 2026-09-04 (+120d) | 2026-05-07 → 2026-09-04 (+120d) | 1d? → 1d |  | 40d → 0d | none → 536 | was named Conferir Mobiliário; baseline start none → 2026-09-04; baseline finish none → 2026-09-04 |
| 546 | Cobertura (quando aparente). | 2026-05-07 → 2026-09-04 (+120d) | 2026-05-07 → 2026-09-04 (+120d) | 1d? → 1d |  | 40d → 0d | none → 536 | was named Conferir Esquadrias; baseline start none → 2026-09-04; baseline finish none → 2026-09-04 |
| 547 | Memorial Descritivo | 2026-05-07 → 2026-09-08 (+124d) | 2026-05-07 → 2026-09-11 (+127d) | 1d? → 4d |  | 40d → 0d | none → 537 | was named Conferir Pisos; baseline start none → 2026-09-08; baseline finish none → 2026-09-11 |
| 548 | Aprovação de Conformidade | 2026-05-07 → 2026-09-09 (+125d) | 2026-05-07 → 2026-09-11 (+127d) | 1d? → 3d |  | 40d → 0d | none → 547FF | was named Conferir paredes; baseline start none → 2026-09-09; baseline finish none → 2026-09-11 |
| 549 | Material para entrega ao contrato | 2026-05-07 → 2026-09-09 (+125d) | 2026-05-07 → 2026-09-11 (+127d) | 1d? → 3d |  | 40d → 0d | none → 547FF | was named Verificar acessibilidade dos espaços de acordo com a norma e sistematizar ajustes; baseline start none → 2026-09-09; baseline finish none → 2026-09-11 |
| 626 | Estudo e avaliação da arquitetura atendendo as normas competentes de PCI | 2026-05-07 → 2026-07-27 A (+81d) | 2026-05-07 → 2026-08-07 (+92d) | 1d? → 10d | 0% → 16% | 40d → 24d | none → 449SS-9d | baseline start none → 2026-07-27; baseline finish none → 2026-08-07 |
| 627 | Avaliação do espaço para CMI e Central de Gás. | 2026-05-07 → 2026-07-27 A (+81d) | 2026-05-07 → 2026-08-07 (+92d) | 1d? → 10d | 0% → 16% | 40d → 24d | none → 449SS-9d | baseline start none → 2026-07-27; baseline finish none → 2026-08-07 |
| 628 | Pontos locação para seus elementos no projeto arquitetônico | 2026-05-07 → 2026-07-27 A (+81d) | 2026-05-07 → 2026-08-07 (+92d) | 1d? → 10d | 0% → 16% | 40d → 0d | none → 449SS-9d | baseline start none → 2026-07-27; baseline finish none → 2026-08-07 |
| 630 | Definição da classificação da edificação e o risco de incêndio | 2026-05-07 → 2026-08-10 (+95d) | 2026-05-07 → 2026-09-11 (+127d) | 1d? → 24d |  | 40d → 0d | none → 628 | baseline start none → 2026-08-10; baseline finish none → 2026-09-11 |
| 631 | Cálculos pré-dimensionados dos extintores, hidrantes e bomba. | 2026-05-07 → 2026-08-10 (+95d) | 2026-05-07 → 2026-09-11 (+127d) | 1d? → 24d |  | 40d → 0d | none → 628 | baseline start none → 2026-08-10; baseline finish none → 2026-09-11 |
| 632 | Avaliação das rotas de fuga, ventilação de CMI e outros elementos de importância para as normas de PCI | 2026-05-07 → 2026-08-10 (+95d) | 2026-05-07 → 2026-09-11 (+127d) | 1d? → 24d |  | 40d → 0d | none → 628 | baseline start none → 2026-08-10; baseline finish none → 2026-09-11 |
| 753 | Indicação de escala | 2026-05-08 → 2026-09-01 (+116d) | 2026-05-08 → 2026-09-01 (+116d) | 1d? → 1d |  | 39d → 7d | none → 750 | baseline start none → 2026-09-01; baseline finish none → 2026-09-01 |
| 999 | Indicação de escala | 2026-05-08 → 2026-09-01 (+116d) | 2026-05-08 → 2026-09-01 (+116d) | 1d? → 1d |  | 39d → 7d | none → 996 | baseline start none → 2026-09-01; baseline finish none → 2026-09-01 |
| 1245 | Indicação de escala | 2026-05-07 → 2026-09-01 (+117d) | 2026-05-07 → 2026-09-01 (+117d) | 1d? → 1d |  | 40d → 7d | none → 1242 | baseline start none → 2026-09-01; baseline finish none → 2026-09-01 |
| 1671 | P3 - Orçamento/Cronograma | 2026-07-06 → 2026-09-04 (+60d) | 2026-07-31 → 2026-09-25 (+56d) | 20d → 15d |  |  | 30 → 30FS-5d | was named P2 - Orçamento/Cronograma; baseline start none → 2026-09-04; baseline finish none → 2026-09-25 |
| 1672 | P4 - Modelagem Econômico Financeira | 2026-07-20 → 2026-09-14 (+56d) | 2026-07-31 → 2026-09-25 (+56d) |  |  |  |  | was named P3 - Modelagem Econômico Financeira; baseline start none → 2026-09-14; baseline finish none → 2026-09-25 |
| 1673 | P5 - Modelagem Jurídica | 2026-07-20 → 2026-09-14 (+56d) | 2026-07-31 → 2026-09-25 (+56d) |  |  |  |  | was named P4 - Modelagem Jurídica; baseline start none → 2026-09-14; baseline finish none → 2026-09-25 |
| 1674 | Periodo de revisão se necessário | 2026-05-07 → 2026-05-04 A (-3d) | 2026-05-07 → 2026-05-04 A (-3d) |  | 0% → 100% | 61d → none | none → 1SS | baseline start none → 2026-05-04; baseline finish none → 2026-05-04 |
